# Finish Line

Schedule from MS Project, 2005-01-24 to 2005-03-28, A marks actual dates.
GSC GameWorld

## Calendars

- Стандартный: Mon-Fri 10:00-13:00, 14:00-19:00; Sat 11:00-13:00, 14:00-20:00; Sun off.

## Resources

| Resource |
| --- |
| Руслан, Рома |
| Руслан, Коан |
| Чугай, Рома |
| Змей, Рома |
| Джим, Угрюмый |
| Сидорович, Маст Дай |
| Чугай, Лестат |
| Rainbow, |
| Rainbow, Ефимов Владимир |
| Веня |
| Rainbow |
| Рома |
| Рома, Змей |
| Коан, Руслан |
| Маст Дай, Сидорович |
| Лестат, Чугай |
| Dima |
| Partizan |
| Sidorovich |
| Mustdie |
| Змей |
| Сидорович |
| Shyshkin |
| Вова |
| Шишкин |
| Руслан |
| PROF |
| Угрюмый |
| Andy |
| LeSTAT |
| Джип |
| Lema |

## Schedule

| ID | WBS | Task | Duration | Start | Finish | Predecessors | Total slack | Free slack | Resources | Work |
| --- | --- | --- | --- | --- | --- | --- | --- | --- | --- | --- |
| 2 | 1 | **01_Escape** | 9d? | 2005-01-24 | 2005-02-02 |  | 46d |  | Руслан, Рома | 112h |
| 3 | 1.1 | **LevelDesign** | 9d? | 2005-01-24 | 2005-02-02 |  | 46d |  |  |  |
| 4 | 1.1.1 | **Stage 1** | 9d? | 2005-01-24 | 2005-02-02 |  | 46d |  |  |  |
| 5 | 1.1.1.1 | List of Changes | 2d | 2005-01-24 | 2005-01-25 |  | 46d | 0d |  |  |
| 6 | 1.1.1.2 | Changed Geometry | 1d? | 2005-01-26 | 2005-01-26 | 5 | 46d | 0d |  |  |
| 7 | 1.1.1.3 | Check List 1 | 1d? | 2005-01-27 | 2005-01-27 | 6 | 46d | 0d |  |  |
| 8 | 1.1.1.4 | Check List 2 | 1d? | 2005-01-28 | 2005-01-28 | 7 | 46d | 0d |  |  |
| 9 | 1.1.1.5 | Check List 3 | 1d? | 2005-01-29 | 2005-01-29 | 8 | 46d | 0d |  |  |
| 10 | 1.1.1.6 | Check List 4 | 1d? | 2005-01-31 | 2005-01-31 | 9 | 46d | 0d |  |  |
| 11 | 1.1.1.7 | Render Geometry | 1d? | 2005-02-01 | 2005-02-01 | 10 | 46d | 0d |  |  |
| 12 | 1.1.1.8 | Grass | 1d? | 2005-02-02 | 2005-02-02 | 11 | 46d |  |  |  |
| 14 | 1.2 | **GameDesign** | 3d? | 2005-01-24 | 2005-01-26 |  | 52d |  |  |  |
| 15 | 1.2.1 | AI Maps/Graphs | 1d? | 2005-01-24 | 2005-01-24 |  | 54d |  |  |  |
| 16 | 1.2.2 | **Secrets** | 3d? | 2005-01-24 | 2005-01-26 |  | 52d |  |  |  |
| 17 | 1.2.2.1 | **Stage 1** | 3d? | 2005-01-24 | 2005-01-26 |  | 52d |  |  |  |
| 18 | 1.2.2.1.1 | Design | 1d? | 2005-01-24 | 2005-01-24 |  | 52d | 0d |  |  |
| 19 | 1.2.2.1.2 | Implementation | 1d? | 2005-01-25 | 2005-01-25 | 18 | 52d | 0d |  |  |
| 20 | 1.2.2.1.3 | Tuning | 1d? | 2005-01-26 | 2005-01-26 | 19 | 52d |  |  |  |
| 21 | 1.2.3 | **Smartterrains** | 3d? | 2005-01-24 | 2005-01-26 |  | 52d |  |  |  |
| 22 | 1.2.3.1 | **Stage 1** | 3d? | 2005-01-24 | 2005-01-26 |  | 52d |  |  |  |
| 23 | 1.2.3.1.1 | Design | 1d? | 2005-01-24 | 2005-01-24 |  | 52d | 0d |  |  |
| 24 | 1.2.3.1.2 | Implementation | 1d? | 2005-01-25 | 2005-01-25 | 23 | 52d | 0d |  |  |
| 25 | 1.2.3.1.3 | Tuning | 1d? | 2005-01-26 | 2005-01-26 | 24 | 52d |  |  |  |
| 26 | 1.2.4 | **Monsters/Spawns** | 3d? | 2005-01-24 | 2005-01-26 |  | 52d |  |  |  |
| 27 | 1.2.4.1 | **Stage 1** | 3d? | 2005-01-24 | 2005-01-26 |  | 52d |  |  |  |
| 28 | 1.2.4.1.1 | Design | 1d? | 2005-01-24 | 2005-01-24 |  | 52d | 0d |  |  |
| 29 | 1.2.4.1.2 | Implementation | 1d? | 2005-01-25 | 2005-01-25 | 28 | 52d | 0d |  |  |
| 30 | 1.2.4.1.3 | Tuning | 1d? | 2005-01-26 | 2005-01-26 | 29 | 52d |  |  |  |

| ID | WBS | Task | Duration | Start | Finish | Predecessors | Total slack | Free slack | Resources | Work |
| --- | --- | --- | --- | --- | --- | --- | --- | --- | --- | --- |
| 31 | 1.2.5 | **Stalkers/Spawns** | 3d? | 2005-01-24 | 2005-01-26 |  | 52d |  |  |  |
| 32 | 1.2.5.1 | **Stage 1** | 3d? | 2005-01-24 | 2005-01-26 |  | 52d |  |  |  |
| 33 | 1.2.5.1.1 | Design | 1d? | 2005-01-24 | 2005-01-24 |  | 52d | 0d |  |  |
| 34 | 1.2.5.1.2 | Implementation | 1d? | 2005-01-25 | 2005-01-25 | 33 | 52d | 0d |  |  |
| 35 | 1.2.5.1.3 | Tuning | 1d? | 2005-01-26 | 2005-01-26 | 34 | 52d |  |  |  |
| 36 | 1.2.6 | **Anomalies/Spawns** | 3d? | 2005-01-24 | 2005-01-26 |  | 52d |  |  |  |
| 37 | 1.2.6.1 | **Stage 1** | 3d? | 2005-01-24 | 2005-01-26 |  | 52d |  |  |  |
| 38 | 1.2.6.1.1 | Design | 1d? | 2005-01-24 | 2005-01-24 |  | 52d | 0d |  |  |
| 39 | 1.2.6.1.2 | Implementation | 1d? | 2005-01-25 | 2005-01-25 | 38 | 52d | 0d |  |  |
| 40 | 1.2.6.1.3 | Tuning | 1d? | 2005-01-26 | 2005-01-26 | 39 | 52d |  |  |  |
| 41 | 1.2.7 | **Physicks** | 3d? | 2005-01-24 | 2005-01-26 |  | 52d |  |  |  |
| 42 | 1.2.7.1 | **Stage 1** | 3d? | 2005-01-24 | 2005-01-26 |  | 52d |  |  |  |
| 43 | 1.2.7.1.1 | Design | 1d? | 2005-01-24 | 2005-01-24 |  | 52d | 0d |  |  |
| 44 | 1.2.7.1.2 | Implementation | 1d? | 2005-01-25 | 2005-01-25 | 43 | 52d | 0d |  |  |
| 45 | 1.2.7.1.3 | Tuning | 1d? | 2005-01-26 | 2005-01-26 | 44 | 52d |  |  |  |
| 47 | 1.3 | **Scripts** | 3d? | 2005-01-24 | 2005-01-26 |  | 52d |  |  | 40h |
| 48 | 1.3.1 | Сценарий (текст) | 1d? | 2005-01-24 | 2005-01-24 |  | 54d |  |  |  |
| 49 | 1.3.2 | **Сцена 1 - Плоть рядом с аномалией** | 3d? | 2005-01-24 | 2005-01-26 |  | 52d |  |  | 16h |
| 50 | 1.3.2.1 | Постановка задач | 1d? | 2005-01-24 | 2005-01-24 |  | 52d | 0d |  |  |
| 51 | 1.3.2.2 | **Реализация** | 1d? | 2005-01-25 | 2005-01-25 | 50 | 52d |  |  | 8h |
| 52 | 1.3.2.2.1 | Доработка X в движке | 1d? | 2005-01-25 | 2005-01-25 |  | 52d | 0d | Dima | 8h |
| 53 | 1.3.2.3 | **Тестирование** | 1d? | 2005-01-26 | 2005-01-26 | 52 | 52d |  |  | 8h |
| 54 | 1.3.2.3.1 | Проверить расстановку AI нод вокруг дерева | 1d? | 2005-01-26 | 2005-01-26 |  | 52d |  | Partizan | 8h |
| 55 | 1.3.3 | **Сцена 2 - Кабаны играют в футбол** | 3d? | 2005-01-24 | 2005-01-26 |  | 52d |  |  | 24h |
| 56 | 1.3.3.1 | Постановка задач | 1d? | 2005-01-24 | 2005-01-24 |  | 52d | 0d |  |  |

Notes:
- 56: Два кабана по очереди пинают труп, стараясь не выходить далеко за пределы указанной на уровне зоны. При появлении игрока атакуют его.

| ID | WBS | Task | Duration | Start | Finish | Predecessors | Total slack | Free slack | Resources | Work |
| --- | --- | --- | --- | --- | --- | --- | --- | --- | --- | --- |
| 57 | 1.3.3.2 | **Реализация** | 1d? | 2005-01-25 | 2005-01-25 | 56 | 52d |  |  | 16h |
| 58 | 1.3.3.2.1 | Написать схему mob_kicker | 1d? | 2005-01-25 | 2005-01-25 |  | 52d | 0d | Сидорович | 8h |
| 59 | 1.3.3.2.2 | Установить и настроить схему на Escape | 1d? | 2005-01-25 | 2005-01-25 |  | 53d |  | Mustdie | 8h |
| 60 | 1.3.3.3 | **Тестирование** | 1d? | 2005-01-26 | 2005-01-26 | 58 | 52d |  |  | 8h |
| 61 | 1.3.3.3.1 | Отсутствие визуальных дефектов | 1d? | 2005-01-26 | 2005-01-26 |  | 52d |  | Partizan | 8h |
| 63 | 2 | **02_Garbage** | 11d? | 2005-01-24 | 2005-02-04 |  | 44d |  | Руслан, Коан | 88h |
| 64 | 2.1 | **LevelDesign** | 11d? | 2005-01-24 | 2005-02-04 |  | 44d |  |  |  |
| 65 | 2.1.1 | **Stage 1** | 11d? | 2005-01-24 | 2005-02-04 |  | 44d |  |  |  |
| 66 | 2.1.1.1 | List of Changes | 2d | 2005-01-24 | 2005-01-25 |  | 44d | 0d |  |  |
| 67 | 2.1.1.2 | Changed Geometry | 1d? | 2005-01-26 | 2005-01-26 | 66 | 44d | 0d |  |  |
| 68 | 2.1.1.3 | Check List 1 | 1d? | 2005-01-27 | 2005-01-27 | 67 | 44d | 0d |  |  |
| 69 | 2.1.1.4 | Check List 2 | 1d? | 2005-01-28 | 2005-01-28 | 68 | 44d | 0d |  |  |
| 70 | 2.1.1.5 | Check List 3 | 1d? | 2005-01-29 | 2005-01-29 | 69 | 44d | 0d |  |  |
| 71 | 2.1.1.6 | Check List 4 | 1d? | 2005-01-31 | 2005-01-31 | 70 | 44d | 0d |  |  |
| 72 | 2.1.1.7 | Render Geometry | 1d? | 2005-02-01 | 2005-02-01 | 71 | 44d | 0d |  |  |
| 73 | 2.1.1.8 | Grass | 1d? | 2005-02-02 | 2005-02-02 | 72 | 44d | 0d |  |  |
| 74 | 2.1.1.9 | AI Maps | 1d? | 2005-02-03 | 2005-02-03 | 73 | 44d | 0d |  |  |
| 75 | 2.1.1.10 | Graphs | 1d? | 2005-02-04 | 2005-02-04 | 74 | 44d |  |  |  |
| 77 | 2.2 | **GameDesign** | 3d? | 2005-01-24 | 2005-01-26 |  | 52d |  |  |  |
| 78 | 2.2.1 | **Secrets** | 3d? | 2005-01-24 | 2005-01-26 |  | 52d |  |  |  |
| 79 | 2.2.1.1 | **Stage 1** | 3d? | 2005-01-24 | 2005-01-26 |  | 52d |  |  |  |
| 80 | 2.2.1.1.1 | Design | 1d? | 2005-01-24 | 2005-01-24 |  | 52d | 0d |  |  |
| 81 | 2.2.1.1.2 | Implementation | 1d? | 2005-01-25 | 2005-01-25 | 80 | 52d | 0d |  |  |
| 82 | 2.2.1.1.3 | Tuning | 1d? | 2005-01-26 | 2005-01-26 | 81 | 52d |  |  |  |

| ID | WBS | Task | Duration | Start | Finish | Predecessors | Total slack | Free slack |
| --- | --- | --- | --- | --- | --- | --- | --- | --- |
| 83 | 2.2.2 | **Smartterrains** | 3d? | 2005-01-24 | 2005-01-26 |  | 52d |  |
| 84 | 2.2.2.1 | **Stage 1** | 3d? | 2005-01-24 | 2005-01-26 |  | 52d |  |
| 85 | 2.2.2.1.1 | Design | 1d? | 2005-01-24 | 2005-01-24 |  | 52d | 0d |
| 86 | 2.2.2.1.2 | Implementation | 1d? | 2005-01-25 | 2005-01-25 | 85 | 52d | 0d |
| 87 | 2.2.2.1.3 | Tuning | 1d? | 2005-01-26 | 2005-01-26 | 86 | 52d |  |
| 88 | 2.2.3 | **Monsters/Spawns** | 3d? | 2005-01-24 | 2005-01-26 |  | 52d |  |
| 89 | 2.2.3.1 | **Stage 1** | 3d? | 2005-01-24 | 2005-01-26 |  | 52d |  |
| 90 | 2.2.3.1.1 | Design | 1d? | 2005-01-24 | 2005-01-24 |  | 52d | 0d |
| 91 | 2.2.3.1.2 | Implementation | 1d? | 2005-01-25 | 2005-01-25 | 90 | 52d | 0d |
| 92 | 2.2.3.1.3 | Tuning | 1d? | 2005-01-26 | 2005-01-26 | 91 | 52d |  |
| 93 | 2.2.4 | **Stalkers/Spawns** | 3d? | 2005-01-24 | 2005-01-26 |  | 52d |  |
| 94 | 2.2.4.1 | **Stage 1** | 3d? | 2005-01-24 | 2005-01-26 |  | 52d |  |
| 95 | 2.2.4.1.1 | Design | 1d? | 2005-01-24 | 2005-01-24 |  | 52d | 0d |
| 96 | 2.2.4.1.2 | Implementation | 1d? | 2005-01-25 | 2005-01-25 | 95 | 52d | 0d |
| 97 | 2.2.4.1.3 | Tuning | 1d? | 2005-01-26 | 2005-01-26 | 96 | 52d |  |
| 98 | 2.2.5 | **Anomalies/Spawns** | 3d? | 2005-01-24 | 2005-01-26 |  | 52d |  |
| 99 | 2.2.5.1 | **Stage 1** | 3d? | 2005-01-24 | 2005-01-26 |  | 52d |  |
| 100 | 2.2.5.1.1 | Design | 1d? | 2005-01-24 | 2005-01-24 |  | 52d | 0d |
| 101 | 2.2.5.1.2 | Implementation | 1d? | 2005-01-25 | 2005-01-25 | 100 | 52d | 0d |
| 102 | 2.2.5.1.3 | Tuning | 1d? | 2005-01-26 | 2005-01-26 | 101 | 52d |  |
| 103 | 2.2.6 | **Physicks** | 3d? | 2005-01-24 | 2005-01-26 |  | 52d |  |
| 104 | 2.2.6.1 | **Stage 1** | 3d? | 2005-01-24 | 2005-01-26 |  | 52d |  |
| 105 | 2.2.6.1.1 | Design | 1d? | 2005-01-24 | 2005-01-24 |  | 52d | 0d |
| 106 | 2.2.6.1.2 | Implementation | 1d? | 2005-01-25 | 2005-01-25 | 105 | 52d | 0d |
| 107 | 2.2.6.1.3 | Tuning | 1d? | 2005-01-26 | 2005-01-26 | 106 | 52d |  |

| ID | WBS | Task | Duration | Start | Finish | Predecessors | Total slack | Free slack |
| --- | --- | --- | --- | --- | --- | --- | --- | --- |
| 109 | 2.3 | **Scripts** | 5d? | 2005-01-24 | 2005-01-28 |  | 50d |  |
| 110 | 2.3.1 | **Script 1** | 5d? | 2005-01-24 | 2005-01-28 |  | 50d |  |
| 111 | 2.3.1.1 | Scenario(text) | 1d? | 2005-01-24 | 2005-01-24 |  | 50d | 0d |
| 112 | 2.3.1.2 | Постановка задач | 1d? | 2005-01-25 | 2005-01-25 | 111 | 50d | 0d |
| 113 | 2.3.1.3 | Implimentation | 1d? | 2005-01-26 | 2005-01-26 | 112 | 50d | 0d |
| 114 | 2.3.1.4 | Dilogs/VO/Icons/Objects/Animations | 1d? | 2005-01-27 | 2005-01-27 | 113 | 50d | 0d |
| 115 | 2.3.1.5 | Настройка | 1d? | 2005-01-28 | 2005-01-28 | 114 | 50d |  |
| 116 | 2.3.2 | **Script 2** | 5d? | 2005-01-24 | 2005-01-28 |  | 50d |  |
| 117 | 2.3.2.1 | Scenario(text) | 1d? | 2005-01-24 | 2005-01-24 |  | 50d | 0d |
| 118 | 2.3.2.2 | Постановка задач | 1d? | 2005-01-25 | 2005-01-25 | 117 | 50d | 0d |
| 119 | 2.3.2.3 | Implimentation | 1d? | 2005-01-26 | 2005-01-26 | 118 | 50d | 0d |
| 120 | 2.3.2.4 | Dilogs/VO/Icons/Objects/Animations | 1d? | 2005-01-27 | 2005-01-27 | 119 | 50d | 0d |
| 121 | 2.3.2.5 | Настройка | 1d? | 2005-01-28 | 2005-01-28 | 120 | 50d |  |
| 122 | 2.3.3 | **Script 3** | 5d? | 2005-01-24 | 2005-01-28 |  | 50d |  |
| 123 | 2.3.3.1 | Scenario(text) | 1d? | 2005-01-24 | 2005-01-24 |  | 50d | 0d |
| 124 | 2.3.3.2 | Постановка задач | 1d? | 2005-01-25 | 2005-01-25 | 123 | 50d | 0d |
| 125 | 2.3.3.3 | Implimentation | 1d? | 2005-01-26 | 2005-01-26 | 124 | 50d | 0d |
| 126 | 2.3.3.4 | Dilogs/VO/Icons/Objects/Animations | 1d? | 2005-01-27 | 2005-01-27 | 125 | 50d | 0d |
| 127 | 2.3.3.5 | Настройка | 1d? | 2005-01-28 | 2005-01-28 | 126 | 50d |  |
| 128 | 2.3.4 | **Script 4** | 5d? | 2005-01-24 | 2005-01-28 |  | 50d |  |
| 129 | 2.3.4.1 | Scenario(text) | 1d? | 2005-01-24 | 2005-01-24 |  | 50d | 0d |
| 130 | 2.3.4.2 | Постановка задач | 1d? | 2005-01-25 | 2005-01-25 | 129 | 50d | 0d |
| 131 | 2.3.4.3 | Implimentation | 1d? | 2005-01-26 | 2005-01-26 | 130 | 50d | 0d |
| 132 | 2.3.4.4 | Dilogs/VO/Icons/Objects/Animations | 1d? | 2005-01-27 | 2005-01-27 | 131 | 50d | 0d |
| 133 | 2.3.4.5 | Настройка | 1d? | 2005-01-28 | 2005-01-28 | 132 | 50d |  |

| ID | WBS | Task | Duration | Start | Finish | Predecessors | Total slack | Free slack | Resources | Work |
| --- | --- | --- | --- | --- | --- | --- | --- | --- | --- | --- |
| 134 | 2.3.5 | **Script 5** | 5d? | 2005-01-24 | 2005-01-28 |  | 50d |  |  |  |
| 135 | 2.3.5.1 | Scenario(text) | 1d? | 2005-01-24 | 2005-01-24 |  | 50d | 0d |  |  |
| 136 | 2.3.5.2 | Постановка задач | 1d? | 2005-01-25 | 2005-01-25 | 135 | 50d | 0d |  |  |
| 137 | 2.3.5.3 | Implimentation | 1d? | 2005-01-26 | 2005-01-26 | 136 | 50d | 0d |  |  |
| 138 | 2.3.5.4 | Dilogs/VO/Icons/Objects/Animations | 1d? | 2005-01-27 | 2005-01-27 | 137 | 50d | 0d |  |  |
| 139 | 2.3.5.5 | Настройка | 1d? | 2005-01-28 | 2005-01-28 | 138 | 50d |  |  |  |
| 141 | 3 | **03_Agroprom** | 11d? | 2005-01-24 | 2005-02-04 |  | 44d |  | Чугай, Рома | 88h |
| 142 | 3.1 | **LevelDesign** | 11d? | 2005-01-24 | 2005-02-04 |  | 44d |  |  |  |
| 143 | 3.1.1 | **Stage 1** | 11d? | 2005-01-24 | 2005-02-04 |  | 44d |  |  |  |
| 144 | 3.1.1.1 | List of Changes | 2d | 2005-01-24 | 2005-01-25 |  | 44d | 0d |  |  |
| 145 | 3.1.1.2 | Changed Geometry | 1d? | 2005-01-26 | 2005-01-26 | 144 | 44d | 0d |  |  |
| 146 | 3.1.1.3 | Check List 1 | 1d? | 2005-01-27 | 2005-01-27 | 145 | 44d | 0d |  |  |
| 147 | 3.1.1.4 | Check List 2 | 1d? | 2005-01-28 | 2005-01-28 | 146 | 44d | 0d |  |  |
| 148 | 3.1.1.5 | Check List 3 | 1d? | 2005-01-29 | 2005-01-29 | 147 | 44d | 0d |  |  |
| 149 | 3.1.1.6 | Check List 4 | 1d? | 2005-01-31 | 2005-01-31 | 148 | 44d | 0d |  |  |
| 150 | 3.1.1.7 | Render Geometry | 1d? | 2005-02-01 | 2005-02-01 | 149 | 44d | 0d |  |  |
| 151 | 3.1.1.8 | Grass | 1d? | 2005-02-02 | 2005-02-02 | 150 | 44d | 0d |  |  |
| 152 | 3.1.1.9 | AI Maps | 1d? | 2005-02-03 | 2005-02-03 | 151 | 44d | 0d |  |  |
| 153 | 3.1.1.10 | Graphs | 1d? | 2005-02-04 | 2005-02-04 | 152 | 44d |  |  |  |
| 155 | 3.2 | **GameDesign** | 3d? | 2005-01-24 | 2005-01-26 |  | 52d |  |  |  |
| 156 | 3.2.1 | **Secrets** | 3d? | 2005-01-24 | 2005-01-26 |  | 52d |  |  |  |
| 157 | 3.2.1.1 | **Stage 1** | 3d? | 2005-01-24 | 2005-01-26 |  | 52d |  |  |  |
| 158 | 3.2.1.1.1 | Design | 1d? | 2005-01-24 | 2005-01-24 |  | 52d | 0d |  |  |
| 159 | 3.2.1.1.2 | Implementation | 1d? | 2005-01-25 | 2005-01-25 | 158 | 52d | 0d |  |  |
| 160 | 3.2.1.1.3 | Tuning | 1d? | 2005-01-26 | 2005-01-26 | 159 | 52d |  |  |  |

| ID | WBS | Task | Duration | Start | Finish | Predecessors | Total slack | Free slack |
| --- | --- | --- | --- | --- | --- | --- | --- | --- |
| 161 | 3.2.2 | **Smartterrains** | 3d? | 2005-01-24 | 2005-01-26 |  | 52d |  |
| 162 | 3.2.2.1 | **Stage 1** | 3d? | 2005-01-24 | 2005-01-26 |  | 52d |  |
| 163 | 3.2.2.1.1 | Design | 1d? | 2005-01-24 | 2005-01-24 |  | 52d | 0d |
| 164 | 3.2.2.1.2 | Implementation | 1d? | 2005-01-25 | 2005-01-25 | 163 | 52d | 0d |
| 165 | 3.2.2.1.3 | Tuning | 1d? | 2005-01-26 | 2005-01-26 | 164 | 52d |  |
| 166 | 3.2.3 | **Monsters/Spawns** | 3d? | 2005-01-24 | 2005-01-26 |  | 52d |  |
| 167 | 3.2.3.1 | **Stage 1** | 3d? | 2005-01-24 | 2005-01-26 |  | 52d |  |
| 168 | 3.2.3.1.1 | Design | 1d? | 2005-01-24 | 2005-01-24 |  | 52d | 0d |
| 169 | 3.2.3.1.2 | Implementation | 1d? | 2005-01-25 | 2005-01-25 | 168 | 52d | 0d |
| 170 | 3.2.3.1.3 | Tuning | 1d? | 2005-01-26 | 2005-01-26 | 169 | 52d |  |
| 171 | 3.2.4 | **Stalkers/Spawns** | 3d? | 2005-01-24 | 2005-01-26 |  | 52d |  |
| 172 | 3.2.4.1 | **Stage 1** | 3d? | 2005-01-24 | 2005-01-26 |  | 52d |  |
| 173 | 3.2.4.1.1 | Design | 1d? | 2005-01-24 | 2005-01-24 |  | 52d | 0d |
| 174 | 3.2.4.1.2 | Implementation | 1d? | 2005-01-25 | 2005-01-25 | 173 | 52d | 0d |
| 175 | 3.2.4.1.3 | Tuning | 1d? | 2005-01-26 | 2005-01-26 | 174 | 52d |  |
| 176 | 3.2.5 | **Anomalies/Spawns** | 3d? | 2005-01-24 | 2005-01-26 |  | 52d |  |
| 177 | 3.2.5.1 | **Stage 1** | 3d? | 2005-01-24 | 2005-01-26 |  | 52d |  |
| 178 | 3.2.5.1.1 | Design | 1d? | 2005-01-24 | 2005-01-24 |  | 52d | 0d |
| 179 | 3.2.5.1.2 | Implementation | 1d? | 2005-01-25 | 2005-01-25 | 178 | 52d | 0d |
| 180 | 3.2.5.1.3 | Tuning | 1d? | 2005-01-26 | 2005-01-26 | 179 | 52d |  |
| 181 | 3.2.6 | **Physicks** | 3d? | 2005-01-24 | 2005-01-26 |  | 52d |  |
| 182 | 3.2.6.1 | **Stage 1** | 3d? | 2005-01-24 | 2005-01-26 |  | 52d |  |
| 183 | 3.2.6.1.1 | Design | 1d? | 2005-01-24 | 2005-01-24 |  | 52d | 0d |
| 184 | 3.2.6.1.2 | Implementation | 1d? | 2005-01-25 | 2005-01-25 | 183 | 52d | 0d |
| 185 | 3.2.6.1.3 | Tuning | 1d? | 2005-01-26 | 2005-01-26 | 184 | 52d |  |

| ID | WBS | Task | Duration | Start | Finish | Predecessors | Total slack | Free slack |
| --- | --- | --- | --- | --- | --- | --- | --- | --- |
| 187 | 3.3 | **Scripts** | 5d? | 2005-01-24 | 2005-01-28 |  | 50d |  |
| 188 | 3.3.1 | **Script 1** | 5d? | 2005-01-24 | 2005-01-28 |  | 50d |  |
| 189 | 3.3.1.1 | Scenario(text) | 1d? | 2005-01-24 | 2005-01-24 |  | 50d | 0d |
| 190 | 3.3.1.2 | Постановка задач | 1d? | 2005-01-25 | 2005-01-25 | 189 | 50d | 0d |
| 191 | 3.3.1.3 | Implimentation | 1d? | 2005-01-26 | 2005-01-26 | 190 | 50d | 0d |
| 192 | 3.3.1.4 | Dilogs/VO/Icons/Objects/Animations | 1d? | 2005-01-27 | 2005-01-27 | 191 | 50d | 0d |
| 193 | 3.3.1.5 | Настройка | 1d? | 2005-01-28 | 2005-01-28 | 192 | 50d |  |
| 194 | 3.3.2 | **Script 2** | 5d? | 2005-01-24 | 2005-01-28 |  | 50d |  |
| 195 | 3.3.2.1 | Scenario(text) | 1d? | 2005-01-24 | 2005-01-24 |  | 50d | 0d |
| 196 | 3.3.2.2 | Постановка задач | 1d? | 2005-01-25 | 2005-01-25 | 195 | 50d | 0d |
| 197 | 3.3.2.3 | Implimentation | 1d? | 2005-01-26 | 2005-01-26 | 196 | 50d | 0d |
| 198 | 3.3.2.4 | Dilogs/VO/Icons/Objects/Animations | 1d? | 2005-01-27 | 2005-01-27 | 197 | 50d | 0d |
| 199 | 3.3.2.5 | Настройка | 1d? | 2005-01-28 | 2005-01-28 | 198 | 50d |  |
| 200 | 3.3.3 | **Script 3** | 5d? | 2005-01-24 | 2005-01-28 |  | 50d |  |
| 201 | 3.3.3.1 | Scenario(text) | 1d? | 2005-01-24 | 2005-01-24 |  | 50d | 0d |
| 202 | 3.3.3.2 | Постановка задач | 1d? | 2005-01-25 | 2005-01-25 | 201 | 50d | 0d |
| 203 | 3.3.3.3 | Implimentation | 1d? | 2005-01-26 | 2005-01-26 | 202 | 50d | 0d |
| 204 | 3.3.3.4 | Dilogs/VO/Icons/Objects/Animations | 1d? | 2005-01-27 | 2005-01-27 | 203 | 50d | 0d |
| 205 | 3.3.3.5 | Настройка | 1d? | 2005-01-28 | 2005-01-28 | 204 | 50d |  |
| 206 | 3.3.4 | **Script 4** | 5d? | 2005-01-24 | 2005-01-28 |  | 50d |  |
| 207 | 3.3.4.1 | Scenario(text) | 1d? | 2005-01-24 | 2005-01-24 |  | 50d | 0d |
| 208 | 3.3.4.2 | Постановка задач | 1d? | 2005-01-25 | 2005-01-25 | 207 | 50d | 0d |
| 209 | 3.3.4.3 | Implimentation | 1d? | 2005-01-26 | 2005-01-26 | 208 | 50d | 0d |
| 210 | 3.3.4.4 | Dilogs/VO/Icons/Objects/Animations | 1d? | 2005-01-27 | 2005-01-27 | 209 | 50d | 0d |
| 211 | 3.3.4.5 | Настройка | 1d? | 2005-01-28 | 2005-01-28 | 210 | 50d |  |

| ID | WBS | Task | Duration | Start | Finish | Predecessors | Total slack | Free slack | Resources | Work |
| --- | --- | --- | --- | --- | --- | --- | --- | --- | --- | --- |
| 212 | 3.3.5 | **Script 5** | 5d? | 2005-01-24 | 2005-01-28 |  | 50d |  |  |  |
| 213 | 3.3.5.1 | Scenario(text) | 1d? | 2005-01-24 | 2005-01-24 |  | 50d | 0d |  |  |
| 214 | 3.3.5.2 | Постановка задач | 1d? | 2005-01-25 | 2005-01-25 | 213 | 50d | 0d |  |  |
| 215 | 3.3.5.3 | Implimentation | 1d? | 2005-01-26 | 2005-01-26 | 214 | 50d | 0d |  |  |
| 216 | 3.3.5.4 | Dilogs/VO/Icons/Objects/Animations | 1d? | 2005-01-27 | 2005-01-27 | 215 | 50d | 0d |  |  |
| 217 | 3.3.5.5 | Настройка | 1d? | 2005-01-28 | 2005-01-28 | 216 | 50d |  |  |  |
| 219 | 4 | **04_Agroprom_Underground** | 11d? | 2005-01-24 | 2005-02-04 |  | 44d |  | Чугай, Рома | 88h |
| 220 | 4.1 | **LevelDesign** | 11d? | 2005-01-24 | 2005-02-04 |  | 44d |  |  |  |
| 221 | 4.1.1 | **Stage 1** | 11d? | 2005-01-24 | 2005-02-04 |  | 44d |  |  |  |
| 222 | 4.1.1.1 | List of Changes | 2d | 2005-01-24 | 2005-01-25 |  | 44d | 0d |  |  |
| 223 | 4.1.1.2 | Changed Geometry | 1d? | 2005-01-26 | 2005-01-26 | 222 | 44d | 0d |  |  |
| 224 | 4.1.1.3 | Check List 1 | 1d? | 2005-01-27 | 2005-01-27 | 223 | 44d | 0d |  |  |
| 225 | 4.1.1.4 | Check List 2 | 1d? | 2005-01-28 | 2005-01-28 | 224 | 44d | 0d |  |  |
| 226 | 4.1.1.5 | Check List 3 | 1d? | 2005-01-29 | 2005-01-29 | 225 | 44d | 0d |  |  |
| 227 | 4.1.1.6 | Check List 4 | 1d? | 2005-01-31 | 2005-01-31 | 226 | 44d | 0d |  |  |
| 228 | 4.1.1.7 | Render Geometry | 1d? | 2005-02-01 | 2005-02-01 | 227 | 44d | 0d |  |  |
| 229 | 4.1.1.8 | Grass | 1d? | 2005-02-02 | 2005-02-02 | 228 | 44d | 0d |  |  |
| 230 | 4.1.1.9 | AI Maps | 1d? | 2005-02-03 | 2005-02-03 | 229 | 44d | 0d |  |  |
| 231 | 4.1.1.10 | Graphs | 1d? | 2005-02-04 | 2005-02-04 | 230 | 44d |  |  |  |
| 233 | 4.2 | **GameDesign** | 3d? | 2005-01-24 | 2005-01-26 |  | 52d |  |  |  |
| 234 | 4.2.1 | **Secrets** | 3d? | 2005-01-24 | 2005-01-26 |  | 52d |  |  |  |
| 235 | 4.2.1.1 | **Stage 1** | 3d? | 2005-01-24 | 2005-01-26 |  | 52d |  |  |  |
| 236 | 4.2.1.1.1 | Design | 1d? | 2005-01-24 | 2005-01-24 |  | 52d | 0d |  |  |
| 237 | 4.2.1.1.2 | Implementation | 1d? | 2005-01-25 | 2005-01-25 | 236 | 52d | 0d |  |  |
| 238 | 4.2.1.1.3 | Tuning | 1d? | 2005-01-26 | 2005-01-26 | 237 | 52d |  |  |  |

| ID | WBS | Task | Duration | Start | Finish | Predecessors | Total slack | Free slack |
| --- | --- | --- | --- | --- | --- | --- | --- | --- |
| 239 | 4.2.2 | **Smartterrains** | 3d? | 2005-01-24 | 2005-01-26 |  | 52d |  |
| 240 | 4.2.2.1 | **Stage 1** | 3d? | 2005-01-24 | 2005-01-26 |  | 52d |  |
| 241 | 4.2.2.1.1 | Design | 1d? | 2005-01-24 | 2005-01-24 |  | 52d | 0d |
| 242 | 4.2.2.1.2 | Implementation | 1d? | 2005-01-25 | 2005-01-25 | 241 | 52d | 0d |
| 243 | 4.2.2.1.3 | Tuning | 1d? | 2005-01-26 | 2005-01-26 | 242 | 52d |  |
| 244 | 4.2.3 | **Monsters/Spawns** | 3d? | 2005-01-24 | 2005-01-26 |  | 52d |  |
| 245 | 4.2.3.1 | **Stage 1** | 3d? | 2005-01-24 | 2005-01-26 |  | 52d |  |
| 246 | 4.2.3.1.1 | Design | 1d? | 2005-01-24 | 2005-01-24 |  | 52d | 0d |
| 247 | 4.2.3.1.2 | Implementation | 1d? | 2005-01-25 | 2005-01-25 | 246 | 52d | 0d |
| 248 | 4.2.3.1.3 | Tuning | 1d? | 2005-01-26 | 2005-01-26 | 247 | 52d |  |
| 249 | 4.2.4 | **Stalkers/Spawns** | 3d? | 2005-01-24 | 2005-01-26 |  | 52d |  |
| 250 | 4.2.4.1 | **Stage 1** | 3d? | 2005-01-24 | 2005-01-26 |  | 52d |  |
| 251 | 4.2.4.1.1 | Design | 1d? | 2005-01-24 | 2005-01-24 |  | 52d | 0d |
| 252 | 4.2.4.1.2 | Implementation | 1d? | 2005-01-25 | 2005-01-25 | 251 | 52d | 0d |
| 253 | 4.2.4.1.3 | Tuning | 1d? | 2005-01-26 | 2005-01-26 | 252 | 52d |  |
| 254 | 4.2.5 | **Anomalies/Spawns** | 3d? | 2005-01-24 | 2005-01-26 |  | 52d |  |
| 255 | 4.2.5.1 | **Stage 1** | 3d? | 2005-01-24 | 2005-01-26 |  | 52d |  |
| 256 | 4.2.5.1.1 | Design | 1d? | 2005-01-24 | 2005-01-24 |  | 52d | 0d |
| 257 | 4.2.5.1.2 | Implementation | 1d? | 2005-01-25 | 2005-01-25 | 256 | 52d | 0d |
| 258 | 4.2.5.1.3 | Tuning | 1d? | 2005-01-26 | 2005-01-26 | 257 | 52d |  |
| 259 | 4.2.6 | **Physicks** | 3d? | 2005-01-24 | 2005-01-26 |  | 52d |  |
| 260 | 4.2.6.1 | **Stage 1** | 3d? | 2005-01-24 | 2005-01-26 |  | 52d |  |
| 261 | 4.2.6.1.1 | Design | 1d? | 2005-01-24 | 2005-01-24 |  | 52d | 0d |
| 262 | 4.2.6.1.2 | Implementation | 1d? | 2005-01-25 | 2005-01-25 | 261 | 52d | 0d |
| 263 | 4.2.6.1.3 | Tuning | 1d? | 2005-01-26 | 2005-01-26 | 262 | 52d |  |

| ID | WBS | Task | Duration | Start | Finish | Predecessors | Total slack | Free slack |
| --- | --- | --- | --- | --- | --- | --- | --- | --- |
| 265 | 4.3 | **Scripts** | 5d? | 2005-01-24 | 2005-01-28 |  | 50d |  |
| 266 | 4.3.1 | **Script 1** | 5d? | 2005-01-24 | 2005-01-28 |  | 50d |  |
| 267 | 4.3.1.1 | Scenario(text) | 1d? | 2005-01-24 | 2005-01-24 |  | 50d | 0d |
| 268 | 4.3.1.2 | Постановка задач | 1d? | 2005-01-25 | 2005-01-25 | 267 | 50d | 0d |
| 269 | 4.3.1.3 | Implimentation | 1d? | 2005-01-26 | 2005-01-26 | 268 | 50d | 0d |
| 270 | 4.3.1.4 | Dilogs/VO/Icons/Objects/Animations | 1d? | 2005-01-27 | 2005-01-27 | 269 | 50d | 0d |
| 271 | 4.3.1.5 | Настройка | 1d? | 2005-01-28 | 2005-01-28 | 270 | 50d |  |
| 272 | 4.3.2 | **Script 2** | 5d? | 2005-01-24 | 2005-01-28 |  | 50d |  |
| 273 | 4.3.2.1 | Scenario(text) | 1d? | 2005-01-24 | 2005-01-24 |  | 50d | 0d |
| 274 | 4.3.2.2 | Постановка задач | 1d? | 2005-01-25 | 2005-01-25 | 273 | 50d | 0d |
| 275 | 4.3.2.3 | Implimentation | 1d? | 2005-01-26 | 2005-01-26 | 274 | 50d | 0d |
| 276 | 4.3.2.4 | Dilogs/VO/Icons/Objects/Animations | 1d? | 2005-01-27 | 2005-01-27 | 275 | 50d | 0d |
| 277 | 4.3.2.5 | Настройка | 1d? | 2005-01-28 | 2005-01-28 | 276 | 50d |  |
| 278 | 4.3.3 | **Script 3** | 5d? | 2005-01-24 | 2005-01-28 |  | 50d |  |
| 279 | 4.3.3.1 | Scenario(text) | 1d? | 2005-01-24 | 2005-01-24 |  | 50d | 0d |
| 280 | 4.3.3.2 | Постановка задач | 1d? | 2005-01-25 | 2005-01-25 | 279 | 50d | 0d |
| 281 | 4.3.3.3 | Implimentation | 1d? | 2005-01-26 | 2005-01-26 | 280 | 50d | 0d |
| 282 | 4.3.3.4 | Dilogs/VO/Icons/Objects/Animations | 1d? | 2005-01-27 | 2005-01-27 | 281 | 50d | 0d |
| 283 | 4.3.3.5 | Настройка | 1d? | 2005-01-28 | 2005-01-28 | 282 | 50d |  |
| 284 | 4.3.4 | **Script 4** | 5d? | 2005-01-24 | 2005-01-28 |  | 50d |  |
| 285 | 4.3.4.1 | Scenario(text) | 1d? | 2005-01-24 | 2005-01-24 |  | 50d | 0d |
| 286 | 4.3.4.2 | Постановка задач | 1d? | 2005-01-25 | 2005-01-25 | 285 | 50d | 0d |
| 287 | 4.3.4.3 | Implimentation | 1d? | 2005-01-26 | 2005-01-26 | 286 | 50d | 0d |
| 288 | 4.3.4.4 | Dilogs/VO/Icons/Objects/Animations | 1d? | 2005-01-27 | 2005-01-27 | 287 | 50d | 0d |
| 289 | 4.3.4.5 | Настройка | 1d? | 2005-01-28 | 2005-01-28 | 288 | 50d |  |

| ID | WBS | Task | Duration | Start | Finish | Predecessors | Complete | Remaining | Total slack | Free slack | Constraint | Deadline | Resources | Work | Actual work |
| --- | --- | --- | --- | --- | --- | --- | --- | --- | --- | --- | --- | --- | --- | --- | --- |
| 290 | 4.3.5 | **Script 5** | 5d? | 2005-01-24 | 2005-01-28 |  |  |  | 50d |  |  |  |  |  |  |
| 291 | 4.3.5.1 | Scenario(text) | 1d? | 2005-01-24 | 2005-01-24 |  |  |  | 50d | 0d |  |  |  |  |  |
| 292 | 4.3.5.2 | Постановка задач | 1d? | 2005-01-25 | 2005-01-25 | 291 |  |  | 50d | 0d |  |  |  |  |  |
| 293 | 4.3.5.3 | Implimentation | 1d? | 2005-01-26 | 2005-01-26 | 292 |  |  | 50d | 0d |  |  |  |  |  |
| 294 | 4.3.5.4 | Dilogs/VO/Icons/Objects/Animations | 1d? | 2005-01-27 | 2005-01-27 | 293 |  |  | 50d | 0d |  |  |  |  |  |
| 295 | 4.3.5.5 | Настройка | 1d? | 2005-01-28 | 2005-01-28 | 294 |  |  | 50d |  |  |  |  |  |  |
| 297 | 5 | **05_Dark_Valley** | 30.88d? | 2005-01-24 A | 2005-02-28 |  | 4% | 29.5d? | -10d | 0d |  | 2005-03-01 | Рома, Змей | 1334h | 59.21h |
| 298 | 5.1 | **LevelDesign** | 9d? | 2005-01-24 | 2005-02-02 |  |  |  | 3.88d |  |  | 2005-02-07 | Rainbow, Ефимов Владимир | 72h |  |
| 299 | 5.1.1 | **Stage 1** | 9d? | 2005-01-24 | 2005-02-02 |  |  |  | 3.88d |  |  |  |  |  |  |
| 300 | 5.1.1.1 | List of Changes | 2d | 2005-01-24 | 2005-01-25 |  |  |  | 3.88d | 0d | start no earlier than 2005-01-24 |  |  |  |  |
| 301 | 5.1.1.2 | Changed Geometry | 1d? | 2005-01-26 | 2005-01-26 | 300 |  |  | 3.88d | 0d |  |  |  |  |  |
| 302 | 5.1.1.3 | Check List 1 | 1d? | 2005-01-27 | 2005-01-27 | 301 |  |  | 3.88d | 0d |  |  |  |  |  |
| 303 | 5.1.1.4 | Check List 2 | 1d? | 2005-01-28 | 2005-01-28 | 302 |  |  | 3.88d | 0d |  |  |  |  |  |
| 304 | 5.1.1.5 | Check List 3 | 1d? | 2005-01-29 | 2005-01-29 | 303 |  |  | 3.88d | 0d |  |  |  |  |  |
| 305 | 5.1.1.6 | Check List 4 | 1d? | 2005-01-31 | 2005-01-31 | 304 |  |  | 3.88d | 0d |  |  |  |  |  |
| 306 | 5.1.1.7 | Render Geometry | 1d? | 2005-02-01 | 2005-02-01 | 305 |  |  | 3.88d | 0d |  |  |  |  |  |
| 307 | 5.1.1.8 | Grass | 1d? | 2005-02-02 | 2005-02-02 | 306 |  |  | 3.88d |  |  |  |  |  |  |
| 309 | 5.2 | **GameDesign** | 22d? | 2005-02-01 A | 2005-02-25 |  | 10% | 19.73d? | -8.12d | 0d |  |  |  | 167h | 17.25h |
| 310 | 5.2.1 | AI Maps/Graphs | 2.88d? | 2005-02-01 A | 2005-02-03 |  | 75% | 0.72d? | 11d |  | finish no earlier than 2005-02-03 |  | Шишкин | 23h | 17.25h |
| 311 | 5.2.2 | **Secrets** | 3d? | 2005-02-21 | 2005-02-23 |  |  |  | -6.12d | 0d |  |  |  | 24h |  |
| 312 | 5.2.2.1 | **Stage 1** | 3d? | 2005-02-21 | 2005-02-23 |  |  |  | -6.12d | 0d |  |  |  | 24h |  |
| 313 | 5.2.2.1.1 | Design | 1d? | 2005-02-21 | 2005-02-21 |  |  |  | -6.12d | 0d | start no earlier than 2005-02-21 |  | Шишкин | 8h |  |
| 314 | 5.2.2.1.2 | Implementation | 1d? | 2005-02-22 | 2005-02-22 | 313 |  |  | -6.12d | 0d | start no earlier than 2005-02-15 |  | Шишкин | 8h |  |
| 315 | 5.2.2.1.3 | Tuning | 1d? | 2005-02-23 | 2005-02-23 | 314 |  |  | -6.12d | 0d |  |  | Шишкин | 8h |  |

| ID | WBS | Task | Duration | Start | Finish | Predecessors | Total slack | Free slack | Constraint | Resources | Work |
| --- | --- | --- | --- | --- | --- | --- | --- | --- | --- | --- | --- |
| 316 | 5.2.3 | **Smartterrains** | 3d? | 2005-02-14 | 2005-02-16 |  | -0.12d | 0d |  |  | 24h |
| 317 | 5.2.3.1 | **Stage 1** | 3d? | 2005-02-14 | 2005-02-16 |  | -0.12d | 0d |  |  | 24h |
| 318 | 5.2.3.1.1 | Design | 1d? | 2005-02-14 | 2005-02-14 |  | -0.12d | 0d | start no earlier than 2005-02-14 | Шишкин | 8h |
| 319 | 5.2.3.1.2 | Implementation | 1d? | 2005-02-15 | 2005-02-15 | 318 | -0.12d | 0d |  | Шишкин | 8h |
| 320 | 5.2.3.1.3 | Tuning | 1d? | 2005-02-16 | 2005-02-16 | 319 | -0.12d | 0d |  | Шишкин | 8h |
| 321 | 5.2.4 | **Monsters/Spawns** | 3d? | 2005-02-17 | 2005-02-19 |  | -3.12d | 0d |  |  | 24h |
| 322 | 5.2.4.1 | **Stage 1** | 3d? | 2005-02-17 | 2005-02-19 |  | -3.12d | 0d |  |  | 24h |
| 323 | 5.2.4.1.1 | Design | 1d? | 2005-02-17 | 2005-02-17 |  | -3.12d | 0d | start no earlier than 2005-02-17 | Шишкин | 8h |
| 324 | 5.2.4.1.2 | Implementation | 1d? | 2005-02-18 | 2005-02-18 | 323 | -3.12d | 0d | start no earlier than 2005-02-17 | Шишкин | 8h |
| 325 | 5.2.4.1.3 | Tuning | 1d | 2005-02-19 | 2005-02-19 | 324 | -3.12d | 0d | start no earlier than 2005-02-17 | Шишкин | 8h |
| 326 | 5.2.5 | **Stalkers/Spawns** | 3d? | 2005-02-19 | 2005-02-22 |  | -5.12d | 0d |  |  | 24h |
| 327 | 5.2.5.1 | **Stage 1** | 3d? | 2005-02-19 | 2005-02-22 |  | -5.12d | 0d |  |  | 24h |
| 328 | 5.2.5.1.1 | Design | 1d? | 2005-02-19 | 2005-02-19 |  | -5.12d | 0d | start no earlier than 2005-02-19 | Шишкин | 8h |
| 329 | 5.2.5.1.2 | Implementation | 1d | 2005-02-21 | 2005-02-21 | 328 | -5.12d | 0d | start no earlier than 2005-02-19 | Шишкин | 8h |
| 330 | 5.2.5.1.3 | Tuning | 1d | 2005-02-22 | 2005-02-22 | 329 | -5.12d | 0d | start no earlier than 2005-02-19 | Шишкин | 8h |
| 331 | 5.2.6 | **Anomalies/Spawns** | 3d? | 2005-02-19 | 2005-02-22 |  | -5.12d | 0d |  |  | 24h |
| 332 | 5.2.6.1 | **Stage 1** | 3d? | 2005-02-19 | 2005-02-22 |  | -5.12d | 0d |  |  | 24h |
| 333 | 5.2.6.1.1 | Design | 1d? | 2005-02-19 | 2005-02-19 |  | -5.12d | 0d | start no earlier than 2005-02-19 | Шишкин | 8h |
| 334 | 5.2.6.1.2 | Implementation | 1d | 2005-02-21 | 2005-02-21 | 333 | -5.12d | 0d | start no earlier than 2005-02-19 | Шишкин | 8h |
| 335 | 5.2.6.1.3 | Tuning | 1d | 2005-02-22 | 2005-02-22 | 334 | -5.12d | 0d | start no earlier than 2005-02-19 | Шишкин | 8h |
| 336 | 5.2.7 | **Physicks** | 3d? | 2005-02-23 | 2005-02-25 |  | -8.12d | 0d |  |  | 24h |
| 337 | 5.2.7.1 | **Stage 1** | 3d? | 2005-02-23 | 2005-02-25 |  | -8.12d | 0d |  |  | 24h |
| 338 | 5.2.7.1.1 | Design | 1d? | 2005-02-23 | 2005-02-23 |  | -8.12d | 0d | start no earlier than 2005-02-23 | Джип | 8h |
| 339 | 5.2.7.1.2 | Implementation | 1d? | 2005-02-24 | 2005-02-24 | 338 | -8.12d | 0d |  | Джип | 8h |
| 340 | 5.2.7.1.3 | Tuning | 1d? | 2005-02-25 | 2005-02-25 | 339 | -8.12d | 0d |  | Джип | 8h |

| ID | WBS | Task | Type | Duration | Start | Finish | Predecessors | Complete | Remaining | Total slack | Free slack | Constraint | Deadline | Resources | Work | Actual work |
| --- | --- | --- | --- | --- | --- | --- | --- | --- | --- | --- | --- | --- | --- | --- | --- | --- |
| 342 | 5.3 | **Scripts** |  | 27.88d? | 2005-01-27 A | 2005-02-28 |  | 4% | 26.86d? | -10d | 0d |  | 2005-03-01 |  | 848h | 31h |
| 343 | 5.3.1 | Сценарий (текст) |  | 3.88d | 2005-01-27 A | 2005-01-31 A |  | 100% |  |  |  |  |  | Шишкин | 31h | 31h |
| 344 | 5.3.2 | Постановка задач |  | 1d? | 2005-02-04 | 2005-02-04 |  |  |  | 9.88d |  | start no earlier than 2005-02-04 |  | Шишкин | 8h |  |
| 345 | 5.3.3 | **Сцена 1 - Гулаг Бандитов.** |  | 3d? | 2005-02-04 | 2005-02-07 |  |  |  | 7.88d |  |  |  |  | 90h |  |
| 346 | 5.3.3.1 | **Реализация** |  | 1.75d? | 2005-02-04 | 2005-02-05 |  |  |  | 9.12d |  |  |  |  | 50h |  |
| 347 | 5.3.3.1.1 | Реализация |  | 1d | 2005-02-04 | 2005-02-04 |  |  |  | 9.88d |  | start no earlier than 2005-02-04 |  | Змей | 8h |  |
| 348 | 5.3.3.1.2 | Дополнительно требуется (анимации лидера) |  | 1.75d? | 2005-02-04 | 2005-02-05 |  |  |  | 9.12d |  | finish no earlier than 2005-02-05 |  | Вова | 14h |  |
| 349 | 5.3.3.1.3 | Дополнительно требуется (профайл Борова) |  | 1.75d? | 2005-02-04 | 2005-02-05 |  |  |  | 9.12d |  | finish no earlier than 2005-02-05 |  | Руслан | 14h |  |
| 350 | 5.3.3.1.4 | Дополнительно требуется (модель и иконка ключа от Лаборатории Х18) |  | 1.75d? | 2005-02-04 | 2005-02-05 |  |  |  | 9.12d |  | finish no earlier than 2005-02-05 |  | PROF | 14h |  |
| 351 | 5.3.3.2 | Расстановка |  | 2d | 2005-02-04 | 2005-02-05 |  |  |  | 7.88d | 0d | start no earlier than 2005-02-04 |  | Шишкин | 16h |  |
| 352 | 5.3.3.3 | Тексты, Диалоги, Задания, Отметки на карте, новости, профили персонажей (продумать) | milestone | 1d | 2005-02-07 | 2005-02-07 | 351 |  |  | 7.88d |  | start no earlier than 2005-02-04 |  | Шишкин | 8h |  |
| 353 | 5.3.3.4 | **Тестирование** |  | 1d | 2005-02-07 | 2005-02-07 |  |  |  | 7.88d |  |  |  |  | 16h |  |
| 354 | 5.3.3.4.1 | Тестирование |  | 1d | 2005-02-07 | 2005-02-07 |  |  |  | 7.88d |  | start no earlier than 2005-02-07 |  | Lema | 8h |  |
| 355 | 5.3.3.4.2 | Проверить расстановку AI нод вокруг дерева |  | 1d | 2005-02-07 | 2005-02-07 |  |  |  | 7.88d |  | start no earlier than 2005-02-07 |  | Lema | 8h |  |
| 356 | 5.3.4 | **Сцена 2 - Падающий кровосос.** |  | 3d? | 2005-02-04 | 2005-02-07 |  |  |  | 7.88d |  |  |  |  | 32h |  |
| 357 | 5.3.4.1 | **Реализация** |  | 1d | 2005-02-04 | 2005-02-04 |  |  |  | 9.88d |  |  |  |  | 8h |  |
| 358 | 5.3.4.1.1 | Реализация |  | 1d | 2005-02-04 | 2005-02-04 |  |  |  | 9.88d |  | start no earlier than 2005-02-04 |  | Змей | 8h |  |
| 359 | 5.3.4.2 | Расстановка |  | 0.5d | 2005-02-07 | 2005-02-07 |  |  |  | 7.88d | 0d | start no earlier than 2005-02-07 |  | Шишкин | 4h |  |
| 360 | 5.3.4.3 | Тексты, Диалоги, Задания, Отметки на карте, новости, профили персонажей (продумать) |  | 0.5d | 2005-02-07 | 2005-02-07 | 359 |  |  | 7.88d |  | start no earlier than 2005-02-07 |  | Шишкин | 4h |  |
| 361 | 5.3.4.4 | **Тестирование** |  | 1d? | 2005-02-07 | 2005-02-07 |  |  |  | 7.88d |  |  |  |  | 16h |  |
| 362 | 5.3.4.4.1 | Тестирование |  | 1d | 2005-02-07 | 2005-02-07 |  |  |  | 7.88d |  | start no earlier than 2005-02-07 |  | Lema | 8h |  |
| 363 | 5.3.4.4.2 | Проверить расстановку AI нод вокруг дерева |  | 1d? | 2005-02-07 | 2005-02-07 |  |  |  | 7.88d |  | start no earlier than 2005-02-07 |  | Lema | 8h |  |
| 364 | 5.3.5 | **Сцена 3 - Переброска пленного.** |  | 3d? | 2005-02-05 | 2005-02-08 |  |  |  | 6.88d |  |  |  |  | 62h |  |
| 365 | 5.3.5.1 | **Реализация** |  | 1.88d? | 2005-02-05 | 2005-02-07 |  |  |  | 8d |  |  |  |  | 30h |  |
| 366 | 5.3.5.1.1 | Реализация |  | 1.88d | 2005-02-05 | 2005-02-07 |  |  |  | 8d |  | finish no earlier than 2005-02-07 |  | Змей | 15h |  |
| 367 | 5.3.5.1.2 | Дополнительно требуется (анимация пленника) |  | 1.88d? | 2005-02-05 | 2005-02-07 |  |  |  | 8d |  | finish no earlier than 2005-02-07 |  | Вова | 15h |  |
| 368 | 5.3.5.2 | Расстановка |  | 1d | 2005-02-07 | 2005-02-07 |  |  |  | 7.88d |  | start no earlier than 2005-02-07 |  | Шишкин | 8h |  |
| 369 | 5.3.5.3 | Тексты, Диалоги, Задания, Отметки на карте, новости, профили персонажей (продумать) |  | 1d? | 2005-02-07 | 2005-02-07 |  |  |  | 7.88d |  | start no earlier than 2005-02-07 |  | Шишкин | 8h |  |

Notes:
- 343: В Темной Долине ключевые места это Лагерь Бандитов и База Монолита. Ну уровне много грузовиков смерти и трупов, в ПДА которых прописаны различные задания на убийство. Игрок при переходе с Гарбэджа натыкается на засады бандитов. В Лагерь бандитов можно попасть через трубу (она описывается или дается план новичком из драммомента, инфа в ПДА Серого, Лидер Долга). В лагере игрок может узнать пароль для прохода на территорию Базы Монолита, получить ключ в лабораторию Х18 и бандитский костюм. Если игрок убьет Борова (лидера бандитов), то активируется скрипт «Преследование игрока на Болотах бандитами в кожаных плащах». Игрок должен проникнуть на Базу Монолита (в костюме бандита мирно или с войной, убивая всех монолитовцев). Там он должен найти вход в Лабораторию Х18.
- 345: Очень много бандитов, кэмпы у костра, спящие, раненые, патрули по территории лагеря. В отдельном помещении сидит лидер группировки Боров. У Борова хранится ключ к Лаборатории Х18. Его охраняют несколько крутых бандитов в плащах с капюшонами. При убийстве Борова включается инфопоршн «Преследование игрока на Болотах бандитами в кожаных плащах». По территории лагеря расставлены часовые, на вышках снайперы.
- 356: Если игрок решит пробираться в Лагерь Бандитов через трубу, за 5 метров до выхода из нее он слышит крики «Сука, как ты сюда пробрался?», «Мочи его, ребята!» и начинается стрельба. Если игрок застыл на месте или убежал, испугавшись, что это ЕГО заметили, стрельба продолжается еще секунд 15, потом сверху падает кровосос. Если игрок все же подойдет к выходу из трубы, практически ему на голову сверху свалится мертвое тело кровососа. Слышит «Получи, тварь!». Атакующие бандиты расходятся по местам.
- 364: Скрипт срабатывает при приближении игрока к дороге. В Лагере Бандитов спавнятся три бандита и один пленный сталкер. Бандиты ведут сталкера к Базе Монолита по дороге впереди пленный, сзади три охранника с автоматами, которые время от времени «подбадривают» пленного фразами вроде: «Ну, я тебе не завидую», «Скоро ты будешь работать обедом для мутантов в темном подземелье», «Готовься к фуршету, чувак. Ты основное блюдо!». Сталкер посылает по ПДА просьбы о помощи. Если игрок расстрелял бандитов, пленный сталкер в благодарность рассказывает, что только что бандиты вспоминали пароль для входа на Базу Монолита. Пароль этот «такой-то». А пройти на Базу можно, переодевшись в костюм бандита. Если игрок не обращает внимания на это событие, по достижении определенной точки (расположенной довольно близко к Базе Монолита) пленный не выдерживает, в панике сбегает с дороги и, петляя, пытается убежать. Бандиты остаются на дороге, поднимают автоматы и расстреливают беднягу, после чего возвращаются в Лагерь.
- 367: Пленник идет, оустив голову, сгорбив спину, руки сложил за спиной.

| ID | WBS | Task | Duration | Start | Finish | Predecessors | Total slack | Constraint | Resources | Work |
| --- | --- | --- | --- | --- | --- | --- | --- | --- | --- | --- |
| 370 | 5.3.5.4 | **Тестирование** | 1d? | 2005-02-08 | 2005-02-08 |  | 6.88d |  |  | 16h |
| 371 | 5.3.5.4.1 | Тестирование | 1d? | 2005-02-08 | 2005-02-08 |  | 6.88d | start no earlier than 2005-02-08 | Lema | 8h |
| 372 | 5.3.5.4.2 | Проверить расстановку AI нод вокруг дерева | 1d? | 2005-02-08 | 2005-02-08 |  | 6.88d | start no earlier than 2005-02-08 | Lema | 8h |
| 373 | 5.3.6 | **Сцена 4 - Гулаг Монолита.** | 3.88d? | 2005-02-08 | 2005-02-11 |  | 4d |  |  | 103h |
| 374 | 5.3.6.1 | **Реализация** | 2.88d? | 2005-02-08 | 2005-02-10 |  | 5d |  |  | 46h |
| 375 | 5.3.6.1.1 | Реализация | 2.88d | 2005-02-08 | 2005-02-10 |  | 5d | finish no earlier than 2005-02-10 | Змей | 23h |
| 376 | 5.3.6.1.2 | Дополнительно требуется (модель и иконка ключа от Лаборатории Х18) | 2.88d? | 2005-02-08 | 2005-02-10 |  | 5d | finish no earlier than 2005-02-10 | PROF | 23h |
| 377 | 5.3.6.2 | Расстановка | 2.88d | 2005-02-08 | 2005-02-10 | 343 | 5d | finish no earlier than 2005-02-10 | Шишкин | 23h |
| 378 | 5.3.6.3 | Тексты, Диалоги, Задания, Отметки на карте, новости, профили персонажей (продумать) | 0.5d | 2005-02-10 | 2005-02-10 |  | 5.38d | start no earlier than 2005-02-10 | Шишкин | 4h |
| 379 | 5.3.6.4 | **Тестирование** | 1.88d? | 2005-02-10 | 2005-02-11 |  | 4d |  |  | 30h |
| 380 | 5.3.6.4.1 | Тестирование | 1.88d | 2005-02-10 | 2005-02-11 |  | 4d | finish no earlier than 2005-02-11 | Lema | 15h |
| 381 | 5.3.6.4.2 | Проверить расстановку AI нод вокруг дерева | 1.88d? | 2005-02-10 | 2005-02-11 |  | 4d | start no earlier than 2005-02-10 | Lema | 15h |
| 382 | 5.3.7 | **Сцена 5 - SOS с бензоколонки.** | 1d? | 2005-02-11 | 2005-02-11 |  | 3.88d |  |  | 36h |
| 383 | 5.3.7.1 | **Реализация** | 0.88d | 2005-02-11 | 2005-02-11 |  | 4d |  |  | 7h |
| 384 | 5.3.7.1.1 | Реализация | 0.88d | 2005-02-11 | 2005-02-11 |  | 4d | finish no earlier than 2005-02-11 | Змей | 7h |
| 385 | 5.3.7.2 | Расстановка | 0.88d | 2005-02-11 | 2005-02-11 |  | 4d | finish no earlier than 2005-02-11 | Шишкин | 7h |
| 386 | 5.3.7.3 | Тексты, Диалоги, Задания, Отметки на карте, новости, профили персонажей (продумать) | 1d? | 2005-02-11 | 2005-02-11 |  | 3.88d | start no earlier than 2005-02-11 | Шишкин | 8h |
| 387 | 5.3.7.4 | **Тестирование** | 0.88d? | 2005-02-11 | 2005-02-11 |  | 4d |  |  | 14h |
| 388 | 5.3.7.4.1 | Тестирование | 0.88d? | 2005-02-11 | 2005-02-11 |  | 4d | finish no earlier than 2005-02-11 | Lema | 7h |
| 389 | 5.3.7.4.2 | Проверить расстановку AI нод вокруг дерева | 0.88d? | 2005-02-11 | 2005-02-11 |  | 4d | finish no earlier than 2005-02-11 | Lema | 7h |
| 390 | 5.3.8 | **Сцена 6 - Прибытие автомобиля.** | 1.88d? | 2005-02-12 | 2005-02-14 |  | 2d |  |  | 36h |
| 391 | 5.3.8.1 | **Реализация** | 0.88d | 2005-02-12 | 2005-02-12 |  | 3d |  |  | 7h |
| 392 | 5.3.8.1.1 | Реализация | 0.88d | 2005-02-12 | 2005-02-12 |  | 3d | start no earlier than 2005-02-12 | Змей | 7h |
| 393 | 5.3.8.2 | Расстановка | 0.88d | 2005-02-12 | 2005-02-12 |  | 3d | start no earlier than 2005-02-12 | Шишкин | 7h |
| 394 | 5.3.8.3 | Тексты, Диалоги, Задания, Отметки на карте, новости, профили персонажей (продумать) | 1d? | 2005-02-12 | 2005-02-12 |  | 2.88d | start no earlier than 2005-02-12 | Шишкин | 8h |

Notes:
- 373: Много зомбированных сталкеров группировки Монолит. У командиров отделений ключи от лаборатории Х18. Патрульные усиленно охраняют входы, расставить в местах, где игрок не сможет их «снять» с расстояния снайперкой. В обычном режиме монолитовцы сразу открывают огонь по игроку, только увидев его (однако за территорию Базы их выманить невозможно стоит рестриктор). Если игрок одет в костюм Бандита зоунгарды Монолита на входах остановят игрока, потребуют сказать пароль, при правильном ответе пропускают. Если игрок в костюме бандита стрельнет по монолитовцу или снимет костюм, монолитовцы раз и навсегда обижаются на игрока.
- 382: Игрок получает сигнал SOS из здания рядом с бензоколонкой. Игрок приходит туда, видит прямо от входа возле стены в освещенном единственной лампочкой месте полумертвого сталкера. Когда игрок входит в комнату, он замечает справа и слева от входа в тени много трупов сталкеров, солдат. Из темной комнаты слева от входа выбегает кровосос, перекрывая выход, направляется к игроку и нападает.
- 390: Когда игрок заходит на территорию бензоколонки, он слышит приближающийся рокот двигателя, к главному входу на Базу Монолита подъезжает Камаз, из него выгружаются 4-5 человек и идут в здание Базы.

| ID | WBS | Task | Duration | Start | Finish | Total slack | Free slack | Constraint | Resources | Work |
| --- | --- | --- | --- | --- | --- | --- | --- | --- | --- | --- |
| 395 | 5.3.8.4 | **Тестирование** | 0.88d? | 2005-02-14 | 2005-02-14 | 2d |  |  |  | 14h |
| 396 | 5.3.8.4.1 | Тестирование | 0.88d? | 2005-02-14 | 2005-02-14 | 2d |  | start no earlier than 2005-02-14 | Lema | 7h |
| 397 | 5.3.8.4.2 | Проверить расстановку AI нод вокруг дерева | 0.88d? | 2005-02-14 | 2005-02-14 | 2d |  | start no earlier than 2005-02-14 | Lema | 7h |
| 398 | 5.3.9 | **Сцена 7 - Развод лоха.** | 2d? | 2005-02-14 | 2005-02-15 | 0.88d |  |  |  | 44h |
| 399 | 5.3.9.1 | **Реализация** | 1.88d | 2005-02-14 | 2005-02-15 | 1d |  |  |  | 15h |
| 400 | 5.3.9.1.1 | Реализация | 1.88d | 2005-02-14 | 2005-02-15 | 1d |  | finish no earlier than 2005-02-15 | Змей | 15h |
| 401 | 5.3.9.2 | Расстановка | 0.88d | 2005-02-15 | 2005-02-15 | 1d |  | start no earlier than 2005-02-15 | Шишкин | 7h |
| 402 | 5.3.9.3 | Тексты, Диалоги, Задания, Отметки на карте, новости, профили персонажей (продумать) | 1d? | 2005-02-15 | 2005-02-15 | 0.88d |  | start no earlier than 2005-02-15 | Шишкин | 8h |
| 403 | 5.3.9.4 | **Тестирование** | 0.88d? | 2005-02-15 | 2005-02-15 | 1d |  |  |  | 14h |
| 404 | 5.3.9.4.1 | Тестирование | 0.88d? | 2005-02-15 | 2005-02-15 | 1d |  | start no earlier than 2005-02-15 | Lema | 7h |
| 405 | 5.3.9.4.2 | Проверить расстановку AI нод вокруг дерева | 0.88d? | 2005-02-15 | 2005-02-15 | 1d |  | start no earlier than 2005-02-15 | Lema | 7h |
| 406 | 5.3.10 | **Сцена 7 - Самоубийство.** | 1d? | 2005-02-16 | 2005-02-16 | -0.12d | 0d |  |  | 58h |
| 407 | 5.3.10.1 | **Реализация** | 0.88d? | 2005-02-16 | 2005-02-16 | 0d |  |  |  | 28h |
| 408 | 5.3.10.1.1 | Реализация | 0.88d | 2005-02-16 | 2005-02-16 | 0d |  | finish no earlier than 2005-02-16 | Змей | 7h |
| 409 | 5.3.10.1.2 | Дополнительно требуется (Задание на самоубийцу) | 0.88d? | 2005-02-16 | 2005-02-16 | 0d |  | finish no earlier than 2005-02-16 | Руслан | 7h |
| 410 | 5.3.10.1.3 | Дополнительно требуется (Вознаграждение за самоубийцу) | 0.88d? | 2005-02-16 | 2005-02-16 | 0d |  | finish no earlier than 2005-02-16 | Руслан | 7h |
| 411 | 5.3.10.1.4 | Дополнительно требуется (анимация самоубийцы) | 0.88d? | 2005-02-16 | 2005-02-16 | 0d |  | finish no earlier than 2005-02-16 | Вова | 7h |
| 412 | 5.3.10.2 | Расстановка | 1d | 2005-02-16 | 2005-02-16 | -0.12d | 0d | start no earlier than 2005-02-16 | Шишкин | 8h |
| 413 | 5.3.10.3 | Тексты, Диалоги, Задания, Отметки на карте, новости, профили персонажей (продумать) | 1d? | 2005-02-16 | 2005-02-16 | -0.12d | 0d | start no earlier than 2005-02-16 | Шишкин | 8h |
| 414 | 5.3.10.4 | **Тестирование** | 0.88d? | 2005-02-16 | 2005-02-16 | 0d |  |  |  | 14h |
| 415 | 5.3.10.4.1 | Тестирование | 0.88d? | 2005-02-16 | 2005-02-16 | 0d |  | start no earlier than 2005-02-16 | Lema | 7h |
| 416 | 5.3.10.4.2 | Проверить расстановку AI нод вокруг дерева | 0.88d? | 2005-02-16 | 2005-02-16 | 0d |  | start no earlier than 2005-02-16 | Lema | 7h |
| 417 | 5.3.11 | **Сцена 7 - Засады бандитов на входе с Гарбэджа.** | 2d? | 2005-02-17 | 2005-02-18 | -2.12d | 0d |  |  | 44h |
| 418 | 5.3.11.1 | **Реализация** | 1.88d | 2005-02-17 | 2005-02-18 | -2d | 0d |  |  | 15h |
| 419 | 5.3.11.1.1 | Реализация | 1.88d | 2005-02-17 | 2005-02-18 | -2d | 0d | finish no earlier than 2005-02-18 | Змей | 15h |
| 420 | 5.3.11.2 | Расстановка | 0.88d | 2005-02-18 | 2005-02-18 | -2d | 0d | start no earlier than 2005-02-18 | Шишкин | 7h |
| 421 | 5.3.11.3 | Тексты, Диалоги, Задания, Отметки на карте, новости, профили персонажей (продумать) | 1d? | 2005-02-18 | 2005-02-18 | -2.12d | 0d | start no earlier than 2005-02-18 | Шишкин | 8h |

Notes:
- 398: Игроку на PDA приходит информация от сталкера из группировки бандитов, что он продает мощную пушку (возможно даже, винтовку Гаусса) по низкой цене. Игрок приходит торговать, бандит говорит, что сейчас вынесет оружие, берет деньги, уходит в домик и не возвращается. Если игрок сунется туда, его не пропускает зоунгард («Вали отсюда, пока цел!»).
- 406: По ПДА на предыдущих уровнях Торговец сообщает, что сталкеры шепчутся о появлении в окрестностях сталкера Васи, которого не видели уже месяцев шесть он пытался найти проход к центру зоны и бесследно исчез, а теперь вот объявился. Его недавно видели в Темной Долине, где-то за базой Монолита. Игрок находит этого Васю, он весь такой испуганный, мелет полный бред о том, что он был ТАМ, он видел ЭТО. ОНО говорило с ним. В его голове звучал этот ужасный голос, выжигая мозги. Ужас, ужас, ужас! Игрок говорит ему пару фраз, успокаивает. Тот в нервной форме благодарит за сочувствие, просит передать какой-то предмет бармену, тот уже передаст его семье. Дает игроку артефакт, отбегает на несколько метров и с криком «ОНО меня не получит!» забегает в Мясорубку.
- 409: В ранних уровнях пустить задание от торговца, после передачи предмета дать задание на доставку бармену
- 410: После доставки диалог у бармена и раздача пряников.
- 411: Сталкер подносит пистолет к виску, потом стреляет
- 417: На каждом из трех входов с Гарбэджа сидят бандиты. При входе игрока в скриптовую зону они подбегают, после непродолжительного диалога дают в морду. Игрок теряет сознание, переход на скрипт Игрок в темнице

| ID | WBS | Task | Duration | Start | Finish | Total slack | Free slack | Constraint | Resources | Work |
| --- | --- | --- | --- | --- | --- | --- | --- | --- | --- | --- |
| 422 | 5.3.11.4 | **Тестирование** | 0.88d? | 2005-02-18 | 2005-02-18 | -2d | 0d |  |  | 14h |
| 423 | 5.3.11.4.1 | Тестирование | 0.88d? | 2005-02-18 | 2005-02-18 | -2d | 0d | finish no earlier than 2005-02-18 | Lema | 7h |
| 424 | 5.3.11.4.2 | Проверить расстановку AI нод вокруг дерева | 0.88d? | 2005-02-18 | 2005-02-18 | -2d | 0d | finish no earlier than 2005-02-18 | Lema | 7h |
| 425 | 5.3.12 | **Сцена 8 - Игрок в темнице** | 4d? | 2005-02-19 | 2005-02-23 | -6.12d | 0d |  |  | 215h |
| 426 | 5.3.12.1 | **Реализация** | 3.88d? | 2005-02-19 | 2005-02-23 | -6d | 0d |  |  | 186h |
| 427 | 5.3.12.1.1 | Реализация | 3.88d | 2005-02-19 | 2005-02-23 | -6d | 0d | finish no earlier than 2005-02-23 | Змей | 31h |
| 428 | 5.3.12.1.2 | Дополнительно требуется (переброска игрока) | 3.88d? | 2005-02-19 | 2005-02-23 | -6d | 0d | finish no earlier than 2005-02-23 | Dima | 31h |
| 429 | 5.3.12.1.3 | Дополнительно требуется (переброска инвентори) | 3.88d? | 2005-02-19 | 2005-02-23 | -6d | 0d | finish no earlier than 2005-02-23 | Dima | 31h |
| 430 | 5.3.12.1.4 | Дополнительно требуется (закрывающаяся дверь) | 3.88d? | 2005-02-19 | 2005-02-23 | -6d | 0d | finish no earlier than 2005-02-23 | Угрюмый | 31h |
| 431 | 5.3.12.1.5 | Дополнительно требуется (модель пульта) | 3.88d? | 2005-02-19 | 2005-02-23 | -6d | 0d | finish no earlier than 2005-02-23 | Угрюмый | 31h |
| 432 | 5.3.12.1.6 | Дополнительно требуется (анимация нажатия на кнопку) | 3.88d? | 2005-02-19 | 2005-02-23 | -6d | 0d | finish no earlier than 2005-02-23 | Вова | 31h |
| 433 | 5.3.12.2 | Расстановка | 0.88d | 2005-02-23 | 2005-02-23 | -6d | 0d | start no earlier than 2005-02-23 | Шишкин | 7h |
| 434 | 5.3.12.3 | Тексты, Диалоги, Задания, Отметки на карте, новости, профили персонажей (продумать) | 1d? | 2005-02-23 | 2005-02-23 | -6.12d | 0d | start no earlier than 2005-02-23 | Шишкин | 8h |
| 435 | 5.3.12.4 | **Тестирование** | 0.88d? | 2005-02-23 | 2005-02-23 | -6d | 0d |  |  | 14h |
| 436 | 5.3.12.4.1 | Тестирование | 0.88d? | 2005-02-23 | 2005-02-23 | -6d | 0d | start no earlier than 2005-02-23 | Lema | 7h |
| 437 | 5.3.12.4.2 | Проверить расстановку AI нод вокруг дерева | 0.88d? | 2005-02-23 | 2005-02-23 | -6d | 0d | start no earlier than 2005-02-23 | Lema | 7h |
| 438 | 5.3.13 | **Сцена 9 - Узник Бандитов.** | 2d? | 2005-02-24 | 2005-02-25 | -8.12d | 0d |  |  | 46h |
| 439 | 5.3.13.1 | **Реализация** | 1.88d | 2005-02-24 | 2005-02-25 | -8d | 0d |  |  | 15h |
| 440 | 5.3.13.1.1 | Реализация | 1.88d | 2005-02-24 | 2005-02-25 | -8d | 0d | finish no earlier than 2005-02-25 | Змей | 15h |
| 441 | 5.3.13.2 | Расстановка | 1d | 2005-02-25 | 2005-02-25 | -8.12d | 0d | start no earlier than 2005-02-25 | Шишкин | 8h |
| 442 | 5.3.13.3 | Тексты, Диалоги, Задания, Отметки на карте, новости, профили персонажей (продумать) | 1d? | 2005-02-25 | 2005-02-25 | -8.12d | 0d | start no earlier than 2005-02-25 | Шишкин | 8h |
| 443 | 5.3.13.4 | **Тестирование** | 1d? | 2005-02-25 | 2005-02-25 | -8.12d | 0d |  |  | 15h |
| 444 | 5.3.13.4.1 | Тестирование | 1d? | 2005-02-25 | 2005-02-25 | -8.12d | 0d | start no earlier than 2005-02-25 | Lema | 8h |
| 445 | 5.3.13.4.2 | Проверить расстановку AI нод вокруг дерева | 0.88d? | 2005-02-25 | 2005-02-25 | -8d | 0d | start no earlier than 2005-02-25 | Lema | 7h |

Notes:
- 425: В окрестностях Лагеря Бандитов расставляем несколько патрулей. При виде игрока они кричат что-то вроде «Браток, подойди, дело есть. Только убери оружие». Если игрок подходит, ему дают в морду, после чего экран темнеет. Игрок приходит в себя в подвале Лагеря Бандитов, в клетке рядом с клеткой пленного долговца. Дверь клетки игрока открыта. Игрок видит бандита неподалеку, тот нажимает на кнопку пульта на стене и дверь захлопывается. Бандит бросает фразу «Попались, пташки! Ну, сидите, ждите своей участи» и уходит. Долговец сидит на полу своей клетки и что-то бубнит. Из оружия у игрока остались только болты. Ему нужно попасть болтом в пульт (нажать тем самым на кнопку), тогда его дверь и дверь долговца открывается. Игрок на тумбочке возле пульта берет пистолет и коробку патронов, убивает охранника, который стоит наверху, у лестницы. В его рюкзаке находит все свои отобранные предметы. Долговец благодарит игрока, рассказывает, что пароль «такой-то», на Базу Монолита можно пробраться, переодевшись, а ключ от лаборатории есть у Борова.
- 428: Переброска игрока в новое место, с указанием точки спавна и направлением взгляда.
- 429: Переброска содержимого инвентори игрока в инвентори бандита-охранника, у игрока остаются только болты
- 430: В клетке сейчас есть проход. Нужно сделать дверь, которая будет закрываться по требованию скрипта.
- 431: От клетки с закрывающейся дверью идет провод к пульту с кнопкой открытия/закрытия дверей. Нужна модель такого пульта.
- 432: Анимация нажатия на кнопку сталкером-бандитом. Пульт с кнопкой находится на уровне плеча.
- 438: Когда игрок проходит у входа в лагерь бандитов, он слышит громкие крики «На помощь! Спасите! Меня тут убьют скоро!». Можно дублировать сообщением на ПДА. Когда игрок подходит к решетке, заключенный говорит, что он разведчик Долга, его тут держат бандиты, что он узнал пароль для входа на базу Монолита. Потом резко обрывает диалог «Тсс! Сюда идут!». Отыгрывается скрипт Жертвоприношение. Заключенный говорит, что если игрок выпустит ему, он ему скажет пароль Монолита и еще кой-чего полезного. Когда игрок выпускает, тот называет пароль и говорит, что Монолитовцы тупые они зомбированные, поэтому их можно обмануть и проникнуть на территорию базы, переодевшись в костюм бандита. А ключ к Лаборатории Х18, между прочим, хранится у Борова.

| ID | WBS | Task | Duration | Start | Finish | Predecessors | Total slack | Free slack | Constraint | Deadline | Resources | Work |
| --- | --- | --- | --- | --- | --- | --- | --- | --- | --- | --- | --- | --- |
| 446 | 5.3.14 | **Сцена 10 - Жертвоприношение.** | 2.88d? | 2005-02-25 | 2005-02-28 |  | -10d | 0d |  |  |  | 43h |
| 447 | 5.3.14.1 | **Реализация** | 1.75d | 2005-02-25 | 2005-02-26 |  | -8.88d | 0d |  |  |  | 14h |
| 448 | 5.3.14.1.1 | Реализация | 1.75d | 2005-02-25 | 2005-02-26 |  | -8.88d | 0d | finish no earlier than 2005-02-26 |  | Змей | 14h |
| 449 | 5.3.14.2 | Расстановка | 0.88d | 2005-02-26 | 2005-02-26 |  | -9d | 0d | start no earlier than 2005-02-26 |  | Шишкин | 7h |
| 450 | 5.3.14.3 | Тексты, Диалоги, Задания, Отметки на карте, новости, профили персонажей (продумать) | 1d? | 2005-02-26 | 2005-02-26 |  | -9.12d | 0d | start no earlier than 2005-02-26 |  | Шишкин | 8h |
| 451 | 5.3.14.4 | **Тестирование** | 0.88d? | 2005-02-28 | 2005-02-28 |  | -10d | 0d |  |  |  | 14h |
| 452 | 5.3.14.4.1 | Тестирование | 0.88d? | 2005-02-28 | 2005-02-28 |  | -10d | 0d | start no earlier than 2005-02-28 |  | Lema | 7h |
| 453 | 5.3.14.4.2 | Проверить расстановку AI нод вокруг дерева | 0.88d? | 2005-02-28 | 2005-02-28 |  | -10d | 0d | start no earlier than 2005-02-28 |  | Lema | 7h |
| 455 | 6 | **18_Prypiat** | 11d? | 2005-02-28 | 2005-03-12 | 297 | -10d | 0d |  | 2005-04-01 | Рома, Змей | 176h |
| 456 | 6.1 | **LevelDesign** | 11d? | 2005-02-28 | 2005-03-12 |  | -10d | 0d |  | 2005-03-01 | Веня | 88h |
| 457 | 6.1.1 | **Stage 1** | 11d? | 2005-02-28 | 2005-03-12 |  | -10d | 0d |  |  |  |  |
| 458 | 6.1.1.1 | List of Changes | 2d | 2005-02-28 | 2005-03-02 |  | -10d | 0d |  |  |  |  |
| 459 | 6.1.1.2 | Changed Geometry | 1d? | 2005-03-02 | 2005-03-03 | 458 | -10d | 0d |  |  |  |  |
| 460 | 6.1.1.3 | Check List 1 | 1d? | 2005-03-03 | 2005-03-04 | 459 | -10d | 0d |  |  |  |  |
| 461 | 6.1.1.4 | Check List 2 | 1d? | 2005-03-04 | 2005-03-05 | 460 | -10d | 0d |  |  |  |  |
| 462 | 6.1.1.5 | Check List 3 | 1d? | 2005-03-05 | 2005-03-07 | 461 | -10d | 0d |  |  |  |  |
| 463 | 6.1.1.6 | Check List 4 | 1d? | 2005-03-07 | 2005-03-08 | 462 | -10d | 0d |  |  |  |  |
| 464 | 6.1.1.7 | Render Geometry | 1d? | 2005-03-08 | 2005-03-09 | 463 | -10d | 0d |  |  |  |  |
| 465 | 6.1.1.8 | Grass | 1d? | 2005-03-09 | 2005-03-10 | 464 | -10d | 0d |  |  |  |  |
| 466 | 6.1.1.9 | AI Maps | 1d? | 2005-03-10 | 2005-03-11 | 465 | -10d | 0d |  |  |  |  |
| 467 | 6.1.1.10 | Graphs | 1d? | 2005-03-11 | 2005-03-12 | 466 | -10d | 0d |  |  |  |  |
| 469 | 6.2 | **GameDesign** | 3d? | 2005-02-28 | 2005-03-03 |  | 14d |  |  |  |  |  |
| 470 | 6.2.1 | **Secrets** | 3d? | 2005-02-28 | 2005-03-03 |  | 14d |  |  |  |  |  |
| 471 | 6.2.1.1 | **Stage 1** | 3d? | 2005-02-28 | 2005-03-03 |  | 14d |  |  |  |  |  |
| 472 | 6.2.1.1.1 | Design | 1d? | 2005-02-28 | 2005-03-01 |  | 14d | 0d |  |  |  |  |
| 473 | 6.2.1.1.2 | Implementation | 1d? | 2005-03-01 | 2005-03-02 | 472 | 14d | 0d |  |  |  |  |
| 474 | 6.2.1.1.3 | Tuning | 1d? | 2005-03-02 | 2005-03-03 | 473 | 14d |  |  |  |  |  |

Notes:
- 446: Когда заключенный сказал «Тсс! Сюда идут!» в подвал входят несколько бандитов, которые ведут сталкера-новичка. Они подводят его к отверстию в полу (отверстие плохо видно из окна, через которое игрок общался с заключенным, поэтому игроку лучше перейти к соседнему окну, там вообще отломан кусок стены, поэтому будет отлично видно сценку). Перекидываются парой фраз «Ставлю 10 рублей, что ему оторвут голову», «Нет, он вообще превратится в кровавое месиво через 5 секунд», «Да хватит томить, толкайте его уже!». Потом один из бандитов толкает новичка в дырку (наносит хит), после чего веселая компания еще некоторое время смотрит, что происходит там, внизу, потом уходят.

| ID | WBS | Task | Duration | Start | Finish | Predecessors | Total slack | Free slack |
| --- | --- | --- | --- | --- | --- | --- | --- | --- |
| 475 | 6.2.2 | **Smartterrains** | 3d? | 2005-02-28 | 2005-03-03 |  | 14d |  |
| 476 | 6.2.2.1 | **Stage 1** | 3d? | 2005-02-28 | 2005-03-03 |  | 14d |  |
| 477 | 6.2.2.1.1 | Design | 1d? | 2005-02-28 | 2005-03-01 |  | 14d | 0d |
| 478 | 6.2.2.1.2 | Implementation | 1d? | 2005-03-01 | 2005-03-02 | 477 | 14d | 0d |
| 479 | 6.2.2.1.3 | Tuning | 1d? | 2005-03-02 | 2005-03-03 | 478 | 14d |  |
| 480 | 6.2.3 | **Monsters/Spawns** | 3d? | 2005-02-28 | 2005-03-03 |  | 14d |  |
| 481 | 6.2.3.1 | **Stage 1** | 3d? | 2005-02-28 | 2005-03-03 |  | 14d |  |
| 482 | 6.2.3.1.1 | Design | 1d? | 2005-02-28 | 2005-03-01 |  | 14d | 0d |
| 483 | 6.2.3.1.2 | Implementation | 1d? | 2005-03-01 | 2005-03-02 | 482 | 14d | 0d |
| 484 | 6.2.3.1.3 | Tuning | 1d? | 2005-03-02 | 2005-03-03 | 483 | 14d |  |
| 485 | 6.2.4 | **Stalkers/Spawns** | 3d? | 2005-02-28 | 2005-03-03 |  | 14d |  |
| 486 | 6.2.4.1 | **Stage 1** | 3d? | 2005-02-28 | 2005-03-03 |  | 14d |  |
| 487 | 6.2.4.1.1 | Design | 1d? | 2005-02-28 | 2005-03-01 |  | 14d | 0d |
| 488 | 6.2.4.1.2 | Implementation | 1d? | 2005-03-01 | 2005-03-02 | 487 | 14d | 0d |
| 489 | 6.2.4.1.3 | Tuning | 1d? | 2005-03-02 | 2005-03-03 | 488 | 14d |  |
| 490 | 6.2.5 | **Anomalies/Spawns** | 3d? | 2005-02-28 | 2005-03-03 |  | 14d |  |
| 491 | 6.2.5.1 | **Stage 1** | 3d? | 2005-02-28 | 2005-03-03 |  | 14d |  |
| 492 | 6.2.5.1.1 | Design | 1d? | 2005-02-28 | 2005-03-01 |  | 14d | 0d |
| 493 | 6.2.5.1.2 | Implementation | 1d? | 2005-03-01 | 2005-03-02 | 492 | 14d | 0d |
| 494 | 6.2.5.1.3 | Tuning | 1d? | 2005-03-02 | 2005-03-03 | 493 | 14d |  |
| 495 | 6.2.6 | **Physicks** | 3d? | 2005-02-28 | 2005-03-03 |  | 14d |  |
| 496 | 6.2.6.1 | **Stage 1** | 3d? | 2005-02-28 | 2005-03-03 |  | 14d |  |
| 497 | 6.2.6.1.1 | Design | 1d? | 2005-02-28 | 2005-03-01 |  | 14d | 0d |
| 498 | 6.2.6.1.2 | Implementation | 1d? | 2005-03-01 | 2005-03-02 | 497 | 14d | 0d |
| 499 | 6.2.6.1.3 | Tuning | 1d? | 2005-03-02 | 2005-03-03 | 498 | 14d |  |

| ID | WBS | Task | Duration | Start | Finish | Predecessors | Total slack | Free slack |
| --- | --- | --- | --- | --- | --- | --- | --- | --- |
| 501 | 6.3 | **Scripts** | 5d? | 2005-02-28 | 2005-03-05 |  | 12d |  |
| 502 | 6.3.1 | **Script 1** | 5d? | 2005-02-28 | 2005-03-05 |  | 12d |  |
| 503 | 6.3.1.1 | Scenario(text) | 1d? | 2005-02-28 | 2005-03-01 |  | 12d | 0d |
| 504 | 6.3.1.2 | Постановка задач | 1d? | 2005-03-01 | 2005-03-02 | 503 | 12d | 0d |
| 505 | 6.3.1.3 | Implimentation | 1d? | 2005-03-02 | 2005-03-03 | 504 | 12d | 0d |
| 506 | 6.3.1.4 | Dilogs/VO/Icons/Objects/Animations | 1d? | 2005-03-03 | 2005-03-04 | 505 | 12d | 0d |
| 507 | 6.3.1.5 | Настройка | 1d? | 2005-03-04 | 2005-03-05 | 506 | 12d |  |
| 508 | 6.3.2 | **Script 2** | 5d? | 2005-02-28 | 2005-03-05 |  | 12d |  |
| 509 | 6.3.2.1 | Scenario(text) | 1d? | 2005-02-28 | 2005-03-01 |  | 12d | 0d |
| 510 | 6.3.2.2 | Постановка задач | 1d? | 2005-03-01 | 2005-03-02 | 509 | 12d | 0d |
| 511 | 6.3.2.3 | Implimentation | 1d? | 2005-03-02 | 2005-03-03 | 510 | 12d | 0d |
| 512 | 6.3.2.4 | Dilogs/VO/Icons/Objects/Animations | 1d? | 2005-03-03 | 2005-03-04 | 511 | 12d | 0d |
| 513 | 6.3.2.5 | Настройка | 1d? | 2005-03-04 | 2005-03-05 | 512 | 12d |  |
| 514 | 6.3.3 | **Script 3** | 5d? | 2005-02-28 | 2005-03-05 |  | 12d |  |
| 515 | 6.3.3.1 | Scenario(text) | 1d? | 2005-02-28 | 2005-03-01 |  | 12d | 0d |
| 516 | 6.3.3.2 | Постановка задач | 1d? | 2005-03-01 | 2005-03-02 | 515 | 12d | 0d |
| 517 | 6.3.3.3 | Implimentation | 1d? | 2005-03-02 | 2005-03-03 | 516 | 12d | 0d |
| 518 | 6.3.3.4 | Dilogs/VO/Icons/Objects/Animations | 1d? | 2005-03-03 | 2005-03-04 | 517 | 12d | 0d |
| 519 | 6.3.3.5 | Настройка | 1d? | 2005-03-04 | 2005-03-05 | 518 | 12d |  |
| 520 | 6.3.4 | **Script 4** | 5d? | 2005-02-28 | 2005-03-05 |  | 12d |  |
| 521 | 6.3.4.1 | Scenario(text) | 1d? | 2005-02-28 | 2005-03-01 |  | 12d | 0d |
| 522 | 6.3.4.2 | Постановка задач | 1d? | 2005-03-01 | 2005-03-02 | 521 | 12d | 0d |
| 523 | 6.3.4.3 | Implimentation | 1d? | 2005-03-02 | 2005-03-03 | 522 | 12d | 0d |
| 524 | 6.3.4.4 | Dilogs/VO/Icons/Objects/Animations | 1d? | 2005-03-03 | 2005-03-04 | 523 | 12d | 0d |
| 525 | 6.3.4.5 | Настройка | 1d? | 2005-03-04 | 2005-03-05 | 524 | 12d |  |

| ID | WBS | Task | Duration | Start | Finish | Predecessors | Total slack | Free slack | Deadline | Resources | Work |
| --- | --- | --- | --- | --- | --- | --- | --- | --- | --- | --- | --- |
| 526 | 6.3.5 | **Script 5** | 5d? | 2005-02-28 | 2005-03-05 |  | 12d |  |  |  |  |
| 527 | 6.3.5.1 | Scenario(text) | 1d? | 2005-02-28 | 2005-03-01 |  | 12d | 0d |  |  |  |
| 528 | 6.3.5.2 | Постановка задач | 1d? | 2005-03-01 | 2005-03-02 | 527 | 12d | 0d |  |  |  |
| 529 | 6.3.5.3 | Implimentation | 1d? | 2005-03-02 | 2005-03-03 | 528 | 12d | 0d |  |  |  |
| 530 | 6.3.5.4 | Dilogs/VO/Icons/Objects/Animations | 1d? | 2005-03-03 | 2005-03-04 | 529 | 12d | 0d |  |  |  |
| 531 | 6.3.5.5 | Настройка | 1d? | 2005-03-04 | 2005-03-05 | 530 | 12d |  |  |  |  |
| 533 | 7 | **13_Dead_City** | 11d? | 2005-03-12 | 2005-03-25 | 455 | 6d |  | 2005-04-29 | Рома, Змей | 176h |
| 534 | 7.1 | **LevelDesign** | 11d? | 2005-03-12 | 2005-03-25 |  | 6d |  | 2005-04-01 | Rainbow | 88h |
| 535 | 7.1.1 | **Stage 1** | 11d? | 2005-03-12 | 2005-03-25 |  | 6d |  |  |  |  |
| 536 | 7.1.1.1 | List of Changes | 2d | 2005-03-12 | 2005-03-15 |  | 6d | 0d |  |  |  |
| 537 | 7.1.1.2 | Changed Geometry | 1d? | 2005-03-15 | 2005-03-16 | 536 | 6d | 0d |  |  |  |
| 538 | 7.1.1.3 | Check List 1 | 1d? | 2005-03-16 | 2005-03-17 | 537 | 6d | 0d |  |  |  |
| 539 | 7.1.1.4 | Check List 2 | 1d? | 2005-03-17 | 2005-03-18 | 538 | 6d | 0d |  |  |  |
| 540 | 7.1.1.5 | Check List 3 | 1d? | 2005-03-18 | 2005-03-19 | 539 | 6d | 0d |  |  |  |
| 541 | 7.1.1.6 | Check List 4 | 1d? | 2005-03-19 | 2005-03-21 | 540 | 6d | 0d |  |  |  |
| 542 | 7.1.1.7 | Render Geometry | 1d? | 2005-03-21 | 2005-03-22 | 541 | 6d | 0d |  |  |  |
| 543 | 7.1.1.8 | Grass | 1d? | 2005-03-22 | 2005-03-23 | 542 | 6d | 0d |  |  |  |
| 544 | 7.1.1.9 | AI Maps | 1d? | 2005-03-23 | 2005-03-24 | 543 | 6d | 0d |  |  |  |
| 545 | 7.1.1.10 | Graphs | 1d? | 2005-03-24 | 2005-03-25 | 544 | 6d |  |  |  |  |
| 547 | 7.2 | **GameDesign** | 3d? | 2005-03-12 | 2005-03-16 |  | 38d |  |  |  |  |
| 548 | 7.2.1 | **Secrets** | 3d? | 2005-03-12 | 2005-03-16 |  | 38d |  |  |  |  |
| 549 | 7.2.1.1 | **Stage 1** | 3d? | 2005-03-12 | 2005-03-16 |  | 38d |  |  |  |  |
| 550 | 7.2.1.1.1 | Design | 1d? | 2005-03-12 | 2005-03-14 |  | 38d | 0d |  |  |  |
| 551 | 7.2.1.1.2 | Implementation | 1d? | 2005-03-14 | 2005-03-15 | 550 | 38d | 0d |  |  |  |
| 552 | 7.2.1.1.3 | Tuning | 1d? | 2005-03-15 | 2005-03-16 | 551 | 38d |  |  |  |  |

| ID | WBS | Task | Duration | Start | Finish | Predecessors | Total slack | Free slack |
| --- | --- | --- | --- | --- | --- | --- | --- | --- |
| 553 | 7.2.2 | **Smartterrains** | 3d? | 2005-03-12 | 2005-03-16 |  | 38d |  |
| 554 | 7.2.2.1 | **Stage 1** | 3d? | 2005-03-12 | 2005-03-16 |  | 38d |  |
| 555 | 7.2.2.1.1 | Design | 1d? | 2005-03-12 | 2005-03-14 |  | 38d | 0d |
| 556 | 7.2.2.1.2 | Implementation | 1d? | 2005-03-14 | 2005-03-15 | 555 | 38d | 0d |
| 557 | 7.2.2.1.3 | Tuning | 1d? | 2005-03-15 | 2005-03-16 | 556 | 38d |  |
| 558 | 7.2.3 | **Monsters/Spawns** | 3d? | 2005-03-12 | 2005-03-16 |  | 38d |  |
| 559 | 7.2.3.1 | **Stage 1** | 3d? | 2005-03-12 | 2005-03-16 |  | 38d |  |
| 560 | 7.2.3.1.1 | Design | 1d? | 2005-03-12 | 2005-03-14 |  | 38d | 0d |
| 561 | 7.2.3.1.2 | Implementation | 1d? | 2005-03-14 | 2005-03-15 | 560 | 38d | 0d |
| 562 | 7.2.3.1.3 | Tuning | 1d? | 2005-03-15 | 2005-03-16 | 561 | 38d |  |
| 563 | 7.2.4 | **Stalkers/Spawns** | 3d? | 2005-03-12 | 2005-03-16 |  | 38d |  |
| 564 | 7.2.4.1 | **Stage 1** | 3d? | 2005-03-12 | 2005-03-16 |  | 38d |  |
| 565 | 7.2.4.1.1 | Design | 1d? | 2005-03-12 | 2005-03-14 |  | 38d | 0d |
| 566 | 7.2.4.1.2 | Implementation | 1d? | 2005-03-14 | 2005-03-15 | 565 | 38d | 0d |
| 567 | 7.2.4.1.3 | Tuning | 1d? | 2005-03-15 | 2005-03-16 | 566 | 38d |  |
| 568 | 7.2.5 | **Anomalies/Spawns** | 3d? | 2005-03-12 | 2005-03-16 |  | 38d |  |
| 569 | 7.2.5.1 | **Stage 1** | 3d? | 2005-03-12 | 2005-03-16 |  | 38d |  |
| 570 | 7.2.5.1.1 | Design | 1d? | 2005-03-12 | 2005-03-14 |  | 38d | 0d |
| 571 | 7.2.5.1.2 | Implementation | 1d? | 2005-03-14 | 2005-03-15 | 570 | 38d | 0d |
| 572 | 7.2.5.1.3 | Tuning | 1d? | 2005-03-15 | 2005-03-16 | 571 | 38d |  |
| 573 | 7.2.6 | **Physicks** | 3d? | 2005-03-12 | 2005-03-16 |  | 38d |  |
| 574 | 7.2.6.1 | **Stage 1** | 3d? | 2005-03-12 | 2005-03-16 |  | 38d |  |
| 575 | 7.2.6.1.1 | Design | 1d? | 2005-03-12 | 2005-03-14 |  | 38d | 0d |
| 576 | 7.2.6.1.2 | Implementation | 1d? | 2005-03-14 | 2005-03-15 | 575 | 38d | 0d |
| 577 | 7.2.6.1.3 | Tuning | 1d? | 2005-03-15 | 2005-03-16 | 576 | 38d |  |

| ID | WBS | Task | Duration | Start | Finish | Predecessors | Total slack | Free slack |
| --- | --- | --- | --- | --- | --- | --- | --- | --- |
| 579 | 7.3 | **Scripts** | 5d? | 2005-03-12 | 2005-03-18 |  | 36d |  |
| 580 | 7.3.1 | **Script 1** | 5d? | 2005-03-12 | 2005-03-18 |  | 36d |  |
| 581 | 7.3.1.1 | Scenario(text) | 1d? | 2005-03-12 | 2005-03-14 |  | 36d | 0d |
| 582 | 7.3.1.2 | Постановка задач | 1d? | 2005-03-14 | 2005-03-15 | 581 | 36d | 0d |
| 583 | 7.3.1.3 | Implimentation | 1d? | 2005-03-15 | 2005-03-16 | 582 | 36d | 0d |
| 584 | 7.3.1.4 | Dilogs/VO/Icons/Objects/Animations | 1d? | 2005-03-16 | 2005-03-17 | 583 | 36d | 0d |
| 585 | 7.3.1.5 | Настройка | 1d? | 2005-03-17 | 2005-03-18 | 584 | 36d |  |
| 586 | 7.3.2 | **Script 2** | 5d? | 2005-03-12 | 2005-03-18 |  | 36d |  |
| 587 | 7.3.2.1 | Scenario(text) | 1d? | 2005-03-12 | 2005-03-14 |  | 36d | 0d |
| 588 | 7.3.2.2 | Постановка задач | 1d? | 2005-03-14 | 2005-03-15 | 587 | 36d | 0d |
| 589 | 7.3.2.3 | Implimentation | 1d? | 2005-03-15 | 2005-03-16 | 588 | 36d | 0d |
| 590 | 7.3.2.4 | Dilogs/VO/Icons/Objects/Animations | 1d? | 2005-03-16 | 2005-03-17 | 589 | 36d | 0d |
| 591 | 7.3.2.5 | Настройка | 1d? | 2005-03-17 | 2005-03-18 | 590 | 36d |  |
| 592 | 7.3.3 | **Script 3** | 5d? | 2005-03-12 | 2005-03-18 |  | 36d |  |
| 593 | 7.3.3.1 | Scenario(text) | 1d? | 2005-03-12 | 2005-03-14 |  | 36d | 0d |
| 594 | 7.3.3.2 | Постановка задач | 1d? | 2005-03-14 | 2005-03-15 | 593 | 36d | 0d |
| 595 | 7.3.3.3 | Implimentation | 1d? | 2005-03-15 | 2005-03-16 | 594 | 36d | 0d |
| 596 | 7.3.3.4 | Dilogs/VO/Icons/Objects/Animations | 1d? | 2005-03-16 | 2005-03-17 | 595 | 36d | 0d |
| 597 | 7.3.3.5 | Настройка | 1d? | 2005-03-17 | 2005-03-18 | 596 | 36d |  |
| 598 | 7.3.4 | **Script 4** | 5d? | 2005-03-12 | 2005-03-18 |  | 36d |  |
| 599 | 7.3.4.1 | Scenario(text) | 1d? | 2005-03-12 | 2005-03-14 |  | 36d | 0d |
| 600 | 7.3.4.2 | Постановка задач | 1d? | 2005-03-14 | 2005-03-15 | 599 | 36d | 0d |
| 601 | 7.3.4.3 | Implimentation | 1d? | 2005-03-15 | 2005-03-16 | 600 | 36d | 0d |
| 602 | 7.3.4.4 | Dilogs/VO/Icons/Objects/Animations | 1d? | 2005-03-16 | 2005-03-17 | 601 | 36d | 0d |
| 603 | 7.3.4.5 | Настройка | 1d? | 2005-03-17 | 2005-03-18 | 602 | 36d |  |

| ID | WBS | Task | Duration | Start | Finish | Predecessors | Total slack | Free slack | Deadline | Resources | Work |
| --- | --- | --- | --- | --- | --- | --- | --- | --- | --- | --- | --- |
| 604 | 7.3.5 | **Script 5** | 5d? | 2005-03-12 | 2005-03-18 |  | 36d |  |  |  |  |
| 605 | 7.3.5.1 | Scenario(text) | 1d? | 2005-03-12 | 2005-03-14 |  | 36d | 0d |  |  |  |
| 606 | 7.3.5.2 | Постановка задач | 1d? | 2005-03-14 | 2005-03-15 | 605 | 36d | 0d |  |  |  |
| 607 | 7.3.5.3 | Implimentation | 1d? | 2005-03-15 | 2005-03-16 | 606 | 36d | 0d |  |  |  |
| 608 | 7.3.5.4 | Dilogs/VO/Icons/Objects/Animations | 1d? | 2005-03-16 | 2005-03-17 | 607 | 36d | 0d |  |  |  |
| 609 | 7.3.5.5 | Настройка | 1d? | 2005-03-17 | 2005-03-18 | 608 | 36d |  |  |  |  |
| 613 | 8 | **06_Dark_Valley_Underground** | 11d? | 2005-01-24 | 2005-02-04 |  | 1.88d | 0d | 2005-03-01 | Джим, Угрюмый | 88h |
| 614 | 8.1 | **LevelDesign** | 11d? | 2005-01-24 | 2005-02-04 |  | 1.88d |  | 2005-02-07 |  |  |
| 615 | 8.1.1 | **Stage 1** | 11d? | 2005-01-24 | 2005-02-04 |  | 1.88d |  |  |  |  |
| 616 | 8.1.1.1 | List of Changes | 2d | 2005-01-24 | 2005-01-25 |  | 1.88d | 0d |  |  |  |
| 617 | 8.1.1.2 | Changed Geometry | 1d? | 2005-01-26 | 2005-01-26 | 616 | 1.88d | 0d |  |  |  |
| 618 | 8.1.1.3 | Check List 1 | 1d? | 2005-01-27 | 2005-01-27 | 617 | 1.88d | 0d |  |  |  |
| 619 | 8.1.1.4 | Check List 2 | 1d? | 2005-01-28 | 2005-01-28 | 618 | 1.88d | 0d |  |  |  |
| 620 | 8.1.1.5 | Check List 3 | 1d? | 2005-01-29 | 2005-01-29 | 619 | 1.88d | 0d |  |  |  |
| 621 | 8.1.1.6 | Check List 4 | 1d? | 2005-01-31 | 2005-01-31 | 620 | 1.88d | 0d |  |  |  |
| 622 | 8.1.1.7 | Render Geometry | 1d? | 2005-02-01 | 2005-02-01 | 621 | 1.88d | 0d |  |  |  |
| 623 | 8.1.1.8 | Grass | 1d? | 2005-02-02 | 2005-02-02 | 622 | 1.88d | 0d |  |  |  |
| 624 | 8.1.1.9 | AI Maps | 1d? | 2005-02-03 | 2005-02-03 | 623 | 1.88d | 0d |  |  |  |
| 625 | 8.1.1.10 | Graphs | 1d? | 2005-02-04 | 2005-02-04 | 624 | 1.88d |  |  |  |  |
| 627 | 8.2 | **GameDesign** | 3d? | 2005-01-24 | 2005-01-26 |  | 17.88d |  |  |  |  |
| 628 | 8.2.1 | **Secrets** | 3d? | 2005-01-24 | 2005-01-26 |  | 17.88d |  |  |  |  |
| 629 | 8.2.1.1 | **Stage 1** | 3d? | 2005-01-24 | 2005-01-26 |  | 17.88d |  |  |  |  |
| 630 | 8.2.1.1.1 | Design | 1d? | 2005-01-24 | 2005-01-24 |  | 17.88d | 0d |  |  |  |
| 631 | 8.2.1.1.2 | Implementation | 1d? | 2005-01-25 | 2005-01-25 | 630 | 17.88d | 0d |  |  |  |
| 632 | 8.2.1.1.3 | Tuning | 1d? | 2005-01-26 | 2005-01-26 | 631 | 17.88d |  |  |  |  |

| ID | WBS | Task | Duration | Start | Finish | Predecessors | Total slack | Free slack |
| --- | --- | --- | --- | --- | --- | --- | --- | --- |
| 633 | 8.2.2 | **Smartterrains** | 3d? | 2005-01-24 | 2005-01-26 |  | 17.88d |  |
| 634 | 8.2.2.1 | **Stage 1** | 3d? | 2005-01-24 | 2005-01-26 |  | 17.88d |  |
| 635 | 8.2.2.1.1 | Design | 1d? | 2005-01-24 | 2005-01-24 |  | 17.88d | 0d |
| 636 | 8.2.2.1.2 | Implementation | 1d? | 2005-01-25 | 2005-01-25 | 635 | 17.88d | 0d |
| 637 | 8.2.2.1.3 | Tuning | 1d? | 2005-01-26 | 2005-01-26 | 636 | 17.88d |  |
| 638 | 8.2.3 | **Monsters/Spawns** | 3d? | 2005-01-24 | 2005-01-26 |  | 17.88d |  |
| 639 | 8.2.3.1 | **Stage 1** | 3d? | 2005-01-24 | 2005-01-26 |  | 17.88d |  |
| 640 | 8.2.3.1.1 | Design | 1d? | 2005-01-24 | 2005-01-24 |  | 17.88d | 0d |
| 641 | 8.2.3.1.2 | Implementation | 1d? | 2005-01-25 | 2005-01-25 | 640 | 17.88d | 0d |
| 642 | 8.2.3.1.3 | Tuning | 1d? | 2005-01-26 | 2005-01-26 | 641 | 17.88d |  |
| 643 | 8.2.4 | **Stalkers/Spawns** | 3d? | 2005-01-24 | 2005-01-26 |  | 17.88d |  |
| 644 | 8.2.4.1 | **Stage 1** | 3d? | 2005-01-24 | 2005-01-26 |  | 17.88d |  |
| 645 | 8.2.4.1.1 | Design | 1d? | 2005-01-24 | 2005-01-24 |  | 17.88d | 0d |
| 646 | 8.2.4.1.2 | Implementation | 1d? | 2005-01-25 | 2005-01-25 | 645 | 17.88d | 0d |
| 647 | 8.2.4.1.3 | Tuning | 1d? | 2005-01-26 | 2005-01-26 | 646 | 17.88d |  |
| 648 | 8.2.5 | **Anomalies/Spawns** | 3d? | 2005-01-24 | 2005-01-26 |  | 17.88d |  |
| 649 | 8.2.5.1 | **Stage 1** | 3d? | 2005-01-24 | 2005-01-26 |  | 17.88d |  |
| 650 | 8.2.5.1.1 | Design | 1d? | 2005-01-24 | 2005-01-24 |  | 17.88d | 0d |
| 651 | 8.2.5.1.2 | Implementation | 1d? | 2005-01-25 | 2005-01-25 | 650 | 17.88d | 0d |
| 652 | 8.2.5.1.3 | Tuning | 1d? | 2005-01-26 | 2005-01-26 | 651 | 17.88d |  |
| 653 | 8.2.6 | **Physicks** | 3d? | 2005-01-24 | 2005-01-26 |  | 17.88d |  |
| 654 | 8.2.6.1 | **Stage 1** | 3d? | 2005-01-24 | 2005-01-26 |  | 17.88d |  |
| 655 | 8.2.6.1.1 | Design | 1d? | 2005-01-24 | 2005-01-24 |  | 17.88d | 0d |
| 656 | 8.2.6.1.2 | Implementation | 1d? | 2005-01-25 | 2005-01-25 | 655 | 17.88d | 0d |
| 657 | 8.2.6.1.3 | Tuning | 1d? | 2005-01-26 | 2005-01-26 | 656 | 17.88d |  |

| ID | WBS | Task | Duration | Start | Finish | Predecessors | Total slack | Free slack |
| --- | --- | --- | --- | --- | --- | --- | --- | --- |
| 659 | 8.3 | **Scripts** | 5d? | 2005-01-24 | 2005-01-28 |  | 15.88d |  |
| 660 | 8.3.1 | **Script 1** | 5d? | 2005-01-24 | 2005-01-28 |  | 15.88d |  |
| 661 | 8.3.1.1 | Scenario(text) | 1d? | 2005-01-24 | 2005-01-24 |  | 15.88d | 0d |
| 662 | 8.3.1.2 | Постановка задач | 1d? | 2005-01-25 | 2005-01-25 | 661 | 15.88d | 0d |
| 663 | 8.3.1.3 | Implimentation | 1d? | 2005-01-26 | 2005-01-26 | 662 | 15.88d | 0d |
| 664 | 8.3.1.4 | Dilogs/VO/Icons/Objects/Animations | 1d? | 2005-01-27 | 2005-01-27 | 663 | 15.88d | 0d |
| 665 | 8.3.1.5 | Настройка | 1d? | 2005-01-28 | 2005-01-28 | 664 | 15.88d |  |
| 666 | 8.3.2 | **Script 2** | 5d? | 2005-01-24 | 2005-01-28 |  | 15.88d |  |
| 667 | 8.3.2.1 | Scenario(text) | 1d? | 2005-01-24 | 2005-01-24 |  | 15.88d | 0d |
| 668 | 8.3.2.2 | Постановка задач | 1d? | 2005-01-25 | 2005-01-25 | 667 | 15.88d | 0d |
| 669 | 8.3.2.3 | Implimentation | 1d? | 2005-01-26 | 2005-01-26 | 668 | 15.88d | 0d |
| 670 | 8.3.2.4 | Dilogs/VO/Icons/Objects/Animations | 1d? | 2005-01-27 | 2005-01-27 | 669 | 15.88d | 0d |
| 671 | 8.3.2.5 | Настройка | 1d? | 2005-01-28 | 2005-01-28 | 670 | 15.88d |  |
| 672 | 8.3.3 | **Script 3** | 5d? | 2005-01-24 | 2005-01-28 |  | 15.88d |  |
| 673 | 8.3.3.1 | Scenario(text) | 1d? | 2005-01-24 | 2005-01-24 |  | 15.88d | 0d |
| 674 | 8.3.3.2 | Постановка задач | 1d? | 2005-01-25 | 2005-01-25 | 673 | 15.88d | 0d |
| 675 | 8.3.3.3 | Implimentation | 1d? | 2005-01-26 | 2005-01-26 | 674 | 15.88d | 0d |
| 676 | 8.3.3.4 | Dilogs/VO/Icons/Objects/Animations | 1d? | 2005-01-27 | 2005-01-27 | 675 | 15.88d | 0d |
| 677 | 8.3.3.5 | Настройка | 1d? | 2005-01-28 | 2005-01-28 | 676 | 15.88d |  |
| 678 | 8.3.4 | **Script 4** | 5d? | 2005-01-24 | 2005-01-28 |  | 15.88d |  |
| 679 | 8.3.4.1 | Scenario(text) | 1d? | 2005-01-24 | 2005-01-24 |  | 15.88d | 0d |
| 680 | 8.3.4.2 | Постановка задач | 1d? | 2005-01-25 | 2005-01-25 | 679 | 15.88d | 0d |
| 681 | 8.3.4.3 | Implimentation | 1d? | 2005-01-26 | 2005-01-26 | 680 | 15.88d | 0d |
| 682 | 8.3.4.4 | Dilogs/VO/Icons/Objects/Animations | 1d? | 2005-01-27 | 2005-01-27 | 681 | 15.88d | 0d |
| 683 | 8.3.4.5 | Настройка | 1d? | 2005-01-28 | 2005-01-28 | 682 | 15.88d |  |

| ID | WBS | Task | Duration | Start | Finish | Predecessors | Total slack | Free slack | Deadline | Resources | Work |
| --- | --- | --- | --- | --- | --- | --- | --- | --- | --- | --- | --- |
| 684 | 8.3.5 | **Script 5** | 5d? | 2005-01-24 | 2005-01-28 |  | 15.88d |  |  |  |  |
| 685 | 8.3.5.1 | Scenario(text) | 1d? | 2005-01-24 | 2005-01-24 |  | 15.88d | 0d |  |  |  |
| 686 | 8.3.5.2 | Постановка задач | 1d? | 2005-01-25 | 2005-01-25 | 685 | 15.88d | 0d |  |  |  |
| 687 | 8.3.5.3 | Implimentation | 1d? | 2005-01-26 | 2005-01-26 | 686 | 15.88d | 0d |  |  |  |
| 688 | 8.3.5.4 | Dilogs/VO/Icons/Objects/Animations | 1d? | 2005-01-27 | 2005-01-27 | 687 | 15.88d | 0d |  |  |  |
| 689 | 8.3.5.5 | Настройка | 1d? | 2005-01-28 | 2005-01-28 | 688 | 15.88d |  |  |  |  |
| 691 | 9 | **16_Radar_Antena_Control_Undergaround** | 11d? | 2005-02-05 | 2005-02-17 | 613 | 9.88d | 0d | 2005-04-01 | Джим, Угрюмый | 88h |
| 692 | 9.1 | **LevelDesign** | 11d? | 2005-02-05 | 2005-02-17 |  | 9.88d |  | 2005-03-01 |  |  |
| 693 | 9.1.1 | **Stage 1** | 11d? | 2005-02-05 | 2005-02-17 |  | 9.88d |  |  |  |  |
| 694 | 9.1.1.1 | List of Changes | 2d | 2005-02-05 | 2005-02-07 |  | 9.88d | 0d |  |  |  |
| 695 | 9.1.1.2 | Changed Geometry | 1d? | 2005-02-08 | 2005-02-08 | 694 | 9.88d | 0d |  |  |  |
| 696 | 9.1.1.3 | Check List 1 | 1d? | 2005-02-09 | 2005-02-09 | 695 | 9.88d | 0d |  |  |  |
| 697 | 9.1.1.4 | Check List 2 | 1d? | 2005-02-10 | 2005-02-10 | 696 | 9.88d | 0d |  |  |  |
| 698 | 9.1.1.5 | Check List 3 | 1d? | 2005-02-11 | 2005-02-11 | 697 | 9.88d | 0d |  |  |  |
| 699 | 9.1.1.6 | Check List 4 | 1d? | 2005-02-12 | 2005-02-12 | 698 | 9.88d | 0d |  |  |  |
| 700 | 9.1.1.7 | Render Geometry | 1d? | 2005-02-14 | 2005-02-14 | 699 | 9.88d | 0d |  |  |  |
| 701 | 9.1.1.8 | Grass | 1d? | 2005-02-15 | 2005-02-15 | 700 | 9.88d | 0d |  |  |  |
| 702 | 9.1.1.9 | AI Maps | 1d? | 2005-02-16 | 2005-02-16 | 701 | 9.88d | 0d |  |  |  |
| 703 | 9.1.1.10 | Graphs | 1d? | 2005-02-17 | 2005-02-17 | 702 | 9.88d |  |  |  |  |
| 705 | 9.2 | **GameDesign** | 3d? | 2005-02-05 | 2005-02-08 |  | 33.88d |  |  |  |  |
| 706 | 9.2.1 | **Secrets** | 3d? | 2005-02-05 | 2005-02-08 |  | 33.88d |  |  |  |  |
| 707 | 9.2.1.1 | **Stage 1** | 3d? | 2005-02-05 | 2005-02-08 |  | 33.88d |  |  |  |  |
| 708 | 9.2.1.1.1 | Design | 1d? | 2005-02-05 | 2005-02-05 |  | 33.88d | 0d |  |  |  |
| 709 | 9.2.1.1.2 | Implementation | 1d? | 2005-02-07 | 2005-02-07 | 708 | 33.88d | 0d |  |  |  |
| 710 | 9.2.1.1.3 | Tuning | 1d? | 2005-02-08 | 2005-02-08 | 709 | 33.88d |  |  |  |  |

| ID | WBS | Task | Duration | Start | Finish | Predecessors | Total slack | Free slack |
| --- | --- | --- | --- | --- | --- | --- | --- | --- |
| 711 | 9.2.2 | **Smartterrains** | 3d? | 2005-02-05 | 2005-02-08 |  | 33.88d |  |
| 712 | 9.2.2.1 | **Stage 1** | 3d? | 2005-02-05 | 2005-02-08 |  | 33.88d |  |
| 713 | 9.2.2.1.1 | Design | 1d? | 2005-02-05 | 2005-02-05 |  | 33.88d | 0d |
| 714 | 9.2.2.1.2 | Implementation | 1d? | 2005-02-07 | 2005-02-07 | 713 | 33.88d | 0d |
| 715 | 9.2.2.1.3 | Tuning | 1d? | 2005-02-08 | 2005-02-08 | 714 | 33.88d |  |
| 716 | 9.2.3 | **Monsters/Spawns** | 3d? | 2005-02-05 | 2005-02-08 |  | 33.88d |  |
| 717 | 9.2.3.1 | **Stage 1** | 3d? | 2005-02-05 | 2005-02-08 |  | 33.88d |  |
| 718 | 9.2.3.1.1 | Design | 1d? | 2005-02-05 | 2005-02-05 |  | 33.88d | 0d |
| 719 | 9.2.3.1.2 | Implementation | 1d? | 2005-02-07 | 2005-02-07 | 718 | 33.88d | 0d |
| 720 | 9.2.3.1.3 | Tuning | 1d? | 2005-02-08 | 2005-02-08 | 719 | 33.88d |  |
| 721 | 9.2.4 | **Stalkers/Spawns** | 3d? | 2005-02-05 | 2005-02-08 |  | 33.88d |  |
| 722 | 9.2.4.1 | **Stage 1** | 3d? | 2005-02-05 | 2005-02-08 |  | 33.88d |  |
| 723 | 9.2.4.1.1 | Design | 1d? | 2005-02-05 | 2005-02-05 |  | 33.88d | 0d |
| 724 | 9.2.4.1.2 | Implementation | 1d? | 2005-02-07 | 2005-02-07 | 723 | 33.88d | 0d |
| 725 | 9.2.4.1.3 | Tuning | 1d? | 2005-02-08 | 2005-02-08 | 724 | 33.88d |  |
| 726 | 9.2.5 | **Anomalies/Spawns** | 3d? | 2005-02-05 | 2005-02-08 |  | 33.88d |  |
| 727 | 9.2.5.1 | **Stage 1** | 3d? | 2005-02-05 | 2005-02-08 |  | 33.88d |  |
| 728 | 9.2.5.1.1 | Design | 1d? | 2005-02-05 | 2005-02-05 |  | 33.88d | 0d |
| 729 | 9.2.5.1.2 | Implementation | 1d? | 2005-02-07 | 2005-02-07 | 728 | 33.88d | 0d |
| 730 | 9.2.5.1.3 | Tuning | 1d? | 2005-02-08 | 2005-02-08 | 729 | 33.88d |  |
| 731 | 9.2.6 | **Physicks** | 3d? | 2005-02-05 | 2005-02-08 |  | 33.88d |  |
| 732 | 9.2.6.1 | **Stage 1** | 3d? | 2005-02-05 | 2005-02-08 |  | 33.88d |  |
| 733 | 9.2.6.1.1 | Design | 1d? | 2005-02-05 | 2005-02-05 |  | 33.88d | 0d |
| 734 | 9.2.6.1.2 | Implementation | 1d? | 2005-02-07 | 2005-02-07 | 733 | 33.88d | 0d |
| 735 | 9.2.6.1.3 | Tuning | 1d? | 2005-02-08 | 2005-02-08 | 734 | 33.88d |  |

| ID | WBS | Task | Duration | Start | Finish | Predecessors | Total slack | Free slack |
| --- | --- | --- | --- | --- | --- | --- | --- | --- |
| 737 | 9.3 | **Scripts** | 5d? | 2005-02-05 | 2005-02-10 |  | 31.88d |  |
| 738 | 9.3.1 | **Script 1** | 5d? | 2005-02-05 | 2005-02-10 |  | 31.88d |  |
| 739 | 9.3.1.1 | Scenario(text) | 1d? | 2005-02-05 | 2005-02-05 |  | 31.88d | 0d |
| 740 | 9.3.1.2 | Постановка задач | 1d? | 2005-02-07 | 2005-02-07 | 739 | 31.88d | 0d |
| 741 | 9.3.1.3 | Implimentation | 1d? | 2005-02-08 | 2005-02-08 | 740 | 31.88d | 0d |
| 742 | 9.3.1.4 | Dilogs/VO/Icons/Objects/Animations | 1d? | 2005-02-09 | 2005-02-09 | 741 | 31.88d | 0d |
| 743 | 9.3.1.5 | Настройка | 1d? | 2005-02-10 | 2005-02-10 | 742 | 31.88d |  |
| 744 | 9.3.2 | **Script 2** | 5d? | 2005-02-05 | 2005-02-10 |  | 31.88d |  |
| 745 | 9.3.2.1 | Scenario(text) | 1d? | 2005-02-05 | 2005-02-05 |  | 31.88d | 0d |
| 746 | 9.3.2.2 | Постановка задач | 1d? | 2005-02-07 | 2005-02-07 | 745 | 31.88d | 0d |
| 747 | 9.3.2.3 | Implimentation | 1d? | 2005-02-08 | 2005-02-08 | 746 | 31.88d | 0d |
| 748 | 9.3.2.4 | Dilogs/VO/Icons/Objects/Animations | 1d? | 2005-02-09 | 2005-02-09 | 747 | 31.88d | 0d |
| 749 | 9.3.2.5 | Настройка | 1d? | 2005-02-10 | 2005-02-10 | 748 | 31.88d |  |
| 750 | 9.3.3 | **Script 3** | 5d? | 2005-02-05 | 2005-02-10 |  | 31.88d |  |
| 751 | 9.3.3.1 | Scenario(text) | 1d? | 2005-02-05 | 2005-02-05 |  | 31.88d | 0d |
| 752 | 9.3.3.2 | Постановка задач | 1d? | 2005-02-07 | 2005-02-07 | 751 | 31.88d | 0d |
| 753 | 9.3.3.3 | Implimentation | 1d? | 2005-02-08 | 2005-02-08 | 752 | 31.88d | 0d |
| 754 | 9.3.3.4 | Dilogs/VO/Icons/Objects/Animations | 1d? | 2005-02-09 | 2005-02-09 | 753 | 31.88d | 0d |
| 755 | 9.3.3.5 | Настройка | 1d? | 2005-02-10 | 2005-02-10 | 754 | 31.88d |  |
| 756 | 9.3.4 | **Script 4** | 5d? | 2005-02-05 | 2005-02-10 |  | 31.88d |  |
| 757 | 9.3.4.1 | Scenario(text) | 1d? | 2005-02-05 | 2005-02-05 |  | 31.88d | 0d |
| 758 | 9.3.4.2 | Постановка задач | 1d? | 2005-02-07 | 2005-02-07 | 757 | 31.88d | 0d |
| 759 | 9.3.4.3 | Implimentation | 1d? | 2005-02-08 | 2005-02-08 | 758 | 31.88d | 0d |
| 760 | 9.3.4.4 | Dilogs/VO/Icons/Objects/Animations | 1d? | 2005-02-09 | 2005-02-09 | 759 | 31.88d | 0d |
| 761 | 9.3.4.5 | Настройка | 1d? | 2005-02-10 | 2005-02-10 | 760 | 31.88d |  |

| ID | WBS | Task | Duration | Start | Finish | Predecessors | Total slack | Free slack | Deadline | Resources | Work |
| --- | --- | --- | --- | --- | --- | --- | --- | --- | --- | --- | --- |
| 762 | 9.3.5 | **Script 5** | 5d? | 2005-02-05 | 2005-02-10 |  | 31.88d |  |  |  |  |
| 763 | 9.3.5.1 | Scenario(text) | 1d? | 2005-02-05 | 2005-02-05 |  | 31.88d | 0d |  |  |  |
| 764 | 9.3.5.2 | Постановка задач | 1d? | 2005-02-07 | 2005-02-07 | 763 | 31.88d | 0d |  |  |  |
| 765 | 9.3.5.3 | Implimentation | 1d? | 2005-02-08 | 2005-02-08 | 764 | 31.88d | 0d |  |  |  |
| 766 | 9.3.5.4 | Dilogs/VO/Icons/Objects/Animations | 1d? | 2005-02-09 | 2005-02-09 | 765 | 31.88d | 0d |  |  |  |
| 767 | 9.3.5.5 | Настройка | 1d? | 2005-02-10 | 2005-02-10 | 766 | 31.88d |  |  |  |  |
| 769 | 10 | **17_Radar_Monolith_Control_Underground** | 11d? | 2005-02-18 | 2005-03-02 | 691 | 25.88d |  | 2005-04-29 | Джим, Угрюмый | 88h |
| 770 | 10.1 | **LevelDesign** | 11d? | 2005-02-18 | 2005-03-02 |  | 25.88d |  | 2005-04-01 |  |  |
| 771 | 10.1.1 | **Stage 1** | 11d? | 2005-02-18 | 2005-03-02 |  | 25.88d |  |  |  |  |
| 772 | 10.1.1.1 | List of Changes | 2d | 2005-02-18 | 2005-02-19 |  | 25.88d | 0d |  |  |  |
| 773 | 10.1.1.2 | Changed Geometry | 1d? | 2005-02-21 | 2005-02-21 | 772 | 25.88d | 0d |  |  |  |
| 774 | 10.1.1.3 | Check List 1 | 1d? | 2005-02-22 | 2005-02-22 | 773 | 25.88d | 0d |  |  |  |
| 775 | 10.1.1.4 | Check List 2 | 1d? | 2005-02-23 | 2005-02-23 | 774 | 25.88d | 0d |  |  |  |
| 776 | 10.1.1.5 | Check List 3 | 1d? | 2005-02-24 | 2005-02-24 | 775 | 25.88d | 0d |  |  |  |
| 777 | 10.1.1.6 | Check List 4 | 1d? | 2005-02-25 | 2005-02-25 | 776 | 25.88d | 0d |  |  |  |
| 778 | 10.1.1.7 | Render Geometry | 1d? | 2005-02-26 | 2005-02-26 | 777 | 25.88d | 0d |  |  |  |
| 779 | 10.1.1.8 | Grass | 1d? | 2005-02-28 | 2005-02-28 | 778 | 25.88d | 0d |  |  |  |
| 780 | 10.1.1.9 | AI Maps | 1d? | 2005-03-01 | 2005-03-01 | 779 | 25.88d | 0d |  |  |  |
| 781 | 10.1.1.10 | Graphs | 1d? | 2005-03-02 | 2005-03-02 | 780 | 25.88d |  |  |  |  |
| 783 | 10.2 | **GameDesign** | 3d? | 2005-02-18 | 2005-02-21 |  | 57.88d |  |  |  |  |
| 784 | 10.2.1 | **Secrets** | 3d? | 2005-02-18 | 2005-02-21 |  | 57.88d |  |  |  |  |
| 785 | 10.2.1.1 | **Stage 1** | 3d? | 2005-02-18 | 2005-02-21 |  | 57.88d |  |  |  |  |
| 786 | 10.2.1.1.1 | Design | 1d? | 2005-02-18 | 2005-02-18 |  | 57.88d | 0d |  |  |  |
| 787 | 10.2.1.1.2 | Implementation | 1d? | 2005-02-19 | 2005-02-19 | 786 | 57.88d | 0d |  |  |  |
| 788 | 10.2.1.1.3 | Tuning | 1d? | 2005-02-21 | 2005-02-21 | 787 | 57.88d |  |  |  |  |

| ID | WBS | Task | Duration | Start | Finish | Predecessors | Total slack | Free slack |
| --- | --- | --- | --- | --- | --- | --- | --- | --- |
| 789 | 10.2.2 | **Smartterrains** | 3d? | 2005-02-18 | 2005-02-21 |  | 57.88d |  |
| 790 | 10.2.2.1 | **Stage 1** | 3d? | 2005-02-18 | 2005-02-21 |  | 57.88d |  |
| 791 | 10.2.2.1.1 | Design | 1d? | 2005-02-18 | 2005-02-18 |  | 57.88d | 0d |
| 792 | 10.2.2.1.2 | Implementation | 1d? | 2005-02-19 | 2005-02-19 | 791 | 57.88d | 0d |
| 793 | 10.2.2.1.3 | Tuning | 1d? | 2005-02-21 | 2005-02-21 | 792 | 57.88d |  |
| 794 | 10.2.3 | **Monsters/Spawns** | 3d? | 2005-02-18 | 2005-02-21 |  | 57.88d |  |
| 795 | 10.2.3.1 | **Stage 1** | 3d? | 2005-02-18 | 2005-02-21 |  | 57.88d |  |
| 796 | 10.2.3.1.1 | Design | 1d? | 2005-02-18 | 2005-02-18 |  | 57.88d | 0d |
| 797 | 10.2.3.1.2 | Implementation | 1d? | 2005-02-19 | 2005-02-19 | 796 | 57.88d | 0d |
| 798 | 10.2.3.1.3 | Tuning | 1d? | 2005-02-21 | 2005-02-21 | 797 | 57.88d |  |
| 799 | 10.2.4 | **Stalkers/Spawns** | 3d? | 2005-02-18 | 2005-02-21 |  | 57.88d |  |
| 800 | 10.2.4.1 | **Stage 1** | 3d? | 2005-02-18 | 2005-02-21 |  | 57.88d |  |
| 801 | 10.2.4.1.1 | Design | 1d? | 2005-02-18 | 2005-02-18 |  | 57.88d | 0d |
| 802 | 10.2.4.1.2 | Implementation | 1d? | 2005-02-19 | 2005-02-19 | 801 | 57.88d | 0d |
| 803 | 10.2.4.1.3 | Tuning | 1d? | 2005-02-21 | 2005-02-21 | 802 | 57.88d |  |
| 804 | 10.2.5 | **Anomalies/Spawns** | 3d? | 2005-02-18 | 2005-02-21 |  | 57.88d |  |
| 805 | 10.2.5.1 | **Stage 1** | 3d? | 2005-02-18 | 2005-02-21 |  | 57.88d |  |
| 806 | 10.2.5.1.1 | Design | 1d? | 2005-02-18 | 2005-02-18 |  | 57.88d | 0d |
| 807 | 10.2.5.1.2 | Implementation | 1d? | 2005-02-19 | 2005-02-19 | 806 | 57.88d | 0d |
| 808 | 10.2.5.1.3 | Tuning | 1d? | 2005-02-21 | 2005-02-21 | 807 | 57.88d |  |
| 809 | 10.2.6 | **Physicks** | 3d? | 2005-02-18 | 2005-02-21 |  | 57.88d |  |
| 810 | 10.2.6.1 | **Stage 1** | 3d? | 2005-02-18 | 2005-02-21 |  | 57.88d |  |
| 811 | 10.2.6.1.1 | Design | 1d? | 2005-02-18 | 2005-02-18 |  | 57.88d | 0d |
| 812 | 10.2.6.1.2 | Implementation | 1d? | 2005-02-19 | 2005-02-19 | 811 | 57.88d | 0d |
| 813 | 10.2.6.1.3 | Tuning | 1d? | 2005-02-21 | 2005-02-21 | 812 | 57.88d |  |

| ID | WBS | Task | Duration | Start | Finish | Predecessors | Total slack | Free slack |
| --- | --- | --- | --- | --- | --- | --- | --- | --- |
| 815 | 10.3 | **Scripts** | 5d? | 2005-02-18 | 2005-02-23 |  | 55.88d |  |
| 816 | 10.3.1 | **Script 1** | 5d? | 2005-02-18 | 2005-02-23 |  | 55.88d |  |
| 817 | 10.3.1.1 | Scenario(text) | 1d? | 2005-02-18 | 2005-02-18 |  | 55.88d | 0d |
| 818 | 10.3.1.2 | Постановка задач | 1d? | 2005-02-19 | 2005-02-19 | 817 | 55.88d | 0d |
| 819 | 10.3.1.3 | Implimentation | 1d? | 2005-02-21 | 2005-02-21 | 818 | 55.88d | 0d |
| 820 | 10.3.1.4 | Dilogs/VO/Icons/Objects/Animations | 1d? | 2005-02-22 | 2005-02-22 | 819 | 55.88d | 0d |
| 821 | 10.3.1.5 | Настройка | 1d? | 2005-02-23 | 2005-02-23 | 820 | 55.88d |  |
| 822 | 10.3.2 | **Script 2** | 5d? | 2005-02-18 | 2005-02-23 |  | 55.88d |  |
| 823 | 10.3.2.1 | Scenario(text) | 1d? | 2005-02-18 | 2005-02-18 |  | 55.88d | 0d |
| 824 | 10.3.2.2 | Постановка задач | 1d? | 2005-02-19 | 2005-02-19 | 823 | 55.88d | 0d |
| 825 | 10.3.2.3 | Implimentation | 1d? | 2005-02-21 | 2005-02-21 | 824 | 55.88d | 0d |
| 826 | 10.3.2.4 | Dilogs/VO/Icons/Objects/Animations | 1d? | 2005-02-22 | 2005-02-22 | 825 | 55.88d | 0d |
| 827 | 10.3.2.5 | Настройка | 1d? | 2005-02-23 | 2005-02-23 | 826 | 55.88d |  |
| 828 | 10.3.3 | **Script 3** | 5d? | 2005-02-18 | 2005-02-23 |  | 55.88d |  |
| 829 | 10.3.3.1 | Scenario(text) | 1d? | 2005-02-18 | 2005-02-18 |  | 55.88d | 0d |
| 830 | 10.3.3.2 | Постановка задач | 1d? | 2005-02-19 | 2005-02-19 | 829 | 55.88d | 0d |
| 831 | 10.3.3.3 | Implimentation | 1d? | 2005-02-21 | 2005-02-21 | 830 | 55.88d | 0d |
| 832 | 10.3.3.4 | Dilogs/VO/Icons/Objects/Animations | 1d? | 2005-02-22 | 2005-02-22 | 831 | 55.88d | 0d |
| 833 | 10.3.3.5 | Настройка | 1d? | 2005-02-23 | 2005-02-23 | 832 | 55.88d |  |
| 834 | 10.3.4 | **Script 4** | 5d? | 2005-02-18 | 2005-02-23 |  | 55.88d |  |
| 835 | 10.3.4.1 | Scenario(text) | 1d? | 2005-02-18 | 2005-02-18 |  | 55.88d | 0d |
| 836 | 10.3.4.2 | Постановка задач | 1d? | 2005-02-19 | 2005-02-19 | 835 | 55.88d | 0d |
| 837 | 10.3.4.3 | Implimentation | 1d? | 2005-02-21 | 2005-02-21 | 836 | 55.88d | 0d |
| 838 | 10.3.4.4 | Dilogs/VO/Icons/Objects/Animations | 1d? | 2005-02-22 | 2005-02-22 | 837 | 55.88d | 0d |
| 839 | 10.3.4.5 | Настройка | 1d? | 2005-02-23 | 2005-02-23 | 838 | 55.88d |  |

| ID | WBS | Task | Duration | Start | Finish | Predecessors | Total slack | Free slack | Deadline | Resources | Work |
| --- | --- | --- | --- | --- | --- | --- | --- | --- | --- | --- | --- |
| 840 | 10.3.5 | **Script 5** | 5d? | 2005-02-18 | 2005-02-23 |  | 55.88d |  |  |  |  |
| 841 | 10.3.5.1 | Scenario(text) | 1d? | 2005-02-18 | 2005-02-18 |  | 55.88d | 0d |  |  |  |
| 842 | 10.3.5.2 | Постановка задач | 1d? | 2005-02-19 | 2005-02-19 | 841 | 55.88d | 0d |  |  |  |
| 843 | 10.3.5.3 | Implimentation | 1d? | 2005-02-21 | 2005-02-21 | 842 | 55.88d | 0d |  |  |  |
| 844 | 10.3.5.4 | Dilogs/VO/Icons/Objects/Animations | 1d? | 2005-02-22 | 2005-02-22 | 843 | 55.88d | 0d |  |  |  |
| 845 | 10.3.5.5 | Настройка | 1d? | 2005-02-23 | 2005-02-23 | 844 | 55.88d |  |  |  |  |
| 851 | 11 | **08_Rostok_Bar** | 11d? | 2005-01-24 | 2005-02-04 |  | -20.12d | 0d | 2005-02-07 | Коан, Руслан | 88h |
| 852 | 11.1 | **LevelDesign** | 11d? | 2005-01-24 | 2005-02-04 |  | -20.12d | 0d | 2005-02-01 |  |  |
| 853 | 11.1.1 | **Stage 1** | 11d? | 2005-01-24 | 2005-02-04 |  | -20.12d | 0d |  |  |  |
| 854 | 11.1.1.1 | List of Changes | 2d | 2005-01-24 | 2005-01-25 |  | -20.12d | 0d |  |  |  |
| 855 | 11.1.1.2 | Changed Geometry | 1d? | 2005-01-26 | 2005-01-26 | 854 | -20.12d | 0d |  |  |  |
| 856 | 11.1.1.3 | Check List 1 | 1d? | 2005-01-27 | 2005-01-27 | 855 | -20.12d | 0d |  |  |  |
| 857 | 11.1.1.4 | Check List 2 | 1d? | 2005-01-28 | 2005-01-28 | 856 | -20.12d | 0d |  |  |  |
| 858 | 11.1.1.5 | Check List 3 | 1d? | 2005-01-29 | 2005-01-29 | 857 | -20.12d | 0d |  |  |  |
| 859 | 11.1.1.6 | Check List 4 | 1d? | 2005-01-31 | 2005-01-31 | 858 | -20.12d | 0d |  |  |  |
| 860 | 11.1.1.7 | Render Geometry | 1d? | 2005-02-01 | 2005-02-01 | 859 | -20.12d | 0d |  |  |  |
| 861 | 11.1.1.8 | Grass | 1d? | 2005-02-02 | 2005-02-02 | 860 | -20.12d | 0d |  |  |  |
| 862 | 11.1.1.9 | AI Maps | 1d? | 2005-02-03 | 2005-02-03 | 861 | -20.12d | 0d |  |  |  |
| 863 | 11.1.1.10 | Graphs | 1d? | 2005-02-04 | 2005-02-04 | 862 | -20.12d | 0d |  |  |  |
| 865 | 11.2 | **GameDesign** | 3d? | 2005-01-24 | 2005-01-26 |  | -12.12d | 0d |  |  |  |
| 866 | 11.2.1 | **Secrets** | 3d? | 2005-01-24 | 2005-01-26 |  | -12.12d | 0d |  |  |  |
| 867 | 11.2.1.1 | **Stage 1** | 3d? | 2005-01-24 | 2005-01-26 |  | -12.12d | 0d |  |  |  |
| 868 | 11.2.1.1.1 | Design | 1d? | 2005-01-24 | 2005-01-24 |  | -12.12d | 0d |  |  |  |
| 869 | 11.2.1.1.2 | Implementation | 1d? | 2005-01-25 | 2005-01-25 | 868 | -12.12d | 0d |  |  |  |
| 870 | 11.2.1.1.3 | Tuning | 1d? | 2005-01-26 | 2005-01-26 | 869 | -12.12d | 0d |  |  |  |

| ID | WBS | Task | Duration | Start | Finish | Predecessors | Total slack | Free slack |
| --- | --- | --- | --- | --- | --- | --- | --- | --- |
| 871 | 11.2.2 | **Smartterrains** | 3d? | 2005-01-24 | 2005-01-26 |  | -12.12d | 0d |
| 872 | 11.2.2.1 | **Stage 1** | 3d? | 2005-01-24 | 2005-01-26 |  | -12.12d | 0d |
| 873 | 11.2.2.1.1 | Design | 1d? | 2005-01-24 | 2005-01-24 |  | -12.12d | 0d |
| 874 | 11.2.2.1.2 | Implementation | 1d? | 2005-01-25 | 2005-01-25 | 873 | -12.12d | 0d |
| 875 | 11.2.2.1.3 | Tuning | 1d? | 2005-01-26 | 2005-01-26 | 874 | -12.12d | 0d |
| 876 | 11.2.3 | **Monsters/Spawns** | 3d? | 2005-01-24 | 2005-01-26 |  | -12.12d | 0d |
| 877 | 11.2.3.1 | **Stage 1** | 3d? | 2005-01-24 | 2005-01-26 |  | -12.12d | 0d |
| 878 | 11.2.3.1.1 | Design | 1d? | 2005-01-24 | 2005-01-24 |  | -12.12d | 0d |
| 879 | 11.2.3.1.2 | Implementation | 1d? | 2005-01-25 | 2005-01-25 | 878 | -12.12d | 0d |
| 880 | 11.2.3.1.3 | Tuning | 1d? | 2005-01-26 | 2005-01-26 | 879 | -12.12d | 0d |
| 881 | 11.2.4 | **Stalkers/Spawns** | 3d? | 2005-01-24 | 2005-01-26 |  | -12.12d | 0d |
| 882 | 11.2.4.1 | **Stage 1** | 3d? | 2005-01-24 | 2005-01-26 |  | -12.12d | 0d |
| 883 | 11.2.4.1.1 | Design | 1d? | 2005-01-24 | 2005-01-24 |  | -12.12d | 0d |
| 884 | 11.2.4.1.2 | Implementation | 1d? | 2005-01-25 | 2005-01-25 | 883 | -12.12d | 0d |
| 885 | 11.2.4.1.3 | Tuning | 1d? | 2005-01-26 | 2005-01-26 | 884 | -12.12d | 0d |
| 886 | 11.2.5 | **Anomalies/Spawns** | 3d? | 2005-01-24 | 2005-01-26 |  | -12.12d | 0d |
| 887 | 11.2.5.1 | **Stage 1** | 3d? | 2005-01-24 | 2005-01-26 |  | -12.12d | 0d |
| 888 | 11.2.5.1.1 | Design | 1d? | 2005-01-24 | 2005-01-24 |  | -12.12d | 0d |
| 889 | 11.2.5.1.2 | Implementation | 1d? | 2005-01-25 | 2005-01-25 | 888 | -12.12d | 0d |
| 890 | 11.2.5.1.3 | Tuning | 1d? | 2005-01-26 | 2005-01-26 | 889 | -12.12d | 0d |
| 891 | 11.2.6 | **Physicks** | 3d? | 2005-01-24 | 2005-01-26 |  | -12.12d | 0d |
| 892 | 11.2.6.1 | **Stage 1** | 3d? | 2005-01-24 | 2005-01-26 |  | -12.12d | 0d |
| 893 | 11.2.6.1.1 | Design | 1d? | 2005-01-24 | 2005-01-24 |  | -12.12d | 0d |
| 894 | 11.2.6.1.2 | Implementation | 1d? | 2005-01-25 | 2005-01-25 | 893 | -12.12d | 0d |
| 895 | 11.2.6.1.3 | Tuning | 1d? | 2005-01-26 | 2005-01-26 | 894 | -12.12d | 0d |

| ID | WBS | Task | Duration | Start | Finish | Predecessors | Total slack | Free slack |
| --- | --- | --- | --- | --- | --- | --- | --- | --- |
| 897 | 11.3 | **Scripts** | 5d? | 2005-01-24 | 2005-01-28 |  | -14.12d | 0d |
| 898 | 11.3.1 | **Script 1** | 5d? | 2005-01-24 | 2005-01-28 |  | -14.12d | 0d |
| 899 | 11.3.1.1 | Scenario(text) | 1d? | 2005-01-24 | 2005-01-24 |  | -14.12d | 0d |
| 900 | 11.3.1.2 | Постановка задач | 1d? | 2005-01-25 | 2005-01-25 | 899 | -14.12d | 0d |
| 901 | 11.3.1.3 | Implimentation | 1d? | 2005-01-26 | 2005-01-26 | 900 | -14.12d | 0d |
| 902 | 11.3.1.4 | Dilogs/VO/Icons/Objects/Animations | 1d? | 2005-01-27 | 2005-01-27 | 901 | -14.12d | 0d |
| 903 | 11.3.1.5 | Настройка | 1d? | 2005-01-28 | 2005-01-28 | 902 | -14.12d | 0d |
| 904 | 11.3.2 | **Script 2** | 5d? | 2005-01-24 | 2005-01-28 |  | -14.12d | 0d |
| 905 | 11.3.2.1 | Scenario(text) | 1d? | 2005-01-24 | 2005-01-24 |  | -14.12d | 0d |
| 906 | 11.3.2.2 | Постановка задач | 1d? | 2005-01-25 | 2005-01-25 | 905 | -14.12d | 0d |
| 907 | 11.3.2.3 | Implimentation | 1d? | 2005-01-26 | 2005-01-26 | 906 | -14.12d | 0d |
| 908 | 11.3.2.4 | Dilogs/VO/Icons/Objects/Animations | 1d? | 2005-01-27 | 2005-01-27 | 907 | -14.12d | 0d |
| 909 | 11.3.2.5 | Настройка | 1d? | 2005-01-28 | 2005-01-28 | 908 | -14.12d | 0d |
| 910 | 11.3.3 | **Script 3** | 5d? | 2005-01-24 | 2005-01-28 |  | -14.12d | 0d |
| 911 | 11.3.3.1 | Scenario(text) | 1d? | 2005-01-24 | 2005-01-24 |  | -14.12d | 0d |
| 912 | 11.3.3.2 | Постановка задач | 1d? | 2005-01-25 | 2005-01-25 | 911 | -14.12d | 0d |
| 913 | 11.3.3.3 | Implimentation | 1d? | 2005-01-26 | 2005-01-26 | 912 | -14.12d | 0d |
| 914 | 11.3.3.4 | Dilogs/VO/Icons/Objects/Animations | 1d? | 2005-01-27 | 2005-01-27 | 913 | -14.12d | 0d |
| 915 | 11.3.3.5 | Настройка | 1d? | 2005-01-28 | 2005-01-28 | 914 | -14.12d | 0d |
| 916 | 11.3.4 | **Script 4** | 5d? | 2005-01-24 | 2005-01-28 |  | -14.12d | 0d |
| 917 | 11.3.4.1 | Scenario(text) | 1d? | 2005-01-24 | 2005-01-24 |  | -14.12d | 0d |
| 918 | 11.3.4.2 | Постановка задач | 1d? | 2005-01-25 | 2005-01-25 | 917 | -14.12d | 0d |
| 919 | 11.3.4.3 | Implimentation | 1d? | 2005-01-26 | 2005-01-26 | 918 | -14.12d | 0d |
| 920 | 11.3.4.4 | Dilogs/VO/Icons/Objects/Animations | 1d? | 2005-01-27 | 2005-01-27 | 919 | -14.12d | 0d |
| 921 | 11.3.4.5 | Настройка | 1d? | 2005-01-28 | 2005-01-28 | 920 | -14.12d | 0d |

| ID | WBS | Task | Duration | Start | Finish | Predecessors | Total slack | Free slack | Deadline | Resources | Work |
| --- | --- | --- | --- | --- | --- | --- | --- | --- | --- | --- | --- |
| 922 | 11.3.5 | **Script 5** | 5d? | 2005-01-24 | 2005-01-28 |  | -14.12d | 0d |  |  |  |
| 923 | 11.3.5.1 | Scenario(text) | 1d? | 2005-01-24 | 2005-01-24 |  | -14.12d | 0d |  |  |  |
| 924 | 11.3.5.2 | Постановка задач | 1d? | 2005-01-25 | 2005-01-25 | 923 | -14.12d | 0d |  |  |  |
| 925 | 11.3.5.3 | Implimentation | 1d? | 2005-01-26 | 2005-01-26 | 924 | -14.12d | 0d |  |  |  |
| 926 | 11.3.5.4 | Dilogs/VO/Icons/Objects/Animations | 1d? | 2005-01-27 | 2005-01-27 | 925 | -14.12d | 0d |  |  |  |
| 927 | 11.3.5.5 | Настройка | 1d? | 2005-01-28 | 2005-01-28 | 926 | -14.12d | 0d |  |  |  |
| 929 | 12 | **09_Rostok_Dolg** | 11d? | 2005-02-05 | 2005-02-17 | 851 | -20.12d | 0d | 2005-02-15 | Коан, Руслан | 88h |
| 930 | 12.1 | **LevelDesign** | 11d? | 2005-02-05 | 2005-02-17 |  | -20.12d | 0d | 2005-02-07 |  |  |
| 931 | 12.1.1 | **Stage 1** | 11d? | 2005-02-05 | 2005-02-17 |  | -20.12d | 0d |  |  |  |
| 932 | 12.1.1.1 | List of Changes | 2d | 2005-02-05 | 2005-02-07 |  | -20.12d | 0d |  |  |  |
| 933 | 12.1.1.2 | Changed Geometry | 1d? | 2005-02-08 | 2005-02-08 | 932 | -20.12d | 0d |  |  |  |
| 934 | 12.1.1.3 | Check List 1 | 1d? | 2005-02-09 | 2005-02-09 | 933 | -20.12d | 0d |  |  |  |
| 935 | 12.1.1.4 | Check List 2 | 1d? | 2005-02-10 | 2005-02-10 | 934 | -20.12d | 0d |  |  |  |
| 936 | 12.1.1.5 | Check List 3 | 1d? | 2005-02-11 | 2005-02-11 | 935 | -20.12d | 0d |  |  |  |
| 937 | 12.1.1.6 | Check List 4 | 1d? | 2005-02-12 | 2005-02-12 | 936 | -20.12d | 0d |  |  |  |
| 938 | 12.1.1.7 | Render Geometry | 1d? | 2005-02-14 | 2005-02-14 | 937 | -20.12d | 0d |  |  |  |
| 939 | 12.1.1.8 | Grass | 1d? | 2005-02-15 | 2005-02-15 | 938 | -20.12d | 0d |  |  |  |
| 940 | 12.1.1.9 | AI Maps | 1d? | 2005-02-16 | 2005-02-16 | 939 | -20.12d | 0d |  |  |  |
| 941 | 12.1.1.10 | Graphs | 1d? | 2005-02-17 | 2005-02-17 | 940 | -20.12d | 0d |  |  |  |
| 943 | 12.2 | **GameDesign** | 3d? | 2005-02-05 | 2005-02-08 |  | -12.12d | 0d |  |  |  |
| 944 | 12.2.1 | **Secrets** | 3d? | 2005-02-05 | 2005-02-08 |  | -12.12d | 0d |  |  |  |
| 945 | 12.2.1.1 | **Stage 1** | 3d? | 2005-02-05 | 2005-02-08 |  | -12.12d | 0d |  |  |  |
| 946 | 12.2.1.1.1 | Design | 1d? | 2005-02-05 | 2005-02-05 |  | -12.12d | 0d |  |  |  |
| 947 | 12.2.1.1.2 | Implementation | 1d? | 2005-02-07 | 2005-02-07 | 946 | -12.12d | 0d |  |  |  |
| 948 | 12.2.1.1.3 | Tuning | 1d? | 2005-02-08 | 2005-02-08 | 947 | -12.12d | 0d |  |  |  |

| ID | WBS | Task | Duration | Start | Finish | Predecessors | Total slack | Free slack |
| --- | --- | --- | --- | --- | --- | --- | --- | --- |
| 949 | 12.2.2 | **Smartterrains** | 3d? | 2005-02-05 | 2005-02-08 |  | -12.12d | 0d |
| 950 | 12.2.2.1 | **Stage 1** | 3d? | 2005-02-05 | 2005-02-08 |  | -12.12d | 0d |
| 951 | 12.2.2.1.1 | Design | 1d? | 2005-02-05 | 2005-02-05 |  | -12.12d | 0d |
| 952 | 12.2.2.1.2 | Implementation | 1d? | 2005-02-07 | 2005-02-07 | 951 | -12.12d | 0d |
| 953 | 12.2.2.1.3 | Tuning | 1d? | 2005-02-08 | 2005-02-08 | 952 | -12.12d | 0d |
| 954 | 12.2.3 | **Monsters/Spawns** | 3d? | 2005-02-05 | 2005-02-08 |  | -12.12d | 0d |
| 955 | 12.2.3.1 | **Stage 1** | 3d? | 2005-02-05 | 2005-02-08 |  | -12.12d | 0d |
| 956 | 12.2.3.1.1 | Design | 1d? | 2005-02-05 | 2005-02-05 |  | -12.12d | 0d |
| 957 | 12.2.3.1.2 | Implementation | 1d? | 2005-02-07 | 2005-02-07 | 956 | -12.12d | 0d |
| 958 | 12.2.3.1.3 | Tuning | 1d? | 2005-02-08 | 2005-02-08 | 957 | -12.12d | 0d |
| 959 | 12.2.4 | **Stalkers/Spawns** | 3d? | 2005-02-05 | 2005-02-08 |  | -12.12d | 0d |
| 960 | 12.2.4.1 | **Stage 1** | 3d? | 2005-02-05 | 2005-02-08 |  | -12.12d | 0d |
| 961 | 12.2.4.1.1 | Design | 1d? | 2005-02-05 | 2005-02-05 |  | -12.12d | 0d |
| 962 | 12.2.4.1.2 | Implementation | 1d? | 2005-02-07 | 2005-02-07 | 961 | -12.12d | 0d |
| 963 | 12.2.4.1.3 | Tuning | 1d? | 2005-02-08 | 2005-02-08 | 962 | -12.12d | 0d |
| 964 | 12.2.5 | **Anomalies/Spawns** | 3d? | 2005-02-05 | 2005-02-08 |  | -12.12d | 0d |
| 965 | 12.2.5.1 | **Stage 1** | 3d? | 2005-02-05 | 2005-02-08 |  | -12.12d | 0d |
| 966 | 12.2.5.1.1 | Design | 1d? | 2005-02-05 | 2005-02-05 |  | -12.12d | 0d |
| 967 | 12.2.5.1.2 | Implementation | 1d? | 2005-02-07 | 2005-02-07 | 966 | -12.12d | 0d |
| 968 | 12.2.5.1.3 | Tuning | 1d? | 2005-02-08 | 2005-02-08 | 967 | -12.12d | 0d |
| 969 | 12.2.6 | **Physicks** | 3d? | 2005-02-05 | 2005-02-08 |  | -12.12d | 0d |
| 970 | 12.2.6.1 | **Stage 1** | 3d? | 2005-02-05 | 2005-02-08 |  | -12.12d | 0d |
| 971 | 12.2.6.1.1 | Design | 1d? | 2005-02-05 | 2005-02-05 |  | -12.12d | 0d |
| 972 | 12.2.6.1.2 | Implementation | 1d? | 2005-02-07 | 2005-02-07 | 971 | -12.12d | 0d |
| 973 | 12.2.6.1.3 | Tuning | 1d? | 2005-02-08 | 2005-02-08 | 972 | -12.12d | 0d |

| ID | WBS | Task | Duration | Start | Finish | Predecessors | Total slack | Free slack |
| --- | --- | --- | --- | --- | --- | --- | --- | --- |
| 975 | 12.3 | **Scripts** | 5d? | 2005-02-05 | 2005-02-10 |  | -14.12d | 0d |
| 976 | 12.3.1 | **Script 1** | 5d? | 2005-02-05 | 2005-02-10 |  | -14.12d | 0d |
| 977 | 12.3.1.1 | Scenario(text) | 1d? | 2005-02-05 | 2005-02-05 |  | -14.12d | 0d |
| 978 | 12.3.1.2 | Постановка задач | 1d? | 2005-02-07 | 2005-02-07 | 977 | -14.12d | 0d |
| 979 | 12.3.1.3 | Implimentation | 1d? | 2005-02-08 | 2005-02-08 | 978 | -14.12d | 0d |
| 980 | 12.3.1.4 | Dilogs/VO/Icons/Objects/Animations | 1d? | 2005-02-09 | 2005-02-09 | 979 | -14.12d | 0d |
| 981 | 12.3.1.5 | Настройка | 1d? | 2005-02-10 | 2005-02-10 | 980 | -14.12d | 0d |
| 982 | 12.3.2 | **Script 2** | 5d? | 2005-02-05 | 2005-02-10 |  | -14.12d | 0d |
| 983 | 12.3.2.1 | Scenario(text) | 1d? | 2005-02-05 | 2005-02-05 |  | -14.12d | 0d |
| 984 | 12.3.2.2 | Постановка задач | 1d? | 2005-02-07 | 2005-02-07 | 983 | -14.12d | 0d |
| 985 | 12.3.2.3 | Implimentation | 1d? | 2005-02-08 | 2005-02-08 | 984 | -14.12d | 0d |
| 986 | 12.3.2.4 | Dilogs/VO/Icons/Objects/Animations | 1d? | 2005-02-09 | 2005-02-09 | 985 | -14.12d | 0d |
| 987 | 12.3.2.5 | Настройка | 1d? | 2005-02-10 | 2005-02-10 | 986 | -14.12d | 0d |
| 988 | 12.3.3 | **Script 3** | 5d? | 2005-02-05 | 2005-02-10 |  | -14.12d | 0d |
| 989 | 12.3.3.1 | Scenario(text) | 1d? | 2005-02-05 | 2005-02-05 |  | -14.12d | 0d |
| 990 | 12.3.3.2 | Постановка задач | 1d? | 2005-02-07 | 2005-02-07 | 989 | -14.12d | 0d |
| 991 | 12.3.3.3 | Implimentation | 1d? | 2005-02-08 | 2005-02-08 | 990 | -14.12d | 0d |
| 992 | 12.3.3.4 | Dilogs/VO/Icons/Objects/Animations | 1d? | 2005-02-09 | 2005-02-09 | 991 | -14.12d | 0d |
| 993 | 12.3.3.5 | Настройка | 1d? | 2005-02-10 | 2005-02-10 | 992 | -14.12d | 0d |
| 994 | 12.3.4 | **Script 4** | 5d? | 2005-02-05 | 2005-02-10 |  | -14.12d | 0d |
| 995 | 12.3.4.1 | Scenario(text) | 1d? | 2005-02-05 | 2005-02-05 |  | -14.12d | 0d |
| 996 | 12.3.4.2 | Постановка задач | 1d? | 2005-02-07 | 2005-02-07 | 995 | -14.12d | 0d |
| 997 | 12.3.4.3 | Implimentation | 1d? | 2005-02-08 | 2005-02-08 | 996 | -14.12d | 0d |
| 998 | 12.3.4.4 | Dilogs/VO/Icons/Objects/Animations | 1d? | 2005-02-09 | 2005-02-09 | 997 | -14.12d | 0d |
| 999 | 12.3.4.5 | Настройка | 1d? | 2005-02-10 | 2005-02-10 | 998 | -14.12d | 0d |

| ID | WBS | Task | Duration | Start | Finish | Predecessors | Total slack | Free slack | Deadline | Resources | Work |
| --- | --- | --- | --- | --- | --- | --- | --- | --- | --- | --- | --- |
| 1000 | 12.3.5 | **Script 5** | 5d? | 2005-02-05 | 2005-02-10 |  | -14.12d | 0d |  |  |  |
| 1001 | 12.3.5.1 | Scenario(text) | 1d? | 2005-02-05 | 2005-02-05 |  | -14.12d | 0d |  |  |  |
| 1002 | 12.3.5.2 | Постановка задач | 1d? | 2005-02-07 | 2005-02-07 | 1001 | -14.12d | 0d |  |  |  |
| 1003 | 12.3.5.3 | Implimentation | 1d? | 2005-02-08 | 2005-02-08 | 1002 | -14.12d | 0d |  |  |  |
| 1004 | 12.3.5.4 | Dilogs/VO/Icons/Objects/Animations | 1d? | 2005-02-09 | 2005-02-09 | 1003 | -14.12d | 0d |  |  |  |
| 1005 | 12.3.5.5 | Настройка | 1d? | 2005-02-10 | 2005-02-10 | 1004 | -14.12d | 0d |  |  |  |
| 1008 | 13 | **07_Rostok** | 11d? | 2005-02-18 | 2005-03-02 | 929 | -20.12d | 0d | 2005-03-15 | Коан, Руслан | 88h |
| 1009 | 13.1 | **LevelDesign** | 11d? | 2005-02-18 | 2005-03-02 |  | -20.12d | 0d | 2005-02-07 |  |  |
| 1010 | 13.1.1 | **Stage 1** | 11d? | 2005-02-18 | 2005-03-02 |  | -20.12d | 0d |  |  |  |
| 1011 | 13.1.1.1 | List of Changes | 2d | 2005-02-18 | 2005-02-19 |  | -20.12d | 0d |  |  |  |
| 1012 | 13.1.1.2 | Changed Geometry | 1d? | 2005-02-21 | 2005-02-21 | 1011 | -20.12d | 0d |  |  |  |
| 1013 | 13.1.1.3 | Check List 1 | 1d? | 2005-02-22 | 2005-02-22 | 1012 | -20.12d | 0d |  |  |  |
| 1014 | 13.1.1.4 | Check List 2 | 1d? | 2005-02-23 | 2005-02-23 | 1013 | -20.12d | 0d |  |  |  |
| 1015 | 13.1.1.5 | Check List 3 | 1d? | 2005-02-24 | 2005-02-24 | 1014 | -20.12d | 0d |  |  |  |
| 1016 | 13.1.1.6 | Check List 4 | 1d? | 2005-02-25 | 2005-02-25 | 1015 | -20.12d | 0d |  |  |  |
| 1017 | 13.1.1.7 | Render Geometry | 1d? | 2005-02-26 | 2005-02-26 | 1016 | -20.12d | 0d |  |  |  |
| 1018 | 13.1.1.8 | Grass | 1d? | 2005-02-28 | 2005-02-28 | 1017 | -20.12d | 0d |  |  |  |
| 1019 | 13.1.1.9 | AI Maps | 1d? | 2005-03-01 | 2005-03-01 | 1018 | -20.12d | 0d |  |  |  |
| 1020 | 13.1.1.10 | Graphs | 1d? | 2005-03-02 | 2005-03-02 | 1019 | -20.12d | 0d |  |  |  |
| 1022 | 13.2 | **GameDesign** | 3d? | 2005-02-18 | 2005-02-21 |  | 7.88d |  |  |  |  |
| 1023 | 13.2.1 | **Secrets** | 3d? | 2005-02-18 | 2005-02-21 |  | 7.88d |  |  |  |  |
| 1024 | 13.2.1.1 | **Stage 1** | 3d? | 2005-02-18 | 2005-02-21 |  | 7.88d |  |  |  |  |
| 1025 | 13.2.1.1.1 | Design | 1d? | 2005-02-18 | 2005-02-18 |  | 7.88d | 0d |  |  |  |
| 1026 | 13.2.1.1.2 | Implementation | 1d? | 2005-02-19 | 2005-02-19 | 1025 | 7.88d | 0d |  |  |  |
| 1027 | 13.2.1.1.3 | Tuning | 1d? | 2005-02-21 | 2005-02-21 | 1026 | 7.88d |  |  |  |  |

| ID | WBS | Task | Duration | Start | Finish | Predecessors | Total slack | Free slack |
| --- | --- | --- | --- | --- | --- | --- | --- | --- |
| 1028 | 13.2.2 | **Smartterrains** | 3d? | 2005-02-18 | 2005-02-21 |  | 7.88d |  |
| 1029 | 13.2.2.1 | **Stage 1** | 3d? | 2005-02-18 | 2005-02-21 |  | 7.88d |  |
| 1030 | 13.2.2.1.1 | Design | 1d? | 2005-02-18 | 2005-02-18 |  | 7.88d | 0d |
| 1031 | 13.2.2.1.2 | Implementation | 1d? | 2005-02-19 | 2005-02-19 | 1030 | 7.88d | 0d |
| 1032 | 13.2.2.1.3 | Tuning | 1d? | 2005-02-21 | 2005-02-21 | 1031 | 7.88d |  |
| 1033 | 13.2.3 | **Monsters/Spawns** | 3d? | 2005-02-18 | 2005-02-21 |  | 7.88d |  |
| 1034 | 13.2.3.1 | **Stage 1** | 3d? | 2005-02-18 | 2005-02-21 |  | 7.88d |  |
| 1035 | 13.2.3.1.1 | Design | 1d? | 2005-02-18 | 2005-02-18 |  | 7.88d | 0d |
| 1036 | 13.2.3.1.2 | Implementation | 1d? | 2005-02-19 | 2005-02-19 | 1035 | 7.88d | 0d |
| 1037 | 13.2.3.1.3 | Tuning | 1d? | 2005-02-21 | 2005-02-21 | 1036 | 7.88d |  |
| 1038 | 13.2.4 | **Stalkers/Spawns** | 3d? | 2005-02-18 | 2005-02-21 |  | 7.88d |  |
| 1039 | 13.2.4.1 | **Stage 1** | 3d? | 2005-02-18 | 2005-02-21 |  | 7.88d |  |
| 1040 | 13.2.4.1.1 | Design | 1d? | 2005-02-18 | 2005-02-18 |  | 7.88d | 0d |
| 1041 | 13.2.4.1.2 | Implementation | 1d? | 2005-02-19 | 2005-02-19 | 1040 | 7.88d | 0d |
| 1042 | 13.2.4.1.3 | Tuning | 1d? | 2005-02-21 | 2005-02-21 | 1041 | 7.88d |  |
| 1043 | 13.2.5 | **Anomalies/Spawns** | 3d? | 2005-02-18 | 2005-02-21 |  | 7.88d |  |
| 1044 | 13.2.5.1 | **Stage 1** | 3d? | 2005-02-18 | 2005-02-21 |  | 7.88d |  |
| 1045 | 13.2.5.1.1 | Design | 1d? | 2005-02-18 | 2005-02-18 |  | 7.88d | 0d |
| 1046 | 13.2.5.1.2 | Implementation | 1d? | 2005-02-19 | 2005-02-19 | 1045 | 7.88d | 0d |
| 1047 | 13.2.5.1.3 | Tuning | 1d? | 2005-02-21 | 2005-02-21 | 1046 | 7.88d |  |
| 1048 | 13.2.6 | **Physicks** | 3d? | 2005-02-18 | 2005-02-21 |  | 7.88d |  |
| 1049 | 13.2.6.1 | **Stage 1** | 3d? | 2005-02-18 | 2005-02-21 |  | 7.88d |  |
| 1050 | 13.2.6.1.1 | Design | 1d? | 2005-02-18 | 2005-02-18 |  | 7.88d | 0d |
| 1051 | 13.2.6.1.2 | Implementation | 1d? | 2005-02-19 | 2005-02-19 | 1050 | 7.88d | 0d |
| 1052 | 13.2.6.1.3 | Tuning | 1d? | 2005-02-21 | 2005-02-21 | 1051 | 7.88d |  |

| ID | WBS | Task | Duration | Start | Finish | Predecessors | Total slack | Free slack |
| --- | --- | --- | --- | --- | --- | --- | --- | --- |
| 1054 | 13.3 | **Scripts** | 5d? | 2005-02-18 | 2005-02-23 |  | 5.88d |  |
| 1055 | 13.3.1 | **Script 1** | 5d? | 2005-02-18 | 2005-02-23 |  | 5.88d |  |
| 1056 | 13.3.1.1 | Scenario(text) | 1d? | 2005-02-18 | 2005-02-18 |  | 5.88d | 0d |
| 1057 | 13.3.1.2 | Постановка задач | 1d? | 2005-02-19 | 2005-02-19 | 1056 | 5.88d | 0d |
| 1058 | 13.3.1.3 | Implimentation | 1d? | 2005-02-21 | 2005-02-21 | 1057 | 5.88d | 0d |
| 1059 | 13.3.1.4 | Dilogs/VO/Icons/Objects/Animations | 1d? | 2005-02-22 | 2005-02-22 | 1058 | 5.88d | 0d |
| 1060 | 13.3.1.5 | Настройка | 1d? | 2005-02-23 | 2005-02-23 | 1059 | 5.88d |  |
| 1061 | 13.3.2 | **Script 2** | 5d? | 2005-02-18 | 2005-02-23 |  | 5.88d |  |
| 1062 | 13.3.2.1 | Scenario(text) | 1d? | 2005-02-18 | 2005-02-18 |  | 5.88d | 0d |
| 1063 | 13.3.2.2 | Постановка задач | 1d? | 2005-02-19 | 2005-02-19 | 1062 | 5.88d | 0d |
| 1064 | 13.3.2.3 | Implimentation | 1d? | 2005-02-21 | 2005-02-21 | 1063 | 5.88d | 0d |
| 1065 | 13.3.2.4 | Dilogs/VO/Icons/Objects/Animations | 1d? | 2005-02-22 | 2005-02-22 | 1064 | 5.88d | 0d |
| 1066 | 13.3.2.5 | Настройка | 1d? | 2005-02-23 | 2005-02-23 | 1065 | 5.88d |  |
| 1067 | 13.3.3 | **Script 3** | 5d? | 2005-02-18 | 2005-02-23 |  | 5.88d |  |
| 1068 | 13.3.3.1 | Scenario(text) | 1d? | 2005-02-18 | 2005-02-18 |  | 5.88d | 0d |
| 1069 | 13.3.3.2 | Постановка задач | 1d? | 2005-02-19 | 2005-02-19 | 1068 | 5.88d | 0d |
| 1070 | 13.3.3.3 | Implimentation | 1d? | 2005-02-21 | 2005-02-21 | 1069 | 5.88d | 0d |
| 1071 | 13.3.3.4 | Dilogs/VO/Icons/Objects/Animations | 1d? | 2005-02-22 | 2005-02-22 | 1070 | 5.88d | 0d |
| 1072 | 13.3.3.5 | Настройка | 1d? | 2005-02-23 | 2005-02-23 | 1071 | 5.88d |  |
| 1073 | 13.3.4 | **Script 4** | 5d? | 2005-02-18 | 2005-02-23 |  | 5.88d |  |
| 1074 | 13.3.4.1 | Scenario(text) | 1d? | 2005-02-18 | 2005-02-18 |  | 5.88d | 0d |
| 1075 | 13.3.4.2 | Постановка задач | 1d? | 2005-02-19 | 2005-02-19 | 1074 | 5.88d | 0d |
| 1076 | 13.3.4.3 | Implimentation | 1d? | 2005-02-21 | 2005-02-21 | 1075 | 5.88d | 0d |
| 1077 | 13.3.4.4 | Dilogs/VO/Icons/Objects/Animations | 1d? | 2005-02-22 | 2005-02-22 | 1076 | 5.88d | 0d |
| 1078 | 13.3.4.5 | Настройка | 1d? | 2005-02-23 | 2005-02-23 | 1077 | 5.88d |  |

| ID | WBS | Task | Duration | Start | Finish | Predecessors | Total slack | Free slack | Deadline | Resources | Work |
| --- | --- | --- | --- | --- | --- | --- | --- | --- | --- | --- | --- |
| 1079 | 13.3.5 | **Script 5** | 5d? | 2005-02-18 | 2005-02-23 |  | 5.88d |  |  |  |  |
| 1080 | 13.3.5.1 | Scenario(text) | 1d? | 2005-02-18 | 2005-02-18 |  | 5.88d | 0d |  |  |  |
| 1081 | 13.3.5.2 | Постановка задач | 1d? | 2005-02-19 | 2005-02-19 | 1080 | 5.88d | 0d |  |  |  |
| 1082 | 13.3.5.3 | Implimentation | 1d? | 2005-02-21 | 2005-02-21 | 1081 | 5.88d | 0d |  |  |  |
| 1083 | 13.3.5.4 | Dilogs/VO/Icons/Objects/Animations | 1d? | 2005-02-22 | 2005-02-22 | 1082 | 5.88d | 0d |  |  |  |
| 1084 | 13.3.5.5 | Настройка | 1d? | 2005-02-23 | 2005-02-23 | 1083 | 5.88d |  |  |  |  |
| 1086 | 14 | **11_Yantar** | 11d? | 2005-03-03 | 2005-03-15 | 1008 | -0.12d | 0d | 2005-04-15 | Коан, Руслан | 88h |
| 1087 | 14.1 | **LevelDesign** | 11d? | 2005-03-03 | 2005-03-15 |  | -0.12d | 0d | 2005-03-15 |  |  |
| 1088 | 14.1.1 | **Stage 1** | 11d? | 2005-03-03 | 2005-03-15 |  | -0.12d | 0d |  |  |  |
| 1089 | 14.1.1.1 | List of Changes | 2d | 2005-03-03 | 2005-03-04 |  | -0.12d | 0d |  |  |  |
| 1090 | 14.1.1.2 | Changed Geometry | 1d? | 2005-03-05 | 2005-03-05 | 1089 | -0.12d | 0d |  |  |  |
| 1091 | 14.1.1.3 | Check List 1 | 1d? | 2005-03-07 | 2005-03-07 | 1090 | -0.12d | 0d |  |  |  |
| 1092 | 14.1.1.4 | Check List 2 | 1d? | 2005-03-08 | 2005-03-08 | 1091 | -0.12d | 0d |  |  |  |
| 1093 | 14.1.1.5 | Check List 3 | 1d? | 2005-03-09 | 2005-03-09 | 1092 | -0.12d | 0d |  |  |  |
| 1094 | 14.1.1.6 | Check List 4 | 1d? | 2005-03-10 | 2005-03-10 | 1093 | -0.12d | 0d |  |  |  |
| 1095 | 14.1.1.7 | Render Geometry | 1d? | 2005-03-11 | 2005-03-11 | 1094 | -0.12d | 0d |  |  |  |
| 1096 | 14.1.1.8 | Grass | 1d? | 2005-03-12 | 2005-03-12 | 1095 | -0.12d | 0d |  |  |  |
| 1097 | 14.1.1.9 | AI Maps | 1d? | 2005-03-14 | 2005-03-14 | 1096 | -0.12d | 0d |  |  |  |
| 1098 | 14.1.1.10 | Graphs | 1d? | 2005-03-15 | 2005-03-15 | 1097 | -0.12d | 0d |  |  |  |
| 1100 | 14.2 | **GameDesign** | 3d? | 2005-03-03 | 2005-03-05 |  | 23.88d |  |  |  |  |
| 1101 | 14.2.1 | **Secrets** | 3d? | 2005-03-03 | 2005-03-05 |  | 23.88d |  |  |  |  |
| 1102 | 14.2.1.1 | **Stage 1** | 3d? | 2005-03-03 | 2005-03-05 |  | 23.88d |  |  |  |  |
| 1103 | 14.2.1.1.1 | Design | 1d? | 2005-03-03 | 2005-03-03 |  | 23.88d | 0d |  |  |  |
| 1104 | 14.2.1.1.2 | Implementation | 1d? | 2005-03-04 | 2005-03-04 | 1103 | 23.88d | 0d |  |  |  |
| 1105 | 14.2.1.1.3 | Tuning | 1d? | 2005-03-05 | 2005-03-05 | 1104 | 23.88d |  |  |  |  |

| ID | WBS | Task | Duration | Start | Finish | Predecessors | Total slack | Free slack |
| --- | --- | --- | --- | --- | --- | --- | --- | --- |
| 1106 | 14.2.2 | **Smartterrains** | 3d? | 2005-03-03 | 2005-03-05 |  | 23.88d |  |
| 1107 | 14.2.2.1 | **Stage 1** | 3d? | 2005-03-03 | 2005-03-05 |  | 23.88d |  |
| 1108 | 14.2.2.1.1 | Design | 1d? | 2005-03-03 | 2005-03-03 |  | 23.88d | 0d |
| 1109 | 14.2.2.1.2 | Implementation | 1d? | 2005-03-04 | 2005-03-04 | 1108 | 23.88d | 0d |
| 1110 | 14.2.2.1.3 | Tuning | 1d? | 2005-03-05 | 2005-03-05 | 1109 | 23.88d |  |
| 1111 | 14.2.3 | **Monsters/Spawns** | 3d? | 2005-03-03 | 2005-03-05 |  | 23.88d |  |
| 1112 | 14.2.3.1 | **Stage 1** | 3d? | 2005-03-03 | 2005-03-05 |  | 23.88d |  |
| 1113 | 14.2.3.1.1 | Design | 1d? | 2005-03-03 | 2005-03-03 |  | 23.88d | 0d |
| 1114 | 14.2.3.1.2 | Implementation | 1d? | 2005-03-04 | 2005-03-04 | 1113 | 23.88d | 0d |
| 1115 | 14.2.3.1.3 | Tuning | 1d? | 2005-03-05 | 2005-03-05 | 1114 | 23.88d |  |
| 1116 | 14.2.4 | **Stalkers/Spawns** | 3d? | 2005-03-03 | 2005-03-05 |  | 23.88d |  |
| 1117 | 14.2.4.1 | **Stage 1** | 3d? | 2005-03-03 | 2005-03-05 |  | 23.88d |  |
| 1118 | 14.2.4.1.1 | Design | 1d? | 2005-03-03 | 2005-03-03 |  | 23.88d | 0d |
| 1119 | 14.2.4.1.2 | Implementation | 1d? | 2005-03-04 | 2005-03-04 | 1118 | 23.88d | 0d |
| 1120 | 14.2.4.1.3 | Tuning | 1d? | 2005-03-05 | 2005-03-05 | 1119 | 23.88d |  |
| 1121 | 14.2.5 | **Anomalies/Spawns** | 3d? | 2005-03-03 | 2005-03-05 |  | 23.88d |  |
| 1122 | 14.2.5.1 | **Stage 1** | 3d? | 2005-03-03 | 2005-03-05 |  | 23.88d |  |
| 1123 | 14.2.5.1.1 | Design | 1d? | 2005-03-03 | 2005-03-03 |  | 23.88d | 0d |
| 1124 | 14.2.5.1.2 | Implementation | 1d? | 2005-03-04 | 2005-03-04 | 1123 | 23.88d | 0d |
| 1125 | 14.2.5.1.3 | Tuning | 1d? | 2005-03-05 | 2005-03-05 | 1124 | 23.88d |  |
| 1126 | 14.2.6 | **Physicks** | 3d? | 2005-03-03 | 2005-03-05 |  | 23.88d |  |
| 1127 | 14.2.6.1 | **Stage 1** | 3d? | 2005-03-03 | 2005-03-05 |  | 23.88d |  |
| 1128 | 14.2.6.1.1 | Design | 1d? | 2005-03-03 | 2005-03-03 |  | 23.88d | 0d |
| 1129 | 14.2.6.1.2 | Implementation | 1d? | 2005-03-04 | 2005-03-04 | 1128 | 23.88d | 0d |
| 1130 | 14.2.6.1.3 | Tuning | 1d? | 2005-03-05 | 2005-03-05 | 1129 | 23.88d |  |

| ID | WBS | Task | Duration | Start | Finish | Predecessors | Total slack | Free slack |
| --- | --- | --- | --- | --- | --- | --- | --- | --- |
| 1132 | 14.3 | **Scripts** | 5d? | 2005-03-03 | 2005-03-08 |  | 21.88d |  |
| 1133 | 14.3.1 | **Script 1** | 5d? | 2005-03-03 | 2005-03-08 |  | 21.88d |  |
| 1134 | 14.3.1.1 | Scenario(text) | 1d? | 2005-03-03 | 2005-03-03 |  | 21.88d | 0d |
| 1135 | 14.3.1.2 | Постановка задач | 1d? | 2005-03-04 | 2005-03-04 | 1134 | 21.88d | 0d |
| 1136 | 14.3.1.3 | Implimentation | 1d? | 2005-03-05 | 2005-03-05 | 1135 | 21.88d | 0d |
| 1137 | 14.3.1.4 | Dilogs/VO/Icons/Objects/Animations | 1d? | 2005-03-07 | 2005-03-07 | 1136 | 21.88d | 0d |
| 1138 | 14.3.1.5 | Настройка | 1d? | 2005-03-08 | 2005-03-08 | 1137 | 21.88d |  |
| 1139 | 14.3.2 | **Script 2** | 5d? | 2005-03-03 | 2005-03-08 |  | 21.88d |  |
| 1140 | 14.3.2.1 | Scenario(text) | 1d? | 2005-03-03 | 2005-03-03 |  | 21.88d | 0d |
| 1141 | 14.3.2.2 | Постановка задач | 1d? | 2005-03-04 | 2005-03-04 | 1140 | 21.88d | 0d |
| 1142 | 14.3.2.3 | Implimentation | 1d? | 2005-03-05 | 2005-03-05 | 1141 | 21.88d | 0d |
| 1143 | 14.3.2.4 | Dilogs/VO/Icons/Objects/Animations | 1d? | 2005-03-07 | 2005-03-07 | 1142 | 21.88d | 0d |
| 1144 | 14.3.2.5 | Настройка | 1d? | 2005-03-08 | 2005-03-08 | 1143 | 21.88d |  |
| 1145 | 14.3.3 | **Script 3** | 5d? | 2005-03-03 | 2005-03-08 |  | 21.88d |  |
| 1146 | 14.3.3.1 | Scenario(text) | 1d? | 2005-03-03 | 2005-03-03 |  | 21.88d | 0d |
| 1147 | 14.3.3.2 | Постановка задач | 1d? | 2005-03-04 | 2005-03-04 | 1146 | 21.88d | 0d |
| 1148 | 14.3.3.3 | Implimentation | 1d? | 2005-03-05 | 2005-03-05 | 1147 | 21.88d | 0d |
| 1149 | 14.3.3.4 | Dilogs/VO/Icons/Objects/Animations | 1d? | 2005-03-07 | 2005-03-07 | 1148 | 21.88d | 0d |
| 1150 | 14.3.3.5 | Настройка | 1d? | 2005-03-08 | 2005-03-08 | 1149 | 21.88d |  |
| 1151 | 14.3.4 | **Script 4** | 5d? | 2005-03-03 | 2005-03-08 |  | 21.88d |  |
| 1152 | 14.3.4.1 | Scenario(text) | 1d? | 2005-03-03 | 2005-03-03 |  | 21.88d | 0d |
| 1153 | 14.3.4.2 | Постановка задач | 1d? | 2005-03-04 | 2005-03-04 | 1152 | 21.88d | 0d |
| 1154 | 14.3.4.3 | Implimentation | 1d? | 2005-03-05 | 2005-03-05 | 1153 | 21.88d | 0d |
| 1155 | 14.3.4.4 | Dilogs/VO/Icons/Objects/Animations | 1d? | 2005-03-07 | 2005-03-07 | 1154 | 21.88d | 0d |
| 1156 | 14.3.4.5 | Настройка | 1d? | 2005-03-08 | 2005-03-08 | 1155 | 21.88d |  |

| ID | WBS | Task | Duration | Start | Finish | Predecessors | Total slack | Free slack | Deadline | Resources | Work |
| --- | --- | --- | --- | --- | --- | --- | --- | --- | --- | --- | --- |
| 1157 | 14.3.5 | **Script 5** | 5d? | 2005-03-03 | 2005-03-08 |  | 21.88d |  |  |  |  |
| 1158 | 14.3.5.1 | Scenario(text) | 1d? | 2005-03-03 | 2005-03-03 |  | 21.88d | 0d |  |  |  |
| 1159 | 14.3.5.2 | Постановка задач | 1d? | 2005-03-04 | 2005-03-04 | 1158 | 21.88d | 0d |  |  |  |
| 1160 | 14.3.5.3 | Implimentation | 1d? | 2005-03-05 | 2005-03-05 | 1159 | 21.88d | 0d |  |  |  |
| 1161 | 14.3.5.4 | Dilogs/VO/Icons/Objects/Animations | 1d? | 2005-03-07 | 2005-03-07 | 1160 | 21.88d | 0d |  |  |  |
| 1162 | 14.3.5.5 | Настройка | 1d? | 2005-03-08 | 2005-03-08 | 1161 | 21.88d |  |  |  |  |
| 1164 | 15 | **22_Warlab** | 11d? | 2005-03-16 | 2005-03-28 | 1086 | 15.88d |  | 2005-05-13 | Коан, Руслан | 88h |
| 1165 | 15.1 | **LevelDesign** | 11d? | 2005-03-16 | 2005-03-28 |  | 15.88d |  | 2005-04-15 |  |  |
| 1166 | 15.1.1 | **Stage 1** | 11d? | 2005-03-16 | 2005-03-28 |  | 15.88d |  |  |  |  |
| 1167 | 15.1.1.1 | List of Changes | 2d | 2005-03-16 | 2005-03-17 |  | 15.88d | 0d |  |  |  |
| 1168 | 15.1.1.2 | Changed Geometry | 1d? | 2005-03-18 | 2005-03-18 | 1167 | 15.88d | 0d |  |  |  |
| 1169 | 15.1.1.3 | Check List 1 | 1d? | 2005-03-19 | 2005-03-19 | 1168 | 15.88d | 0d |  |  |  |
| 1170 | 15.1.1.4 | Check List 2 | 1d? | 2005-03-21 | 2005-03-21 | 1169 | 15.88d | 0d |  |  |  |
| 1171 | 15.1.1.5 | Check List 3 | 1d? | 2005-03-22 | 2005-03-22 | 1170 | 15.88d | 0d |  |  |  |
| 1172 | 15.1.1.6 | Check List 4 | 1d? | 2005-03-23 | 2005-03-23 | 1171 | 15.88d | 0d |  |  |  |
| 1173 | 15.1.1.7 | Render Geometry | 1d? | 2005-03-24 | 2005-03-24 | 1172 | 15.88d | 0d |  |  |  |
| 1174 | 15.1.1.8 | Grass | 1d? | 2005-03-25 | 2005-03-25 | 1173 | 15.88d | 0d |  |  |  |
| 1175 | 15.1.1.9 | AI Maps | 1d? | 2005-03-26 | 2005-03-26 | 1174 | 15.88d | 0d |  |  |  |
| 1176 | 15.1.1.10 | Graphs | 1d? | 2005-03-28 | 2005-03-28 | 1175 | 15.88d |  |  |  |  |
| 1178 | 15.2 | **GameDesign** | 3d? | 2005-03-16 | 2005-03-18 |  | 47.88d |  |  |  |  |
| 1179 | 15.2.1 | **Secrets** | 3d? | 2005-03-16 | 2005-03-18 |  | 47.88d |  |  |  |  |
| 1180 | 15.2.1.1 | **Stage 1** | 3d? | 2005-03-16 | 2005-03-18 |  | 47.88d |  |  |  |  |
| 1181 | 15.2.1.1.1 | Design | 1d? | 2005-03-16 | 2005-03-16 |  | 47.88d | 0d |  |  |  |
| 1182 | 15.2.1.1.2 | Implementation | 1d? | 2005-03-17 | 2005-03-17 | 1181 | 47.88d | 0d |  |  |  |
| 1183 | 15.2.1.1.3 | Tuning | 1d? | 2005-03-18 | 2005-03-18 | 1182 | 47.88d |  |  |  |  |

| ID | WBS | Task | Duration | Start | Finish | Predecessors | Total slack | Free slack |
| --- | --- | --- | --- | --- | --- | --- | --- | --- |
| 1184 | 15.2.2 | **Smartterrains** | 3d? | 2005-03-16 | 2005-03-18 |  | 47.88d |  |
| 1185 | 15.2.2.1 | **Stage 1** | 3d? | 2005-03-16 | 2005-03-18 |  | 47.88d |  |
| 1186 | 15.2.2.1.1 | Design | 1d? | 2005-03-16 | 2005-03-16 |  | 47.88d | 0d |
| 1187 | 15.2.2.1.2 | Implementation | 1d? | 2005-03-17 | 2005-03-17 | 1186 | 47.88d | 0d |
| 1188 | 15.2.2.1.3 | Tuning | 1d? | 2005-03-18 | 2005-03-18 | 1187 | 47.88d |  |
| 1189 | 15.2.3 | **Monsters/Spawns** | 3d? | 2005-03-16 | 2005-03-18 |  | 47.88d |  |
| 1190 | 15.2.3.1 | **Stage 1** | 3d? | 2005-03-16 | 2005-03-18 |  | 47.88d |  |
| 1191 | 15.2.3.1.1 | Design | 1d? | 2005-03-16 | 2005-03-16 |  | 47.88d | 0d |
| 1192 | 15.2.3.1.2 | Implementation | 1d? | 2005-03-17 | 2005-03-17 | 1191 | 47.88d | 0d |
| 1193 | 15.2.3.1.3 | Tuning | 1d? | 2005-03-18 | 2005-03-18 | 1192 | 47.88d |  |
| 1194 | 15.2.4 | **Stalkers/Spawns** | 3d? | 2005-03-16 | 2005-03-18 |  | 47.88d |  |
| 1195 | 15.2.4.1 | **Stage 1** | 3d? | 2005-03-16 | 2005-03-18 |  | 47.88d |  |
| 1196 | 15.2.4.1.1 | Design | 1d? | 2005-03-16 | 2005-03-16 |  | 47.88d | 0d |
| 1197 | 15.2.4.1.2 | Implementation | 1d? | 2005-03-17 | 2005-03-17 | 1196 | 47.88d | 0d |
| 1198 | 15.2.4.1.3 | Tuning | 1d? | 2005-03-18 | 2005-03-18 | 1197 | 47.88d |  |
| 1199 | 15.2.5 | **Anomalies/Spawns** | 3d? | 2005-03-16 | 2005-03-18 |  | 47.88d |  |
| 1200 | 15.2.5.1 | **Stage 1** | 3d? | 2005-03-16 | 2005-03-18 |  | 47.88d |  |
| 1201 | 15.2.5.1.1 | Design | 1d? | 2005-03-16 | 2005-03-16 |  | 47.88d | 0d |
| 1202 | 15.2.5.1.2 | Implementation | 1d? | 2005-03-17 | 2005-03-17 | 1201 | 47.88d | 0d |
| 1203 | 15.2.5.1.3 | Tuning | 1d? | 2005-03-18 | 2005-03-18 | 1202 | 47.88d |  |
| 1204 | 15.2.6 | **Physicks** | 3d? | 2005-03-16 | 2005-03-18 |  | 47.88d |  |
| 1205 | 15.2.6.1 | **Stage 1** | 3d? | 2005-03-16 | 2005-03-18 |  | 47.88d |  |
| 1206 | 15.2.6.1.1 | Design | 1d? | 2005-03-16 | 2005-03-16 |  | 47.88d | 0d |
| 1207 | 15.2.6.1.2 | Implementation | 1d? | 2005-03-17 | 2005-03-17 | 1206 | 47.88d | 0d |
| 1208 | 15.2.6.1.3 | Tuning | 1d? | 2005-03-18 | 2005-03-18 | 1207 | 47.88d |  |

| ID | WBS | Task | Duration | Start | Finish | Predecessors | Total slack | Free slack |
| --- | --- | --- | --- | --- | --- | --- | --- | --- |
| 1210 | 15.3 | **Scripts** | 5d? | 2005-03-16 | 2005-03-21 |  | 45.88d |  |
| 1211 | 15.3.1 | **Script 1** | 5d? | 2005-03-16 | 2005-03-21 |  | 45.88d |  |
| 1212 | 15.3.1.1 | Scenario(text) | 1d? | 2005-03-16 | 2005-03-16 |  | 45.88d | 0d |
| 1213 | 15.3.1.2 | Постановка задач | 1d? | 2005-03-17 | 2005-03-17 | 1212 | 45.88d | 0d |
| 1214 | 15.3.1.3 | Implimentation | 1d? | 2005-03-18 | 2005-03-18 | 1213 | 45.88d | 0d |
| 1215 | 15.3.1.4 | Dilogs/VO/Icons/Objects/Animations | 1d? | 2005-03-19 | 2005-03-19 | 1214 | 45.88d | 0d |
| 1216 | 15.3.1.5 | Настройка | 1d? | 2005-03-21 | 2005-03-21 | 1215 | 45.88d |  |
| 1217 | 15.3.2 | **Script 2** | 5d? | 2005-03-16 | 2005-03-21 |  | 45.88d |  |
| 1218 | 15.3.2.1 | Scenario(text) | 1d? | 2005-03-16 | 2005-03-16 |  | 45.88d | 0d |
| 1219 | 15.3.2.2 | Постановка задач | 1d? | 2005-03-17 | 2005-03-17 | 1218 | 45.88d | 0d |
| 1220 | 15.3.2.3 | Implimentation | 1d? | 2005-03-18 | 2005-03-18 | 1219 | 45.88d | 0d |
| 1221 | 15.3.2.4 | Dilogs/VO/Icons/Objects/Animations | 1d? | 2005-03-19 | 2005-03-19 | 1220 | 45.88d | 0d |
| 1222 | 15.3.2.5 | Настройка | 1d? | 2005-03-21 | 2005-03-21 | 1221 | 45.88d |  |
| 1223 | 15.3.3 | **Script 3** | 5d? | 2005-03-16 | 2005-03-21 |  | 45.88d |  |
| 1224 | 15.3.3.1 | Scenario(text) | 1d? | 2005-03-16 | 2005-03-16 |  | 45.88d | 0d |
| 1225 | 15.3.3.2 | Постановка задач | 1d? | 2005-03-17 | 2005-03-17 | 1224 | 45.88d | 0d |
| 1226 | 15.3.3.3 | Implimentation | 1d? | 2005-03-18 | 2005-03-18 | 1225 | 45.88d | 0d |
| 1227 | 15.3.3.4 | Dilogs/VO/Icons/Objects/Animations | 1d? | 2005-03-19 | 2005-03-19 | 1226 | 45.88d | 0d |
| 1228 | 15.3.3.5 | Настройка | 1d? | 2005-03-21 | 2005-03-21 | 1227 | 45.88d |  |
| 1229 | 15.3.4 | **Script 4** | 5d? | 2005-03-16 | 2005-03-21 |  | 45.88d |  |
| 1230 | 15.3.4.1 | Scenario(text) | 1d? | 2005-03-16 | 2005-03-16 |  | 45.88d | 0d |
| 1231 | 15.3.4.2 | Постановка задач | 1d? | 2005-03-17 | 2005-03-17 | 1230 | 45.88d | 0d |
| 1232 | 15.3.4.3 | Implimentation | 1d? | 2005-03-18 | 2005-03-18 | 1231 | 45.88d | 0d |
| 1233 | 15.3.4.4 | Dilogs/VO/Icons/Objects/Animations | 1d? | 2005-03-19 | 2005-03-19 | 1232 | 45.88d | 0d |
| 1234 | 15.3.4.5 | Настройка | 1d? | 2005-03-21 | 2005-03-21 | 1233 | 45.88d |  |

| ID | WBS | Task | Duration | Start | Finish | Predecessors | Complete | Remaining | Total slack | Free slack | Constraint | Deadline | Resources | Work | Actual work |
| --- | --- | --- | --- | --- | --- | --- | --- | --- | --- | --- | --- | --- | --- | --- | --- |
| 1235 | 15.3.5 | **Script 5** | 5d? | 2005-03-16 | 2005-03-21 |  |  |  | 45.88d |  |  |  |  |  |  |
| 1236 | 15.3.5.1 | Scenario(text) | 1d? | 2005-03-16 | 2005-03-16 |  |  |  | 45.88d | 0d |  |  |  |  |  |
| 1237 | 15.3.5.2 | Постановка задач | 1d? | 2005-03-17 | 2005-03-17 | 1236 |  |  | 45.88d | 0d |  |  |  |  |  |
| 1238 | 15.3.5.3 | Implimentation | 1d? | 2005-03-18 | 2005-03-18 | 1237 |  |  | 45.88d | 0d |  |  |  |  |  |
| 1239 | 15.3.5.4 | Dilogs/VO/Icons/Objects/Animations | 1d? | 2005-03-19 | 2005-03-19 | 1238 |  |  | 45.88d | 0d |  |  |  |  |  |
| 1240 | 15.3.5.5 | Настройка | 1d? | 2005-03-21 | 2005-03-21 | 1239 |  |  | 45.88d |  |  |  |  |  |  |
| 1249 | 16 | **10_Military_Base** | 31.88d? | 2005-01-24 A | 2005-03-01 |  | 1% | 31.51d? | -30.88d | 0d |  | 2005-03-01 | Маст Дай, Сидорович | 674h | 10.95h |
| 1250 | 16.1 | **LevelDesign** | 11d? | 2005-01-24 | 2005-02-04 |  |  |  | -29.12d | 0d |  | 2005-02-07 |  |  |  |
| 1251 | 16.1.1 | **Stage 1** | 11d? | 2005-01-24 | 2005-02-04 |  |  |  | -29.12d | 0d |  |  |  |  |  |
| 1252 | 16.1.1.1 | List of Changes | 2d | 2005-01-24 | 2005-01-25 |  |  |  | -29.12d | 0d |  |  |  |  |  |
| 1253 | 16.1.1.2 | Changed Geometry | 1d? | 2005-01-26 | 2005-01-26 | 1252 |  |  | -29.12d | 0d |  |  |  |  |  |
| 1254 | 16.1.1.3 | Check List 1 | 1d? | 2005-01-27 | 2005-01-27 | 1253 |  |  | -29.12d | 0d |  |  |  |  |  |
| 1255 | 16.1.1.4 | Check List 2 | 1d? | 2005-01-28 | 2005-01-28 | 1254 |  |  | -29.12d | 0d |  |  |  |  |  |
| 1256 | 16.1.1.5 | Check List 3 | 1d? | 2005-01-29 | 2005-01-29 | 1255 |  |  | -29.12d | 0d |  |  |  |  |  |
| 1257 | 16.1.1.6 | Check List 4 | 1d? | 2005-01-31 | 2005-01-31 | 1256 |  |  | -29.12d | 0d |  |  |  |  |  |
| 1258 | 16.1.1.7 | Render Geometry | 1d? | 2005-02-01 | 2005-02-01 | 1257 |  |  | -29.12d | 0d |  |  |  |  |  |
| 1259 | 16.1.1.8 | Grass | 1d? | 2005-02-02 | 2005-02-02 | 1258 |  |  | -29.12d | 0d |  |  |  |  |  |
| 1260 | 16.1.1.9 | AI Maps | 1d? | 2005-02-03 | 2005-02-03 | 1259 |  |  | -29.12d | 0d |  |  |  |  |  |
| 1261 | 16.1.1.10 | Graphs | 1d? | 2005-02-04 | 2005-02-04 | 1260 |  |  | -29.12d | 0d |  |  |  |  |  |
| 1263 | 16.2 | **GameDesign** | 31.88d? | 2005-01-24 | 2005-03-01 |  |  |  | -50d | 0d |  |  |  | 83h |  |
| 1264 | 16.2.1 | **Secrets** | 3.88d? | 2005-02-25 | 2005-03-01 |  |  |  | -50d | 0d |  |  |  | 23h |  |
| 1265 | 16.2.1.1 | **Stage 1** | 3.88d? | 2005-02-25 | 2005-03-01 |  |  |  | -50d | 0d |  |  |  | 23h |  |
| 1266 | 16.2.1.1.1 | Design | 1.88d? | 2005-02-25 | 2005-02-26 |  |  |  | -50d | 0d | start no earlier than 2005-02-25 |  | Mustdie | 15h |  |
| 1267 | 16.2.1.1.2 | Implementation | 1d? | 2005-02-26 | 2005-02-28 | 1266 |  |  | -50d | 0d |  |  | Mustdie | 8h |  |
| 1268 | 16.2.1.1.3 | Tuning | 1d? | 2005-02-28 | 2005-03-01 | 1267 |  |  | -50d | 0d |  |  |  |  |  |

| ID | WBS | Task | Duration | Start | Finish | Predecessors | Total slack | Free slack | Constraint | Resources | Work |
| --- | --- | --- | --- | --- | --- | --- | --- | --- | --- | --- | --- |
| 1269 | 16.2.2 | **Smartterrains** | 3.88d? | 2005-02-25 | 2005-03-01 |  | -50d | 0d |  |  | 15h |
| 1270 | 16.2.2.1 | **Stage 1** | 3.88d? | 2005-02-25 | 2005-03-01 |  | -50d | 0d |  |  | 15h |
| 1271 | 16.2.2.1.1 | Design | 1.88d? | 2005-02-25 | 2005-02-26 |  | -50d | 0d | start no earlier than 2005-02-25 | Mustdie | 15h |
| 1272 | 16.2.2.1.2 | Implementation | 1d? | 2005-02-26 | 2005-02-28 | 1271 | -50d | 0d |  |  |  |
| 1273 | 16.2.2.1.3 | Tuning | 1d? | 2005-02-28 | 2005-03-01 | 1272 | -50d | 0d |  |  |  |
| 1274 | 16.2.3 | **Monsters/Spawns** | 3.88d? | 2005-02-25 | 2005-03-01 |  | -50d | 0d |  |  | 15h |
| 1275 | 16.2.3.1 | **Stage 1** | 3.88d? | 2005-02-25 | 2005-03-01 |  | -50d | 0d |  |  | 15h |
| 1276 | 16.2.3.1.1 | Design | 1.88d? | 2005-02-25 | 2005-02-26 |  | -50d | 0d | start no earlier than 2005-02-25 | Маст Дай, Сидорович | 15h |
| 1277 | 16.2.3.1.2 | Implementation | 1d? | 2005-02-26 | 2005-02-28 | 1276 | -50d | 0d |  |  |  |
| 1278 | 16.2.3.1.3 | Tuning | 1d? | 2005-02-28 | 2005-03-01 | 1277 | -50d | 0d |  |  |  |
| 1279 | 16.2.4 | **Stalkers/Spawns** | 3.88d? | 2005-02-25 | 2005-03-01 |  | -50d | 0d |  |  | 15h |
| 1280 | 16.2.4.1 | **Stage 1** | 3.88d? | 2005-02-25 | 2005-03-01 |  | -50d | 0d |  |  | 15h |
| 1281 | 16.2.4.1.1 | Design | 1.88d? | 2005-02-25 | 2005-02-26 |  | -50d | 0d | start no earlier than 2005-02-25 | Сидорович, Маст Дай | 15h |
| 1282 | 16.2.4.1.2 | Implementation | 1d? | 2005-02-26 | 2005-02-28 | 1281 | -50d | 0d |  |  |  |
| 1283 | 16.2.4.1.3 | Tuning | 1d? | 2005-02-28 | 2005-03-01 | 1282 | -50d | 0d |  |  |  |
| 1284 | 16.2.5 | **Anomalies/Spawns** | 3.88d? | 2005-02-25 | 2005-03-01 |  | -50d | 0d |  |  | 15h |
| 1285 | 16.2.5.1 | **Stage 1** | 3.88d? | 2005-02-25 | 2005-03-01 |  | -50d | 0d |  |  | 15h |
| 1286 | 16.2.5.1.1 | Design | 1.88d? | 2005-02-25 | 2005-02-26 |  | -50d | 0d | start no earlier than 2005-02-25 | Сидорович, Маст Дай | 15h |
| 1287 | 16.2.5.1.2 | Implementation | 1d? | 2005-02-26 | 2005-02-28 | 1286 | -50d | 0d |  |  |  |
| 1288 | 16.2.5.1.3 | Tuning | 1d? | 2005-02-28 | 2005-03-01 | 1287 | -50d | 0d |  |  |  |
| 1289 | 16.2.6 | **Physicks** | 3d? | 2005-01-24 | 2005-01-26 |  | -21.12d | 0d |  |  |  |
| 1290 | 16.2.6.1 | **Stage 1** | 3d? | 2005-01-24 | 2005-01-26 |  | -21.12d | 0d |  |  |  |
| 1291 | 16.2.6.1.1 | Design | 1d? | 2005-01-24 | 2005-01-24 |  | -21.12d | 0d |  |  |  |
| 1292 | 16.2.6.1.2 | Implementation | 1d? | 2005-01-25 | 2005-01-25 | 1291 | -21.12d | 0d |  |  |  |
| 1293 | 16.2.6.1.3 | Tuning | 1d? | 2005-01-26 | 2005-01-26 | 1292 | -21.12d | 0d |  |  |  |

| ID | WBS | Task | Duration | Start | Finish | Predecessors | Complete | Remaining | Total slack | Free slack | Constraint | Deadline | Resources | Work | Actual work |
| --- | --- | --- | --- | --- | --- | --- | --- | --- | --- | --- | --- | --- | --- | --- | --- |
| 1295 | 16.3 | **Scripts** | 29d? | 2005-01-24 A | 2005-02-25 |  | 2% | 28.45d? | -28d | 0d | finish no later than 2005-02-25 | 2005-03-01 |  | 336h | 8h |
| 1296 | 16.3.1 | Сценарий (текст) | 1d | 2005-01-24 A | 2005-01-24 A |  | 100% |  |  |  |  |  | Mustdie | 8h | 8h |
| 1297 | 16.3.2 | **Сцена 1 - База свободы (ГУЛАГ)** | 14d? | 2005-02-01 | 2005-02-16 |  |  |  | -39.12d | 0d |  |  |  | 152h |  |
| 1298 | 16.3.2.1 | Постановка задач | 1d? | 2005-02-01 | 2005-02-01 |  |  |  | -34.12d | 0d | start no earlier than 2005-02-01 |  | Сидорович | 8h |  |
| 1299 | 16.3.2.2 | **Реализация** | 8d? | 2005-02-02 | 2005-02-10 | 1298 |  |  | -34.12d | 0d |  |  |  | 72h |  |
| 1300 | 16.3.2.2.1 | Реализация | 8d | 2005-02-02 | 2005-02-10 | 1298 |  |  | -34.12d | 0d | start no earlier than 2005-02-01 |  | Сидорович | 64h |  |
| 1301 | 16.3.2.2.2 | Доработка X в движке | 1d? | 2005-02-02 | 2005-02-02 |  |  |  | -28.12d | 0d |  |  | Dima | 8h |  |
| 1302 | 16.3.2.3 | Расстановка | 4d | 2005-02-02 | 2005-02-05 | 1296 |  |  | -30.12d | 0d | start no earlier than 2005-02-02 |  | Mustdie | 32h |  |
| 1303 | 16.3.2.4 | Тексты, Диалоги, Задания, Отметки на карте, новости, профили персонажей (продумать) | 4d | 2005-02-11 | 2005-02-15 |  |  |  | -38.12d | 0d | start no earlier than 2005-02-11 |  | Mustdie | 32h |  |
| 1304 | 16.3.2.5 | **Тестирование** | 12d? | 2005-02-03 | 2005-02-16 | 1301 |  |  | -39.12d | 0d |  |  |  | 8h |  |
| 1305 | 16.3.2.5.1 | Тестирование | 1d | 2005-02-16 | 2005-02-16 |  |  |  | -39.12d | 0d | start no earlier than 2005-02-16 |  |  |  |  |
| 1306 | 16.3.2.5.2 | Проверить расстановку AI нод вокруг дерева | 1d? | 2005-02-03 | 2005-02-03 |  |  |  | -28.12d | 0d |  |  | Partizan | 8h |  |
| 1307 | 16.3.3 | **Сцена 2 - Группировка Долга** | 4d? | 2005-02-16 | 2005-02-19 |  |  |  | -42.12d | 0d |  |  |  | 64h |  |
| 1308 | 16.3.3.1 | Постановка задач | 1d | 2005-02-16 | 2005-02-16 |  |  |  | -41.12d | 0d | start no earlier than 2005-02-16 |  | Сидорович | 8h |  |
| 1309 | 16.3.3.2 | **Реализация** | 2d? | 2005-02-17 | 2005-02-18 | 1308 |  |  | -41.12d | 0d |  |  |  | 24h |  |
| 1310 | 16.3.3.2.1 | Реализация | 2d | 2005-02-17 | 2005-02-18 | 1308 |  |  | -41.12d | 0d | start no earlier than 2005-02-16 |  | Сидорович | 16h |  |
| 1311 | 16.3.3.2.2 | Доработка X в движке | 1d? | 2005-02-17 | 2005-02-17 |  |  |  | -41.12d | 0d |  |  | Dima | 8h |  |
| 1312 | 16.3.3.3 | Расстановка | 1d | 2005-02-17 | 2005-02-17 |  |  |  | -42.12d | 0d | start no earlier than 2005-02-17 |  | Mustdie | 8h |  |
| 1313 | 16.3.3.4 | Тексты, Диалоги, Задания, Отметки на карте, новости, профили персонажей (продумать) | 2d | 2005-02-18 | 2005-02-19 | 1312 |  |  | -42.12d | 0d |  |  | Mustdie | 16h |  |
| 1314 | 16.3.3.5 | **Тестирование** | 1d? | 2005-02-18 | 2005-02-18 | 1311 |  |  | -41.12d | 0d |  |  |  | 8h |  |
| 1315 | 16.3.3.5.1 | Тестирование | 1d | 2005-02-18 | 2005-02-18 |  |  |  | -41.12d | 0d | start no earlier than 2005-02-18 |  |  |  |  |
| 1316 | 16.3.3.5.2 | Проверить расстановку AI нод вокруг дерева | 1d? | 2005-02-18 | 2005-02-18 |  |  |  | -41.12d | 0d |  |  | Partizan | 8h |  |
| 1317 | 16.3.4 | **Сцена 3 - Сумасшедший сталкер** | 2.25d? | 2005-02-18 | 2005-02-21 |  |  |  | -43.12d | 0d |  |  |  | 32h |  |
| 1318 | 16.3.4.1 | Постановка задач | 1d | 2005-02-18 | 2005-02-19 |  |  |  | -41.88d | 0d | finish no earlier than 2005-02-19 |  | Сидорович | 8h |  |

| ID | WBS | Task | Duration | Start | Finish | Total slack | Free slack | Constraint | Resources | Work |
| --- | --- | --- | --- | --- | --- | --- | --- | --- | --- | --- |
| 1319 | 16.3.4.2 | **Реализация** | 1d? | 2005-02-21 | 2005-02-21 | -43.12d | 0d |  |  | 24h |
| 1320 | 16.3.4.2.1 | Реализация | 1d | 2005-02-21 | 2005-02-21 | -43.12d | 0d | start no earlier than 2005-02-21 | Сидорович | 8h |
| 1321 | 16.3.4.2.2 | Доработка X в движке | 1d? | 2005-02-21 | 2005-02-21 | -43.12d | 0d | start no earlier than 2005-02-21 |  |  |
| 1322 | 16.3.4.2.3 | Расстановка | 1d | 2005-02-21 | 2005-02-21 | -43.12d | 0d | start no earlier than 2005-02-21 | Mustdie | 8h |
| 1323 | 16.3.4.2.4 | Тексты, Диалоги, Задания, Отметки на карте, новости, профили персонажей (продумать) | 1d | 2005-02-21 | 2005-02-21 | -43.12d | 0d | start no earlier than 2005-02-21 | Mustdie | 8h |
| 1324 | 16.3.4.3 | **Тестирование** | 1d? | 2005-02-21 | 2005-02-21 | -43.12d | 0d |  |  |  |
| 1325 | 16.3.4.3.1 | Тестирование | 1d | 2005-02-21 | 2005-02-21 | -43.12d | 0d | start no earlier than 2005-02-21 |  |  |
| 1326 | 16.3.4.3.2 | Проверить расстановку AI нод вокруг дерева | 1d? | 2005-02-21 | 2005-02-21 | -43.12d | 0d | start no earlier than 2005-02-21 |  |  |
| 1327 | 16.3.5 | **Сцена 4 - Бой - Киллеры и Бандтиты** | 1d? | 2005-02-22 | 2005-02-22 | -44.12d | 0d |  |  | 32h |
| 1328 | 16.3.5.1 | Постановка задач | 1d? | 2005-02-22 | 2005-02-22 | -44.12d | 0d | start no earlier than 2005-02-22 | Сидорович | 8h |
| 1329 | 16.3.5.2 | **Реализация** | 1d? | 2005-02-22 | 2005-02-22 | -44.12d | 0d |  |  | 24h |
| 1330 | 16.3.5.2.1 | Реализация | 1d | 2005-02-22 | 2005-02-22 | -44.12d | 0d | start no earlier than 2005-02-22 | Сидорович | 8h |
| 1331 | 16.3.5.2.2 | Доработка X в движке | 1d? | 2005-02-22 | 2005-02-22 | -44.12d | 0d | start no earlier than 2005-02-22 |  |  |
| 1332 | 16.3.5.2.3 | Расстановка | 1d? | 2005-02-22 | 2005-02-22 | -44.12d | 0d | start no earlier than 2005-02-22 | Mustdie | 8h |
| 1333 | 16.3.5.2.4 | Тексты, Диалоги, Задания, Отметки на карте, новости, профили персонажей (продумать) | 1d? | 2005-02-22 | 2005-02-22 | -44.12d | 0d | start no earlier than 2005-02-22 | Mustdie | 8h |
| 1334 | 16.3.5.3 | **Тестирование** | 1d? | 2005-02-22 | 2005-02-22 | -44.12d | 0d |  |  |  |
| 1335 | 16.3.5.3.1 | Тестирование | 1d? | 2005-02-22 | 2005-02-22 | -44.12d | 0d | start no earlier than 2005-02-22 |  |  |
| 1336 | 16.3.5.3.2 | Проверить расстановку AI нод вокруг дерева | 1d? | 2005-02-22 | 2005-02-22 | -44.12d | 0d | start no earlier than 2005-02-22 |  |  |
| 1337 | 16.3.6 | **Сцена 5 - Деревня** | 3d? | 2005-02-23 | 2005-02-25 | -47.12d | 0d |  |  | 48h |
| 1338 | 16.3.6.1 | Постановка задач | 1d? | 2005-02-23 | 2005-02-23 | -45.12d | 0d | start no earlier than 2005-02-23 | Сидорович | 8h |
| 1339 | 16.3.6.2 | **Реализация** | 2d? | 2005-02-24 | 2005-02-25 | -47.12d | 0d |  |  | 40h |
| 1340 | 16.3.6.2.1 | Реализация | 2d | 2005-02-24 | 2005-02-25 | -47.12d | 0d | start no earlier than 2005-02-24 | Сидорович | 16h |
| 1341 | 16.3.6.2.2 | Доработка X в движке | 1d? | 2005-02-24 | 2005-02-24 | -46.12d | 0d | start no earlier than 2005-02-24 |  |  |
| 1342 | 16.3.6.2.3 | Расстановка | 2d | 2005-02-24 | 2005-02-25 | -47.12d | 0d | start no earlier than 2005-02-24 | Mustdie | 16h |
| 1343 | 16.3.6.2.4 | Тексты, Диалоги, Задания, Отметки на карте, новости, профили персонажей (продумать) | 1d? | 2005-02-24 | 2005-02-24 | -46.12d | 0d | start no earlier than 2005-02-24 | Mustdie | 8h |

| ID | WBS | Task | Duration | Start | Finish | Predecessors | Total slack | Free slack | Constraint | Deadline | Resources | Work |
| --- | --- | --- | --- | --- | --- | --- | --- | --- | --- | --- | --- | --- |
| 1344 | 16.3.6.3 | **Тестирование** | 1d? | 2005-02-24 | 2005-02-24 |  | -46.12d | 0d |  |  |  |  |
| 1345 | 16.3.6.3.1 | Тестирование | 1d? | 2005-02-24 | 2005-02-24 |  | -46.12d | 0d | start no earlier than 2005-02-24 |  |  |  |
| 1346 | 16.3.6.3.2 | Проверить расстановку AI нод вокруг дерева | 1d? | 2005-02-24 | 2005-02-24 |  | -46.12d | 0d | start no earlier than 2005-02-24 |  |  |  |
| 1354 | 17 | **20_Sarcofag** | 11d? | 2005-03-01 | 2005-03-14 | 1249 | -50d | 0d |  | 2005-04-01 | Маст Дай, Сидорович | 88h |
| 1355 | 17.1 | **LevelDesign** | 11d? | 2005-03-01 | 2005-03-14 |  | -50d | 0d |  | 2005-03-01 |  |  |
| 1356 | 17.1.1 | **Stage 1** | 11d? | 2005-03-01 | 2005-03-14 |  | -50d | 0d |  |  |  |  |
| 1357 | 17.1.1.1 | List of Changes | 2d | 2005-03-01 | 2005-03-03 |  | -50d | 0d |  |  |  |  |
| 1358 | 17.1.1.2 | Changed Geometry | 1d? | 2005-03-03 | 2005-03-04 | 1357 | -50d | 0d |  |  |  |  |
| 1359 | 17.1.1.3 | Check List 1 | 1d? | 2005-03-04 | 2005-03-05 | 1358 | -50d | 0d |  |  |  |  |
| 1360 | 17.1.1.4 | Check List 2 | 1d? | 2005-03-05 | 2005-03-07 | 1359 | -50d | 0d |  |  |  |  |
| 1361 | 17.1.1.5 | Check List 3 | 1d? | 2005-03-07 | 2005-03-08 | 1360 | -50d | 0d |  |  |  |  |
| 1362 | 17.1.1.6 | Check List 4 | 1d? | 2005-03-08 | 2005-03-09 | 1361 | -50d | 0d |  |  |  |  |
| 1363 | 17.1.1.7 | Render Geometry | 1d? | 2005-03-09 | 2005-03-10 | 1362 | -50d | 0d |  |  |  |  |
| 1364 | 17.1.1.8 | Grass | 1d? | 2005-03-10 | 2005-03-11 | 1363 | -50d | 0d |  |  |  |  |
| 1365 | 17.1.1.9 | AI Maps | 1d? | 2005-03-11 | 2005-03-12 | 1364 | -50d | 0d |  |  |  |  |
| 1366 | 17.1.1.10 | Graphs | 1d? | 2005-03-12 | 2005-03-14 | 1365 | -50d | 0d |  |  |  |  |
| 1368 | 17.2 | **GameDesign** | 3d? | 2005-03-01 | 2005-03-04 |  | -42d | 0d |  |  |  |  |
| 1369 | 17.2.1 | **Secrets** | 3d? | 2005-03-01 | 2005-03-04 |  | -42d | 0d |  |  |  |  |
| 1370 | 17.2.1.1 | **Stage 1** | 3d? | 2005-03-01 | 2005-03-04 |  | -42d | 0d |  |  |  |  |
| 1371 | 17.2.1.1.1 | Design | 1d? | 2005-03-01 | 2005-03-02 |  | -42d | 0d |  |  |  |  |
| 1372 | 17.2.1.1.2 | Implementation | 1d? | 2005-03-02 | 2005-03-03 | 1371 | -42d | 0d |  |  |  |  |
| 1373 | 17.2.1.1.3 | Tuning | 1d? | 2005-03-03 | 2005-03-04 | 1372 | -42d | 0d |  |  |  |  |
| 1374 | 17.2.2 | **Smartterrains** | 3d? | 2005-03-01 | 2005-03-04 |  | -42d | 0d |  |  |  |  |
| 1375 | 17.2.2.1 | **Stage 1** | 3d? | 2005-03-01 | 2005-03-04 |  | -42d | 0d |  |  |  |  |
| 1376 | 17.2.2.1.1 | Design | 1d? | 2005-03-01 | 2005-03-02 |  | -42d | 0d |  |  |  |  |
| 1377 | 17.2.2.1.2 | Implementation | 1d? | 2005-03-02 | 2005-03-03 | 1376 | -42d | 0d |  |  |  |  |
| 1378 | 17.2.2.1.3 | Tuning | 1d? | 2005-03-03 | 2005-03-04 | 1377 | -42d | 0d |  |  |  |  |

| ID | WBS | Task | Duration | Start | Finish | Predecessors | Total slack | Free slack |
| --- | --- | --- | --- | --- | --- | --- | --- | --- |
| 1379 | 17.2.3 | **Monsters/Spawns** | 3d? | 2005-03-01 | 2005-03-04 |  | -42d | 0d |
| 1380 | 17.2.3.1 | **Stage 1** | 3d? | 2005-03-01 | 2005-03-04 |  | -42d | 0d |
| 1381 | 17.2.3.1.1 | Design | 1d? | 2005-03-01 | 2005-03-02 |  | -42d | 0d |
| 1382 | 17.2.3.1.2 | Implementation | 1d? | 2005-03-02 | 2005-03-03 | 1381 | -42d | 0d |
| 1383 | 17.2.3.1.3 | Tuning | 1d? | 2005-03-03 | 2005-03-04 | 1382 | -42d | 0d |
| 1384 | 17.2.4 | **Stalkers/Spawns** | 3d? | 2005-03-01 | 2005-03-04 |  | -42d | 0d |
| 1385 | 17.2.4.1 | **Stage 1** | 3d? | 2005-03-01 | 2005-03-04 |  | -42d | 0d |
| 1386 | 17.2.4.1.1 | Design | 1d? | 2005-03-01 | 2005-03-02 |  | -42d | 0d |
| 1387 | 17.2.4.1.2 | Implementation | 1d? | 2005-03-02 | 2005-03-03 | 1386 | -42d | 0d |
| 1388 | 17.2.4.1.3 | Tuning | 1d? | 2005-03-03 | 2005-03-04 | 1387 | -42d | 0d |
| 1389 | 17.2.5 | **Anomalies/Spawns** | 3d? | 2005-03-01 | 2005-03-04 |  | -42d | 0d |
| 1390 | 17.2.5.1 | **Stage 1** | 3d? | 2005-03-01 | 2005-03-04 |  | -42d | 0d |
| 1391 | 17.2.5.1.1 | Design | 1d? | 2005-03-01 | 2005-03-02 |  | -42d | 0d |
| 1392 | 17.2.5.1.2 | Implementation | 1d? | 2005-03-02 | 2005-03-03 | 1391 | -42d | 0d |
| 1393 | 17.2.5.1.3 | Tuning | 1d? | 2005-03-03 | 2005-03-04 | 1392 | -42d | 0d |
| 1394 | 17.2.6 | **Physicks** | 3d? | 2005-03-01 | 2005-03-04 |  | -42d | 0d |
| 1395 | 17.2.6.1 | **Stage 1** | 3d? | 2005-03-01 | 2005-03-04 |  | -42d | 0d |
| 1396 | 17.2.6.1.1 | Design | 1d? | 2005-03-01 | 2005-03-02 |  | -42d | 0d |
| 1397 | 17.2.6.1.2 | Implementation | 1d? | 2005-03-02 | 2005-03-03 | 1396 | -42d | 0d |
| 1398 | 17.2.6.1.3 | Tuning | 1d? | 2005-03-03 | 2005-03-04 | 1397 | -42d | 0d |
| 1400 | 17.3 | **Scripts** | 5d? | 2005-03-01 | 2005-03-07 |  | -44d | 0d |
| 1401 | 17.3.1 | **Script 1** | 5d? | 2005-03-01 | 2005-03-07 |  | -44d | 0d |
| 1402 | 17.3.1.1 | Scenario(text) | 1d? | 2005-03-01 | 2005-03-02 |  | -44d | 0d |
| 1403 | 17.3.1.2 | Постановка задач | 1d? | 2005-03-02 | 2005-03-03 | 1402 | -44d | 0d |
| 1404 | 17.3.1.3 | Implimentation | 1d? | 2005-03-03 | 2005-03-04 | 1403 | -44d | 0d |
| 1405 | 17.3.1.4 | Dilogs/VO/Icons/Objects/Animations | 1d? | 2005-03-04 | 2005-03-05 | 1404 | -44d | 0d |
| 1406 | 17.3.1.5 | Настройка | 1d? | 2005-03-05 | 2005-03-07 | 1405 | -44d | 0d |

| ID | WBS | Task | Duration | Start | Finish | Predecessors | Total slack | Free slack |
| --- | --- | --- | --- | --- | --- | --- | --- | --- |
| 1407 | 17.3.2 | **Script 2** | 5d? | 2005-03-01 | 2005-03-07 |  | -44d | 0d |
| 1408 | 17.3.2.1 | Scenario(text) | 1d? | 2005-03-01 | 2005-03-02 |  | -44d | 0d |
| 1409 | 17.3.2.2 | Постановка задач | 1d? | 2005-03-02 | 2005-03-03 | 1408 | -44d | 0d |
| 1410 | 17.3.2.3 | Implimentation | 1d? | 2005-03-03 | 2005-03-04 | 1409 | -44d | 0d |
| 1411 | 17.3.2.4 | Dilogs/VO/Icons/Objects/Animations | 1d? | 2005-03-04 | 2005-03-05 | 1410 | -44d | 0d |
| 1412 | 17.3.2.5 | Настройка | 1d? | 2005-03-05 | 2005-03-07 | 1411 | -44d | 0d |
| 1413 | 17.3.3 | **Script 3** | 5d? | 2005-03-01 | 2005-03-07 |  | -44d | 0d |
| 1414 | 17.3.3.1 | Scenario(text) | 1d? | 2005-03-01 | 2005-03-02 |  | -44d | 0d |
| 1415 | 17.3.3.2 | Постановка задач | 1d? | 2005-03-02 | 2005-03-03 | 1414 | -44d | 0d |
| 1416 | 17.3.3.3 | Implimentation | 1d? | 2005-03-03 | 2005-03-04 | 1415 | -44d | 0d |
| 1417 | 17.3.3.4 | Dilogs/VO/Icons/Objects/Animations | 1d? | 2005-03-04 | 2005-03-05 | 1416 | -44d | 0d |
| 1418 | 17.3.3.5 | Настройка | 1d? | 2005-03-05 | 2005-03-07 | 1417 | -44d | 0d |
| 1419 | 17.3.4 | **Script 4** | 5d? | 2005-03-01 | 2005-03-07 |  | -44d | 0d |
| 1420 | 17.3.4.1 | Scenario(text) | 1d? | 2005-03-01 | 2005-03-02 |  | -44d | 0d |
| 1421 | 17.3.4.2 | Постановка задач | 1d? | 2005-03-02 | 2005-03-03 | 1420 | -44d | 0d |
| 1422 | 17.3.4.3 | Implimentation | 1d? | 2005-03-03 | 2005-03-04 | 1421 | -44d | 0d |
| 1423 | 17.3.4.4 | Dilogs/VO/Icons/Objects/Animations | 1d? | 2005-03-04 | 2005-03-05 | 1422 | -44d | 0d |
| 1424 | 17.3.4.5 | Настройка | 1d? | 2005-03-05 | 2005-03-07 | 1423 | -44d | 0d |
| 1425 | 17.3.5 | **Script 5** | 5d? | 2005-03-01 | 2005-03-07 |  | -44d | 0d |
| 1426 | 17.3.5.1 | Scenario(text) | 1d? | 2005-03-01 | 2005-03-02 |  | -44d | 0d |
| 1427 | 17.3.5.2 | Постановка задач | 1d? | 2005-03-02 | 2005-03-03 | 1426 | -44d | 0d |
| 1428 | 17.3.5.3 | Implimentation | 1d? | 2005-03-03 | 2005-03-04 | 1427 | -44d | 0d |
| 1429 | 17.3.5.4 | Dilogs/VO/Icons/Objects/Animations | 1d? | 2005-03-04 | 2005-03-05 | 1428 | -44d | 0d |
| 1430 | 17.3.5.5 | Настройка | 1d? | 2005-03-05 | 2005-03-07 | 1429 | -44d | 0d |

| ID | WBS | Task | Duration | Start | Finish | Predecessors | Total slack | Free slack | Deadline | Resources | Work |
| --- | --- | --- | --- | --- | --- | --- | --- | --- | --- | --- | --- |
| 1432 | 18 | **19_Stancia** | 11d? | 2005-03-14 | 2005-03-26 | 1354 | -50d | 0d | 2005-04-29 | Маст Дай, Сидорович | 88h |
| 1433 | 18.1 | **LevelDesign** | 11d? | 2005-03-14 | 2005-03-26 |  | -50d | 0d | 2005-01-27 |  |  |
| 1434 | 18.1.1 | **Stage 1** | 11d? | 2005-03-14 | 2005-03-26 |  | -50d | 0d |  |  |  |
| 1435 | 18.1.1.1 | List of Changes | 2d | 2005-03-14 | 2005-03-16 |  | -50d | 0d |  |  |  |
| 1436 | 18.1.1.2 | Changed Geometry | 1d? | 2005-03-16 | 2005-03-17 | 1435 | -50d | 0d |  |  |  |
| 1437 | 18.1.1.3 | Check List 1 | 1d? | 2005-03-17 | 2005-03-18 | 1436 | -50d | 0d |  |  |  |
| 1438 | 18.1.1.4 | Check List 2 | 1d? | 2005-03-18 | 2005-03-19 | 1437 | -50d | 0d |  |  |  |
| 1439 | 18.1.1.5 | Check List 3 | 1d? | 2005-03-19 | 2005-03-21 | 1438 | -50d | 0d |  |  |  |
| 1440 | 18.1.1.6 | Check List 4 | 1d? | 2005-03-21 | 2005-03-22 | 1439 | -50d | 0d |  |  |  |
| 1441 | 18.1.1.7 | Render Geometry | 1d? | 2005-03-22 | 2005-03-23 | 1440 | -50d | 0d |  |  |  |
| 1442 | 18.1.1.8 | Grass | 1d? | 2005-03-23 | 2005-03-24 | 1441 | -50d | 0d |  |  |  |
| 1443 | 18.1.1.9 | AI Maps | 1d? | 2005-03-24 | 2005-03-25 | 1442 | -50d | 0d |  |  |  |
| 1444 | 18.1.1.10 | Graphs | 1d? | 2005-03-25 | 2005-03-26 | 1443 | -50d | 0d |  |  |  |
| 1446 | 18.2 | **GameDesign** | 3d? | 2005-03-14 | 2005-03-17 |  | 37d |  |  |  |  |
| 1447 | 18.2.1 | **Secrets** | 3d? | 2005-03-14 | 2005-03-17 |  | 37d |  |  |  |  |
| 1448 | 18.2.1.1 | **Stage 1** | 3d? | 2005-03-14 | 2005-03-17 |  | 37d |  |  |  |  |
| 1449 | 18.2.1.1.1 | Design | 1d? | 2005-03-14 | 2005-03-15 |  | 37d | 0d |  |  |  |
| 1450 | 18.2.1.1.2 | Implementation | 1d? | 2005-03-15 | 2005-03-16 | 1449 | 37d | 0d |  |  |  |
| 1451 | 18.2.1.1.3 | Tuning | 1d? | 2005-03-16 | 2005-03-17 | 1450 | 37d |  |  |  |  |
| 1452 | 18.2.2 | **Smartterrains** | 3d? | 2005-03-14 | 2005-03-17 |  | 37d |  |  |  |  |
| 1453 | 18.2.2.1 | **Stage 1** | 3d? | 2005-03-14 | 2005-03-17 |  | 37d |  |  |  |  |
| 1454 | 18.2.2.1.1 | Design | 1d? | 2005-03-14 | 2005-03-15 |  | 37d | 0d |  |  |  |
| 1455 | 18.2.2.1.2 | Implementation | 1d? | 2005-03-15 | 2005-03-16 | 1454 | 37d | 0d |  |  |  |
| 1456 | 18.2.2.1.3 | Tuning | 1d? | 2005-03-16 | 2005-03-17 | 1455 | 37d |  |  |  |  |

| ID | WBS | Task | Duration | Start | Finish | Predecessors | Total slack | Free slack |
| --- | --- | --- | --- | --- | --- | --- | --- | --- |
| 1457 | 18.2.3 | **Monsters/Spawns** | 3d? | 2005-03-14 | 2005-03-17 |  | 37d |  |
| 1458 | 18.2.3.1 | **Stage 1** | 3d? | 2005-03-14 | 2005-03-17 |  | 37d |  |
| 1459 | 18.2.3.1.1 | Design | 1d? | 2005-03-14 | 2005-03-15 |  | 37d | 0d |
| 1460 | 18.2.3.1.2 | Implementation | 1d? | 2005-03-15 | 2005-03-16 | 1459 | 37d | 0d |
| 1461 | 18.2.3.1.3 | Tuning | 1d? | 2005-03-16 | 2005-03-17 | 1460 | 37d |  |
| 1462 | 18.2.4 | **Stalkers/Spawns** | 3d? | 2005-03-14 | 2005-03-17 |  | 37d |  |
| 1463 | 18.2.4.1 | **Stage 1** | 3d? | 2005-03-14 | 2005-03-17 |  | 37d |  |
| 1464 | 18.2.4.1.1 | Design | 1d? | 2005-03-14 | 2005-03-15 |  | 37d | 0d |
| 1465 | 18.2.4.1.2 | Implementation | 1d? | 2005-03-15 | 2005-03-16 | 1464 | 37d | 0d |
| 1466 | 18.2.4.1.3 | Tuning | 1d? | 2005-03-16 | 2005-03-17 | 1465 | 37d |  |
| 1467 | 18.2.5 | **Anomalies/Spawns** | 3d? | 2005-03-14 | 2005-03-17 |  | 37d |  |
| 1468 | 18.2.5.1 | **Stage 1** | 3d? | 2005-03-14 | 2005-03-17 |  | 37d |  |
| 1469 | 18.2.5.1.1 | Design | 1d? | 2005-03-14 | 2005-03-15 |  | 37d | 0d |
| 1470 | 18.2.5.1.2 | Implementation | 1d? | 2005-03-15 | 2005-03-16 | 1469 | 37d | 0d |
| 1471 | 18.2.5.1.3 | Tuning | 1d? | 2005-03-16 | 2005-03-17 | 1470 | 37d |  |
| 1472 | 18.2.6 | **Physicks** | 3d? | 2005-03-14 | 2005-03-17 |  | 37d |  |
| 1473 | 18.2.6.1 | **Stage 1** | 3d? | 2005-03-14 | 2005-03-17 |  | 37d |  |
| 1474 | 18.2.6.1.1 | Design | 1d? | 2005-03-14 | 2005-03-15 |  | 37d | 0d |
| 1475 | 18.2.6.1.2 | Implementation | 1d? | 2005-03-15 | 2005-03-16 | 1474 | 37d | 0d |
| 1476 | 18.2.6.1.3 | Tuning | 1d? | 2005-03-16 | 2005-03-17 | 1475 | 37d |  |
| 1478 | 18.3 | **Scripts** | 5d? | 2005-03-14 | 2005-03-19 |  | 35d |  |
| 1479 | 18.3.1 | **Script 1** | 5d? | 2005-03-14 | 2005-03-19 |  | 35d |  |
| 1480 | 18.3.1.1 | Scenario(text) | 1d? | 2005-03-14 | 2005-03-15 |  | 35d | 0d |
| 1481 | 18.3.1.2 | Постановка задач | 1d? | 2005-03-15 | 2005-03-16 | 1480 | 35d | 0d |
| 1482 | 18.3.1.3 | Implimentation | 1d? | 2005-03-16 | 2005-03-17 | 1481 | 35d | 0d |
| 1483 | 18.3.1.4 | Dilogs/VO/Icons/Objects/Animations | 1d? | 2005-03-17 | 2005-03-18 | 1482 | 35d | 0d |
| 1484 | 18.3.1.5 | Настройка | 1d? | 2005-03-18 | 2005-03-19 | 1483 | 35d |  |

| ID | WBS | Task | Duration | Start | Finish | Predecessors | Total slack | Free slack |
| --- | --- | --- | --- | --- | --- | --- | --- | --- |
| 1485 | 18.3.2 | **Script 2** | 5d? | 2005-03-14 | 2005-03-19 |  | 35d |  |
| 1486 | 18.3.2.1 | Scenario(text) | 1d? | 2005-03-14 | 2005-03-15 |  | 35d | 0d |
| 1487 | 18.3.2.2 | Постановка задач | 1d? | 2005-03-15 | 2005-03-16 | 1486 | 35d | 0d |
| 1488 | 18.3.2.3 | Implimentation | 1d? | 2005-03-16 | 2005-03-17 | 1487 | 35d | 0d |
| 1489 | 18.3.2.4 | Dilogs/VO/Icons/Objects/Animations | 1d? | 2005-03-17 | 2005-03-18 | 1488 | 35d | 0d |
| 1490 | 18.3.2.5 | Настройка | 1d? | 2005-03-18 | 2005-03-19 | 1489 | 35d |  |
| 1491 | 18.3.3 | **Script 3** | 5d? | 2005-03-14 | 2005-03-19 |  | 35d |  |
| 1492 | 18.3.3.1 | Scenario(text) | 1d? | 2005-03-14 | 2005-03-15 |  | 35d | 0d |
| 1493 | 18.3.3.2 | Постановка задач | 1d? | 2005-03-15 | 2005-03-16 | 1492 | 35d | 0d |
| 1494 | 18.3.3.3 | Implimentation | 1d? | 2005-03-16 | 2005-03-17 | 1493 | 35d | 0d |
| 1495 | 18.3.3.4 | Dilogs/VO/Icons/Objects/Animations | 1d? | 2005-03-17 | 2005-03-18 | 1494 | 35d | 0d |
| 1496 | 18.3.3.5 | Настройка | 1d? | 2005-03-18 | 2005-03-19 | 1495 | 35d |  |
| 1497 | 18.3.4 | **Script 4** | 5d? | 2005-03-14 | 2005-03-19 |  | 35d |  |
| 1498 | 18.3.4.1 | Scenario(text) | 1d? | 2005-03-14 | 2005-03-15 |  | 35d | 0d |
| 1499 | 18.3.4.2 | Постановка задач | 1d? | 2005-03-15 | 2005-03-16 | 1498 | 35d | 0d |
| 1500 | 18.3.4.3 | Implimentation | 1d? | 2005-03-16 | 2005-03-17 | 1499 | 35d | 0d |
| 1501 | 18.3.4.4 | Dilogs/VO/Icons/Objects/Animations | 1d? | 2005-03-17 | 2005-03-18 | 1500 | 35d | 0d |
| 1502 | 18.3.4.5 | Настройка | 1d? | 2005-03-18 | 2005-03-19 | 1501 | 35d |  |
| 1503 | 18.3.5 | **Script 5** | 5d? | 2005-03-14 | 2005-03-19 |  | 35d |  |
| 1504 | 18.3.5.1 | Scenario(text) | 1d? | 2005-03-14 | 2005-03-15 |  | 35d | 0d |
| 1505 | 18.3.5.2 | Постановка задач | 1d? | 2005-03-15 | 2005-03-16 | 1504 | 35d | 0d |
| 1506 | 18.3.5.3 | Implimentation | 1d? | 2005-03-16 | 2005-03-17 | 1505 | 35d | 0d |
| 1507 | 18.3.5.4 | Dilogs/VO/Icons/Objects/Animations | 1d? | 2005-03-17 | 2005-03-18 | 1506 | 35d | 0d |
| 1508 | 18.3.5.5 | Настройка | 1d? | 2005-03-18 | 2005-03-19 | 1507 | 35d |  |

| ID | WBS | Task | Duration | Start | Finish | Predecessors | Total slack | Free slack | Constraint | Deadline | Resources | Work |
| --- | --- | --- | --- | --- | --- | --- | --- | --- | --- | --- | --- | --- |
| 1513 | 19 | **15_Radar** | 16.88d? | 2005-01-24 | 2005-02-11 |  | 1.88d | 0d |  | 2005-03-01 | Лестат, Чугай | 467h |
| 1514 | 19.1 | **LevelDesign** | 11d? | 2005-01-24 | 2005-02-04 |  | 1.88d |  |  | 2005-02-07 |  |  |
| 1515 | 19.1.1 | **Stage 1** | 11d? | 2005-01-24 | 2005-02-04 |  | 1.88d |  |  |  |  |  |
| 1516 | 19.1.1.1 | List of Changes | 2d | 2005-01-24 | 2005-01-25 |  | 1.88d | 0d |  |  |  |  |
| 1517 | 19.1.1.2 | Changed Geometry | 1d? | 2005-01-26 | 2005-01-26 | 1516 | 1.88d | 0d |  |  |  |  |
| 1518 | 19.1.1.3 | Check List 1 | 1d? | 2005-01-27 | 2005-01-27 | 1517 | 1.88d | 0d |  |  |  |  |
| 1519 | 19.1.1.4 | Check List 2 | 1d? | 2005-01-28 | 2005-01-28 | 1518 | 1.88d | 0d |  |  |  |  |
| 1520 | 19.1.1.5 | Check List 3 | 1d? | 2005-01-29 | 2005-01-29 | 1519 | 1.88d | 0d |  |  |  |  |
| 1521 | 19.1.1.6 | Check List 4 | 1d? | 2005-01-31 | 2005-01-31 | 1520 | 1.88d | 0d |  |  |  |  |
| 1522 | 19.1.1.7 | Render Geometry | 1d? | 2005-02-01 | 2005-02-01 | 1521 | 1.88d | 0d |  |  |  |  |
| 1523 | 19.1.1.8 | Grass | 1d? | 2005-02-02 | 2005-02-02 | 1522 | 1.88d | 0d |  |  |  |  |
| 1524 | 19.1.1.9 | AI Maps | 1d? | 2005-02-03 | 2005-02-03 | 1523 | 1.88d | 0d |  |  |  |  |
| 1525 | 19.1.1.10 | Graphs | 1d? | 2005-02-04 | 2005-02-04 | 1524 | 1.88d |  |  |  |  |  |
| 1527 | 19.2 | **GameDesign** | 16.88d? | 2005-01-24 | 2005-02-11 |  | 4d |  |  |  | Чугай, Лестат | 293h |
| 1528 | 19.2.1 | **Secrets** | 6.88d? | 2005-01-24 | 2005-01-31 |  | 14d |  |  |  |  | 31h |
| 1529 | 19.2.1.1 | **Stage 1** | 6.88d? | 2005-01-24 | 2005-01-31 |  | 14d |  |  |  |  | 31h |
| 1530 | 19.2.1.1.1 | Design | 1.88d? | 2005-01-24 | 2005-01-25 |  | 17d | 0d | finish no earlier than 2005-01-25 |  | LeSTAT | 15h |
| 1531 | 19.2.1.1.2 | Implementation | 1d? | 2005-01-25 | 2005-01-26 | 1530 | 17d | 3d | finish no earlier than 2005-01-25 |  | LeSTAT | 8h |
| 1532 | 19.2.1.1.3 | Tuning | 1d? | 2005-01-29 | 2005-01-31 | 1531 | 14d |  | finish no earlier than 2005-01-31 |  | LeSTAT | 8h |
| 1533 | 19.2.2 | **Smartterrains** | 16.88d? | 2005-01-24 | 2005-02-11 |  | 4d |  |  |  |  | 24h |
| 1534 | 19.2.2.1 | **Stage 1** | 16.88d? | 2005-01-24 | 2005-02-11 |  | 4d |  |  |  |  | 24h |
| 1535 | 19.2.2.1.1 | Design | 1d? | 2005-01-24 | 2005-01-24 |  | 17.88d | 10.88d |  |  | LeSTAT | 8h |
| 1536 | 19.2.2.1.2 | Implementation | 1d? | 2005-02-05 | 2005-02-07 | 1535 | 7d | 3d | finish no earlier than 2005-02-07 |  | LeSTAT | 8h |
| 1537 | 19.2.2.1.3 | Tuning | 1d? | 2005-02-10 | 2005-02-11 | 1536 | 4d |  | finish no earlier than 2005-02-11 |  | LeSTAT | 8h |

| ID | WBS | Task | Duration | Start | Finish | Predecessors | Total slack | Free slack | Constraint | Resources | Work |
| --- | --- | --- | --- | --- | --- | --- | --- | --- | --- | --- | --- |
| 1538 | 19.2.3 | **Monsters/Spawns** | 3d? | 2005-01-24 | 2005-01-26 |  | 17.88d |  |  |  | 24h |
| 1539 | 19.2.3.1 | **Stage 1** | 3d? | 2005-01-24 | 2005-01-26 |  | 17.88d |  |  |  | 24h |
| 1540 | 19.2.3.1.1 | Design | 1d? | 2005-01-24 | 2005-01-24 |  | 17.88d | 0d |  | LeSTAT | 8h |
| 1541 | 19.2.3.1.2 | Implementation | 1d? | 2005-01-25 | 2005-01-25 | 1540 | 17.88d | 0d |  | LeSTAT | 8h |
| 1542 | 19.2.3.1.3 | Tuning | 1d? | 2005-01-26 | 2005-01-26 | 1541 | 17.88d |  |  | LeSTAT | 8h |
| 1543 | 19.2.4 | **Stalkers/Spawns** | 7.88d? | 2005-02-03 | 2005-02-11 |  | 4d |  |  |  | 24h |
| 1544 | 19.2.4.1 | **Stage 1** | 7.88d? | 2005-02-03 | 2005-02-11 |  | 4d |  |  |  | 24h |
| 1545 | 19.2.4.1.1 | Design | 1d? | 2005-02-03 | 2005-02-03 |  | 8.88d | 1.88d | start no earlier than 2005-02-03 | LeSTAT | 8h |
| 1546 | 19.2.4.1.2 | Implementation | 1d? | 2005-02-05 | 2005-02-07 | 1545 | 7d | 3d | finish no earlier than 2005-02-07 | LeSTAT | 8h |
| 1547 | 19.2.4.1.3 | Tuning | 1d? | 2005-02-10 | 2005-02-11 | 1546 | 4d |  | finish no earlier than 2005-02-11 | LeSTAT | 8h |
| 1548 | 19.2.5 | **Anomalies/Spawns** | 3d? | 2005-02-04 | 2005-02-07 |  | 7.88d |  |  |  | 24h |
| 1549 | 19.2.5.1 | **Stage 1** | 3d? | 2005-02-04 | 2005-02-07 |  | 7.88d |  |  |  | 24h |
| 1550 | 19.2.5.1.1 | Design | 1d? | 2005-02-04 | 2005-02-04 |  | 7.88d | 0d | start no earlier than 2005-02-04 | LeSTAT | 8h |
| 1551 | 19.2.5.1.2 | Implementation | 1d? | 2005-02-05 | 2005-02-05 | 1550 | 7.88d | 0d |  | LeSTAT | 8h |
| 1552 | 19.2.5.1.3 | Tuning | 1d? | 2005-02-07 | 2005-02-07 | 1551 | 7.88d |  |  | LeSTAT | 8h |
| 1553 | 19.2.6 | **Physicks** | 7.88d? | 2005-02-03 | 2005-02-11 |  | 4d |  |  |  | 31h |
| 1554 | 19.2.6.1 | **Stage 1** | 7.88d? | 2005-02-03 | 2005-02-11 |  | 4d |  |  |  | 31h |
| 1555 | 19.2.6.1.1 | Design | 1.88d? | 2005-02-03 | 2005-02-04 |  | 8d | 1d | finish no earlier than 2005-02-04 | LeSTAT | 15h |
| 1556 | 19.2.6.1.2 | Implementation | 1d? | 2005-02-05 | 2005-02-07 | 1555 | 7d | 3d | finish no earlier than 2005-02-07 | LeSTAT | 8h |
| 1557 | 19.2.6.1.3 | Tuning | 1d? | 2005-02-10 | 2005-02-11 | 1556 | 4d |  | finish no earlier than 2005-02-11 | LeSTAT | 8h |
| 1559 | 19.3 | **Scripts** | 8.88d? | 2005-01-24 | 2005-02-02 |  | 12d |  |  |  | 39h |
| 1560 | 19.3.1 | **Script 1** | 8.88d? | 2005-01-24 | 2005-02-02 |  | 12d |  |  |  | 39h |
| 1561 | 19.3.1.1 | Scenario(text) | 4.88d? | 2005-01-24 | 2005-01-28 |  | 12d | 0d | finish no earlier than 2005-01-28 | Чугай, Лестат | 39h |
| 1562 | 19.3.1.2 | Постановка задач | 1d? | 2005-01-28 | 2005-01-29 | 1561 | 12d | 0d |  |  |  |
| 1563 | 19.3.1.3 | Implimentation | 1d? | 2005-01-29 | 2005-01-31 | 1562 | 12d | 0d |  |  |  |
| 1564 | 19.3.1.4 | Dilogs/VO/Icons/Objects/Animations | 1d? | 2005-01-31 | 2005-02-01 | 1563 | 12d | 0d |  |  |  |
| 1565 | 19.3.1.5 | Настройка | 1d? | 2005-02-01 | 2005-02-02 | 1564 | 12d |  |  |  |  |

| ID | WBS | Task | Duration | Start | Finish | Predecessors | Total slack | Free slack |
| --- | --- | --- | --- | --- | --- | --- | --- | --- |
| 1566 | 19.3.2 | **Script 2** | 5d? | 2005-01-24 | 2005-01-28 |  | 15.88d |  |
| 1567 | 19.3.2.1 | Scenario(text) | 1d? | 2005-01-24 | 2005-01-24 |  | 15.88d | 0d |
| 1568 | 19.3.2.2 | Постановка задач | 1d? | 2005-01-25 | 2005-01-25 | 1567 | 15.88d | 0d |
| 1569 | 19.3.2.3 | Implimentation | 1d? | 2005-01-26 | 2005-01-26 | 1568 | 15.88d | 0d |
| 1570 | 19.3.2.4 | Dilogs/VO/Icons/Objects/Animations | 1d? | 2005-01-27 | 2005-01-27 | 1569 | 15.88d | 0d |
| 1571 | 19.3.2.5 | Настройка | 1d? | 2005-01-28 | 2005-01-28 | 1570 | 15.88d |  |
| 1572 | 19.3.3 | **Script 3** | 5d? | 2005-01-24 | 2005-01-28 |  | 15.88d |  |
| 1573 | 19.3.3.1 | Scenario(text) | 1d? | 2005-01-24 | 2005-01-24 |  | 15.88d | 0d |
| 1574 | 19.3.3.2 | Постановка задач | 1d? | 2005-01-25 | 2005-01-25 | 1573 | 15.88d | 0d |
| 1575 | 19.3.3.3 | Implimentation | 1d? | 2005-01-26 | 2005-01-26 | 1574 | 15.88d | 0d |
| 1576 | 19.3.3.4 | Dilogs/VO/Icons/Objects/Animations | 1d? | 2005-01-27 | 2005-01-27 | 1575 | 15.88d | 0d |
| 1577 | 19.3.3.5 | Настройка | 1d? | 2005-01-28 | 2005-01-28 | 1576 | 15.88d |  |
| 1578 | 19.3.4 | **Script 4** | 5d? | 2005-01-24 | 2005-01-28 |  | 15.88d |  |
| 1579 | 19.3.4.1 | Scenario(text) | 1d? | 2005-01-24 | 2005-01-24 |  | 15.88d | 0d |
| 1580 | 19.3.4.2 | Постановка задач | 1d? | 2005-01-25 | 2005-01-25 | 1579 | 15.88d | 0d |
| 1581 | 19.3.4.3 | Implimentation | 1d? | 2005-01-26 | 2005-01-26 | 1580 | 15.88d | 0d |
| 1582 | 19.3.4.4 | Dilogs/VO/Icons/Objects/Animations | 1d? | 2005-01-27 | 2005-01-27 | 1581 | 15.88d | 0d |
| 1583 | 19.3.4.5 | Настройка | 1d? | 2005-01-28 | 2005-01-28 | 1582 | 15.88d |  |
| 1584 | 19.3.5 | **Script 5** | 5d? | 2005-01-24 | 2005-01-28 |  | 15.88d |  |
| 1585 | 19.3.5.1 | Scenario(text) | 1d? | 2005-01-24 | 2005-01-24 |  | 15.88d | 0d |
| 1586 | 19.3.5.2 | Постановка задач | 1d? | 2005-01-25 | 2005-01-25 | 1585 | 15.88d | 0d |
| 1587 | 19.3.5.3 | Implimentation | 1d? | 2005-01-26 | 2005-01-26 | 1586 | 15.88d | 0d |
| 1588 | 19.3.5.4 | Dilogs/VO/Icons/Objects/Animations | 1d? | 2005-01-27 | 2005-01-27 | 1587 | 15.88d | 0d |
| 1589 | 19.3.5.5 | Настройка | 1d? | 2005-01-28 | 2005-01-28 | 1588 | 15.88d |  |

| ID | WBS | Task | Duration | Start | Finish | Predecessors | Total slack | Free slack | Deadline | Resources | Work |
| --- | --- | --- | --- | --- | --- | --- | --- | --- | --- | --- | --- |
| 1592 | 20 | **12_Yantar_Underground** | 11d? | 2005-02-11 | 2005-02-24 | 1513 | 4d | 0d | 2005-03-15 | Лестат, Чугай | 88h |
| 1593 | 20.1 | **LevelDesign** | 11d? | 2005-02-11 | 2005-02-24 |  | 4d |  | 2005-03-01 |  |  |
| 1594 | 20.1.1 | **Stage 1** | 11d? | 2005-02-11 | 2005-02-24 |  | 4d |  |  |  |  |
| 1595 | 20.1.1.1 | List of Changes | 2d | 2005-02-11 | 2005-02-14 |  | 4d | 0d |  |  |  |
| 1596 | 20.1.1.2 | Changed Geometry | 1d? | 2005-02-14 | 2005-02-15 | 1595 | 4d | 0d |  |  |  |
| 1597 | 20.1.1.3 | Check List 1 | 1d? | 2005-02-15 | 2005-02-16 | 1596 | 4d | 0d |  |  |  |
| 1598 | 20.1.1.4 | Check List 2 | 1d? | 2005-02-16 | 2005-02-17 | 1597 | 4d | 0d |  |  |  |
| 1599 | 20.1.1.5 | Check List 3 | 1d? | 2005-02-17 | 2005-02-18 | 1598 | 4d | 0d |  |  |  |
| 1600 | 20.1.1.6 | Check List 4 | 1d? | 2005-02-18 | 2005-02-19 | 1599 | 4d | 0d |  |  |  |
| 1601 | 20.1.1.7 | Render Geometry | 1d? | 2005-02-19 | 2005-02-21 | 1600 | 4d | 0d |  |  |  |
| 1602 | 20.1.1.8 | Grass | 1d? | 2005-02-21 | 2005-02-22 | 1601 | 4d | 0d |  |  |  |
| 1603 | 20.1.1.9 | AI Maps | 1d? | 2005-02-22 | 2005-02-23 | 1602 | 4d | 0d |  |  |  |
| 1604 | 20.1.1.10 | Graphs | 1d? | 2005-02-23 | 2005-02-24 | 1603 | 4d |  |  |  |  |
| 1606 | 20.2 | **GameDesign** | 3d? | 2005-02-11 | 2005-02-15 |  | 13d |  |  |  |  |
| 1607 | 20.2.1 | **Secrets** | 3d? | 2005-02-11 | 2005-02-15 |  | 13d |  |  |  |  |
| 1608 | 20.2.1.1 | **Stage 1** | 3d? | 2005-02-11 | 2005-02-15 |  | 13d |  |  |  |  |
| 1609 | 20.2.1.1.1 | Design | 1d? | 2005-02-11 | 2005-02-12 |  | 13d | 0d |  |  |  |
| 1610 | 20.2.1.1.2 | Implementation | 1d? | 2005-02-12 | 2005-02-14 | 1609 | 13d | 0d |  |  |  |
| 1611 | 20.2.1.1.3 | Tuning | 1d? | 2005-02-14 | 2005-02-15 | 1610 | 13d |  |  |  |  |
| 1612 | 20.2.2 | **Smartterrains** | 3d? | 2005-02-11 | 2005-02-15 |  | 13d |  |  |  |  |
| 1613 | 20.2.2.1 | **Stage 1** | 3d? | 2005-02-11 | 2005-02-15 |  | 13d |  |  |  |  |
| 1614 | 20.2.2.1.1 | Design | 1d? | 2005-02-11 | 2005-02-12 |  | 13d | 0d |  |  |  |
| 1615 | 20.2.2.1.2 | Implementation | 1d? | 2005-02-12 | 2005-02-14 | 1614 | 13d | 0d |  |  |  |
| 1616 | 20.2.2.1.3 | Tuning | 1d? | 2005-02-14 | 2005-02-15 | 1615 | 13d |  |  |  |  |

| ID | WBS | Task | Duration | Start | Finish | Predecessors | Total slack | Free slack |
| --- | --- | --- | --- | --- | --- | --- | --- | --- |
| 1617 | 20.2.3 | **Monsters/Spawns** | 3d? | 2005-02-11 | 2005-02-15 |  | 13d |  |
| 1618 | 20.2.3.1 | **Stage 1** | 3d? | 2005-02-11 | 2005-02-15 |  | 13d |  |
| 1619 | 20.2.3.1.1 | Design | 1d? | 2005-02-11 | 2005-02-12 |  | 13d | 0d |
| 1620 | 20.2.3.1.2 | Implementation | 1d? | 2005-02-12 | 2005-02-14 | 1619 | 13d | 0d |
| 1621 | 20.2.3.1.3 | Tuning | 1d? | 2005-02-14 | 2005-02-15 | 1620 | 13d |  |
| 1622 | 20.2.4 | **Stalkers/Spawns** | 3d? | 2005-02-11 | 2005-02-15 |  | 13d |  |
| 1623 | 20.2.4.1 | **Stage 1** | 3d? | 2005-02-11 | 2005-02-15 |  | 13d |  |
| 1624 | 20.2.4.1.1 | Design | 1d? | 2005-02-11 | 2005-02-12 |  | 13d | 0d |
| 1625 | 20.2.4.1.2 | Implementation | 1d? | 2005-02-12 | 2005-02-14 | 1624 | 13d | 0d |
| 1626 | 20.2.4.1.3 | Tuning | 1d? | 2005-02-14 | 2005-02-15 | 1625 | 13d |  |
| 1627 | 20.2.5 | **Anomalies/Spawns** | 3d? | 2005-02-11 | 2005-02-15 |  | 13d |  |
| 1628 | 20.2.5.1 | **Stage 1** | 3d? | 2005-02-11 | 2005-02-15 |  | 13d |  |
| 1629 | 20.2.5.1.1 | Design | 1d? | 2005-02-11 | 2005-02-12 |  | 13d | 0d |
| 1630 | 20.2.5.1.2 | Implementation | 1d? | 2005-02-12 | 2005-02-14 | 1629 | 13d | 0d |
| 1631 | 20.2.5.1.3 | Tuning | 1d? | 2005-02-14 | 2005-02-15 | 1630 | 13d |  |
| 1632 | 20.2.6 | **Physicks** | 3d? | 2005-02-11 | 2005-02-15 |  | 13d |  |
| 1633 | 20.2.6.1 | **Stage 1** | 3d? | 2005-02-11 | 2005-02-15 |  | 13d |  |
| 1634 | 20.2.6.1.1 | Design | 1d? | 2005-02-11 | 2005-02-12 |  | 13d | 0d |
| 1635 | 20.2.6.1.2 | Implementation | 1d? | 2005-02-12 | 2005-02-14 | 1634 | 13d | 0d |
| 1636 | 20.2.6.1.3 | Tuning | 1d? | 2005-02-14 | 2005-02-15 | 1635 | 13d |  |
| 1638 | 20.3 | **Scripts** | 5d? | 2005-02-11 | 2005-02-17 |  | 11d |  |
| 1639 | 20.3.1 | **Script 1** | 5d? | 2005-02-11 | 2005-02-17 |  | 11d |  |
| 1640 | 20.3.1.1 | Scenario(text) | 1d? | 2005-02-11 | 2005-02-12 |  | 11d | 0d |
| 1641 | 20.3.1.2 | Постановка задач | 1d? | 2005-02-12 | 2005-02-14 | 1640 | 11d | 0d |
| 1642 | 20.3.1.3 | Implimentation | 1d? | 2005-02-14 | 2005-02-15 | 1641 | 11d | 0d |
| 1643 | 20.3.1.4 | Dilogs/VO/Icons/Objects/Animations | 1d? | 2005-02-15 | 2005-02-16 | 1642 | 11d | 0d |
| 1644 | 20.3.1.5 | Настройка | 1d? | 2005-02-16 | 2005-02-17 | 1643 | 11d |  |

| ID | WBS | Task | Duration | Start | Finish | Predecessors | Total slack | Free slack |
| --- | --- | --- | --- | --- | --- | --- | --- | --- |
| 1645 | 20.3.2 | **Script 2** | 5d? | 2005-02-11 | 2005-02-17 |  | 11d |  |
| 1646 | 20.3.2.1 | Scenario(text) | 1d? | 2005-02-11 | 2005-02-12 |  | 11d | 0d |
| 1647 | 20.3.2.2 | Постановка задач | 1d? | 2005-02-12 | 2005-02-14 | 1646 | 11d | 0d |
| 1648 | 20.3.2.3 | Implimentation | 1d? | 2005-02-14 | 2005-02-15 | 1647 | 11d | 0d |
| 1649 | 20.3.2.4 | Dilogs/VO/Icons/Objects/Animations | 1d? | 2005-02-15 | 2005-02-16 | 1648 | 11d | 0d |
| 1650 | 20.3.2.5 | Настройка | 1d? | 2005-02-16 | 2005-02-17 | 1649 | 11d |  |
| 1651 | 20.3.3 | **Script 3** | 5d? | 2005-02-11 | 2005-02-17 |  | 11d |  |
| 1652 | 20.3.3.1 | Scenario(text) | 1d? | 2005-02-11 | 2005-02-12 |  | 11d | 0d |
| 1653 | 20.3.3.2 | Постановка задач | 1d? | 2005-02-12 | 2005-02-14 | 1652 | 11d | 0d |
| 1654 | 20.3.3.3 | Implimentation | 1d? | 2005-02-14 | 2005-02-15 | 1653 | 11d | 0d |
| 1655 | 20.3.3.4 | Dilogs/VO/Icons/Objects/Animations | 1d? | 2005-02-15 | 2005-02-16 | 1654 | 11d | 0d |
| 1656 | 20.3.3.5 | Настройка | 1d? | 2005-02-16 | 2005-02-17 | 1655 | 11d |  |
| 1657 | 20.3.4 | **Script 4** | 5d? | 2005-02-11 | 2005-02-17 |  | 11d |  |
| 1658 | 20.3.4.1 | Scenario(text) | 1d? | 2005-02-11 | 2005-02-12 |  | 11d | 0d |
| 1659 | 20.3.4.2 | Постановка задач | 1d? | 2005-02-12 | 2005-02-14 | 1658 | 11d | 0d |
| 1660 | 20.3.4.3 | Implimentation | 1d? | 2005-02-14 | 2005-02-15 | 1659 | 11d | 0d |
| 1661 | 20.3.4.4 | Dilogs/VO/Icons/Objects/Animations | 1d? | 2005-02-15 | 2005-02-16 | 1660 | 11d | 0d |
| 1662 | 20.3.4.5 | Настройка | 1d? | 2005-02-16 | 2005-02-17 | 1661 | 11d |  |
| 1663 | 20.3.5 | **Script 5** | 5d? | 2005-02-11 | 2005-02-17 |  | 11d |  |
| 1664 | 20.3.5.1 | Scenario(text) | 1d? | 2005-02-11 | 2005-02-12 |  | 11d | 0d |
| 1665 | 20.3.5.2 | Постановка задач | 1d? | 2005-02-12 | 2005-02-14 | 1664 | 11d | 0d |
| 1666 | 20.3.5.3 | Implimentation | 1d? | 2005-02-14 | 2005-02-15 | 1665 | 11d | 0d |
| 1667 | 20.3.5.4 | Dilogs/VO/Icons/Objects/Animations | 1d? | 2005-02-15 | 2005-02-16 | 1666 | 11d | 0d |
| 1668 | 20.3.5.5 | Настройка | 1d? | 2005-02-16 | 2005-02-17 | 1667 | 11d |  |

| ID | WBS | Task | Duration | Start | Finish | Predecessors | Total slack | Free slack | Deadline | Resources | Work |
| --- | --- | --- | --- | --- | --- | --- | --- | --- | --- | --- | --- |
| 1671 | 21 | **14_Swamp** | 11d? | 2005-02-24 | 2005-03-09 | 1592 | 5d |  | 2005-04-15 | Лестат, Чугай | 88h |
| 1672 | 21.1 | **LevelDesign** | 11d? | 2005-02-24 | 2005-03-09 |  | 5d |  | 2005-03-15 |  |  |
| 1673 | 21.1.1 | **Stage 1** | 11d? | 2005-02-24 | 2005-03-09 |  | 5d |  |  |  |  |
| 1674 | 21.1.1.1 | List of Changes | 2d | 2005-02-24 | 2005-02-26 |  | 5d | 0d |  |  |  |
| 1675 | 21.1.1.2 | Changed Geometry | 1d? | 2005-02-26 | 2005-02-28 | 1674 | 5d | 0d |  |  |  |
| 1676 | 21.1.1.3 | Check List 1 | 1d? | 2005-02-28 | 2005-03-01 | 1675 | 5d | 0d |  |  |  |
| 1677 | 21.1.1.4 | Check List 2 | 1d? | 2005-03-01 | 2005-03-02 | 1676 | 5d | 0d |  |  |  |
| 1678 | 21.1.1.5 | Check List 3 | 1d? | 2005-03-02 | 2005-03-03 | 1677 | 5d | 0d |  |  |  |
| 1679 | 21.1.1.6 | Check List 4 | 1d? | 2005-03-03 | 2005-03-04 | 1678 | 5d | 0d |  |  |  |
| 1680 | 21.1.1.7 | Render Geometry | 1d? | 2005-03-04 | 2005-03-05 | 1679 | 5d | 0d |  |  |  |
| 1681 | 21.1.1.8 | Grass | 1d? | 2005-03-05 | 2005-03-07 | 1680 | 5d | 0d |  |  |  |
| 1682 | 21.1.1.9 | AI Maps | 1d? | 2005-03-07 | 2005-03-08 | 1681 | 5d | 0d |  |  |  |
| 1683 | 21.1.1.10 | Graphs | 1d? | 2005-03-08 | 2005-03-09 | 1682 | 5d |  |  |  |  |
| 1685 | 21.2 | **GameDesign** | 3d? | 2005-02-24 | 2005-02-28 |  | 40d |  |  |  |  |
| 1686 | 21.2.1 | **Secrets** | 3d? | 2005-02-24 | 2005-02-28 |  | 40d |  |  |  |  |
| 1687 | 21.2.1.1 | **Stage 1** | 3d? | 2005-02-24 | 2005-02-28 |  | 40d |  |  |  |  |
| 1688 | 21.2.1.1.1 | Design | 1d? | 2005-02-24 | 2005-02-25 |  | 40d | 0d |  |  |  |
| 1689 | 21.2.1.1.2 | Implementation | 1d? | 2005-02-25 | 2005-02-26 | 1688 | 40d | 0d |  |  |  |
| 1690 | 21.2.1.1.3 | Tuning | 1d? | 2005-02-26 | 2005-02-28 | 1689 | 40d |  |  |  |  |
| 1691 | 21.2.2 | **Smartterrains** | 3d? | 2005-02-24 | 2005-02-28 |  | 40d |  |  |  |  |
| 1692 | 21.2.2.1 | **Stage 1** | 3d? | 2005-02-24 | 2005-02-28 |  | 40d |  |  |  |  |
| 1693 | 21.2.2.1.1 | Design | 1d? | 2005-02-24 | 2005-02-25 |  | 40d | 0d |  |  |  |
| 1694 | 21.2.2.1.2 | Implementation | 1d? | 2005-02-25 | 2005-02-26 | 1693 | 40d | 0d |  |  |  |
| 1695 | 21.2.2.1.3 | Tuning | 1d? | 2005-02-26 | 2005-02-28 | 1694 | 40d |  |  |  |  |

| ID | WBS | Task | Duration | Start | Finish | Predecessors | Total slack | Free slack |
| --- | --- | --- | --- | --- | --- | --- | --- | --- |
| 1696 | 21.2.3 | **Monsters/Spawns** | 3d? | 2005-02-24 | 2005-02-28 |  | 40d |  |
| 1697 | 21.2.3.1 | **Stage 1** | 3d? | 2005-02-24 | 2005-02-28 |  | 40d |  |
| 1698 | 21.2.3.1.1 | Design | 1d? | 2005-02-24 | 2005-02-25 |  | 40d | 0d |
| 1699 | 21.2.3.1.2 | Implementation | 1d? | 2005-02-25 | 2005-02-26 | 1698 | 40d | 0d |
| 1700 | 21.2.3.1.3 | Tuning | 1d? | 2005-02-26 | 2005-02-28 | 1699 | 40d |  |
| 1701 | 21.2.4 | **Stalkers/Spawns** | 3d? | 2005-02-24 | 2005-02-28 |  | 40d |  |
| 1702 | 21.2.4.1 | **Stage 1** | 3d? | 2005-02-24 | 2005-02-28 |  | 40d |  |
| 1703 | 21.2.4.1.1 | Design | 1d? | 2005-02-24 | 2005-02-25 |  | 40d | 0d |
| 1704 | 21.2.4.1.2 | Implementation | 1d? | 2005-02-25 | 2005-02-26 | 1703 | 40d | 0d |
| 1705 | 21.2.4.1.3 | Tuning | 1d? | 2005-02-26 | 2005-02-28 | 1704 | 40d |  |
| 1706 | 21.2.5 | **Anomalies/Spawns** | 3d? | 2005-02-24 | 2005-02-28 |  | 40d |  |
| 1707 | 21.2.5.1 | **Stage 1** | 3d? | 2005-02-24 | 2005-02-28 |  | 40d |  |
| 1708 | 21.2.5.1.1 | Design | 1d? | 2005-02-24 | 2005-02-25 |  | 40d | 0d |
| 1709 | 21.2.5.1.2 | Implementation | 1d? | 2005-02-25 | 2005-02-26 | 1708 | 40d | 0d |
| 1710 | 21.2.5.1.3 | Tuning | 1d? | 2005-02-26 | 2005-02-28 | 1709 | 40d |  |
| 1711 | 21.2.6 | **Physicks** | 3d? | 2005-02-24 | 2005-02-28 |  | 40d |  |
| 1712 | 21.2.6.1 | **Stage 1** | 3d? | 2005-02-24 | 2005-02-28 |  | 40d |  |
| 1713 | 21.2.6.1.1 | Design | 1d? | 2005-02-24 | 2005-02-25 |  | 40d | 0d |
| 1714 | 21.2.6.1.2 | Implementation | 1d? | 2005-02-25 | 2005-02-26 | 1713 | 40d | 0d |
| 1715 | 21.2.6.1.3 | Tuning | 1d? | 2005-02-26 | 2005-02-28 | 1714 | 40d |  |
| 1717 | 21.3 | **Scripts** | 5d? | 2005-02-24 | 2005-03-02 |  | 38d |  |
| 1718 | 21.3.1 | **Script 1** | 5d? | 2005-02-24 | 2005-03-02 |  | 38d |  |
| 1719 | 21.3.1.1 | Scenario(text) | 1d? | 2005-02-24 | 2005-02-25 |  | 38d | 0d |
| 1720 | 21.3.1.2 | Постановка задач | 1d? | 2005-02-25 | 2005-02-26 | 1719 | 38d | 0d |
| 1721 | 21.3.1.3 | Implimentation | 1d? | 2005-02-26 | 2005-02-28 | 1720 | 38d | 0d |
| 1722 | 21.3.1.4 | Dilogs/VO/Icons/Objects/Animations | 1d? | 2005-02-28 | 2005-03-01 | 1721 | 38d | 0d |
| 1723 | 21.3.1.5 | Настройка | 1d? | 2005-03-01 | 2005-03-02 | 1722 | 38d |  |

| ID | WBS | Task | Duration | Start | Finish | Predecessors | Total slack | Free slack |
| --- | --- | --- | --- | --- | --- | --- | --- | --- |
| 1724 | 21.3.2 | **Script 2** | 5d? | 2005-02-24 | 2005-03-02 |  | 38d |  |
| 1725 | 21.3.2.1 | Scenario(text) | 1d? | 2005-02-24 | 2005-02-25 |  | 38d | 0d |
| 1726 | 21.3.2.2 | Постановка задач | 1d? | 2005-02-25 | 2005-02-26 | 1725 | 38d | 0d |
| 1727 | 21.3.2.3 | Implimentation | 1d? | 2005-02-26 | 2005-02-28 | 1726 | 38d | 0d |
| 1728 | 21.3.2.4 | Dilogs/VO/Icons/Objects/Animations | 1d? | 2005-02-28 | 2005-03-01 | 1727 | 38d | 0d |
| 1729 | 21.3.2.5 | Настройка | 1d? | 2005-03-01 | 2005-03-02 | 1728 | 38d |  |
| 1730 | 21.3.3 | **Script 3** | 5d? | 2005-02-24 | 2005-03-02 |  | 38d |  |
| 1731 | 21.3.3.1 | Scenario(text) | 1d? | 2005-02-24 | 2005-02-25 |  | 38d | 0d |
| 1732 | 21.3.3.2 | Постановка задач | 1d? | 2005-02-25 | 2005-02-26 | 1731 | 38d | 0d |
| 1733 | 21.3.3.3 | Implimentation | 1d? | 2005-02-26 | 2005-02-28 | 1732 | 38d | 0d |
| 1734 | 21.3.3.4 | Dilogs/VO/Icons/Objects/Animations | 1d? | 2005-02-28 | 2005-03-01 | 1733 | 38d | 0d |
| 1735 | 21.3.3.5 | Настройка | 1d? | 2005-03-01 | 2005-03-02 | 1734 | 38d |  |
| 1736 | 21.3.4 | **Script 4** | 5d? | 2005-02-24 | 2005-03-02 |  | 38d |  |
| 1737 | 21.3.4.1 | Scenario(text) | 1d? | 2005-02-24 | 2005-02-25 |  | 38d | 0d |
| 1738 | 21.3.4.2 | Постановка задач | 1d? | 2005-02-25 | 2005-02-26 | 1737 | 38d | 0d |
| 1739 | 21.3.4.3 | Implimentation | 1d? | 2005-02-26 | 2005-02-28 | 1738 | 38d | 0d |
| 1740 | 21.3.4.4 | Dilogs/VO/Icons/Objects/Animations | 1d? | 2005-02-28 | 2005-03-01 | 1739 | 38d | 0d |
| 1741 | 21.3.4.5 | Настройка | 1d? | 2005-03-01 | 2005-03-02 | 1740 | 38d |  |
| 1742 | 21.3.5 | **Script 5** | 5d? | 2005-02-24 | 2005-03-02 |  | 38d |  |
| 1743 | 21.3.5.1 | Scenario(text) | 1d? | 2005-02-24 | 2005-02-25 |  | 38d | 0d |
| 1744 | 21.3.5.2 | Постановка задач | 1d? | 2005-02-25 | 2005-02-26 | 1743 | 38d | 0d |
| 1745 | 21.3.5.3 | Implimentation | 1d? | 2005-02-26 | 2005-02-28 | 1744 | 38d | 0d |
| 1746 | 21.3.5.4 | Dilogs/VO/Icons/Objects/Animations | 1d? | 2005-02-28 | 2005-03-01 | 1745 | 38d | 0d |
| 1747 | 21.3.5.5 | Настройка | 1d? | 2005-03-01 | 2005-03-02 | 1746 | 38d |  |

| ID | WBS | Task | Duration | Start | Finish | Predecessors | Total slack | Free slack |
| --- | --- | --- | --- | --- | --- | --- | --- | --- |
| 1762 | 22 | **21_Generators** | 11d? | 2005-01-24 | 2005-02-04 |  | 44d |  |
| 1763 | 22.1 | **LevelDesign** | 11d? | 2005-01-24 | 2005-02-04 |  | 44d |  |
| 1764 | 22.1.1 | **Stage 1** | 11d? | 2005-01-24 | 2005-02-04 |  | 44d |  |
| 1765 | 22.1.1.1 | List of Changes | 2d | 2005-01-24 | 2005-01-25 |  | 44d | 0d |
| 1766 | 22.1.1.2 | Changed Geometry | 1d? | 2005-01-26 | 2005-01-26 | 1765 | 44d | 0d |
| 1767 | 22.1.1.3 | Check List 1 | 1d? | 2005-01-27 | 2005-01-27 | 1766 | 44d | 0d |
| 1768 | 22.1.1.4 | Check List 2 | 1d? | 2005-01-28 | 2005-01-28 | 1767 | 44d | 0d |
| 1769 | 22.1.1.5 | Check List 3 | 1d? | 2005-01-29 | 2005-01-29 | 1768 | 44d | 0d |
| 1770 | 22.1.1.6 | Check List 4 | 1d? | 2005-01-31 | 2005-01-31 | 1769 | 44d | 0d |
| 1771 | 22.1.1.7 | Render Geometry | 1d? | 2005-02-01 | 2005-02-01 | 1770 | 44d | 0d |
| 1772 | 22.1.1.8 | Grass | 1d? | 2005-02-02 | 2005-02-02 | 1771 | 44d | 0d |
| 1773 | 22.1.1.9 | AI Maps | 1d? | 2005-02-03 | 2005-02-03 | 1772 | 44d | 0d |
| 1774 | 22.1.1.10 | Graphs | 1d? | 2005-02-04 | 2005-02-04 | 1773 | 44d |  |
| 1776 | 22.2 | **GameDesign** | 3d? | 2005-01-24 | 2005-01-26 |  | 52d |  |
| 1777 | 22.2.1 | **Secrets** | 3d? | 2005-01-24 | 2005-01-26 |  | 52d |  |
| 1778 | 22.2.1.1 | **Stage 1** | 3d? | 2005-01-24 | 2005-01-26 |  | 52d |  |
| 1779 | 22.2.1.1.1 | Design | 1d? | 2005-01-24 | 2005-01-24 |  | 52d | 0d |
| 1780 | 22.2.1.1.2 | Implementation | 1d? | 2005-01-25 | 2005-01-25 | 1779 | 52d | 0d |
| 1781 | 22.2.1.1.3 | Tuning | 1d? | 2005-01-26 | 2005-01-26 | 1780 | 52d |  |
| 1782 | 22.2.2 | **Smartterrains** | 3d? | 2005-01-24 | 2005-01-26 |  | 52d |  |
| 1783 | 22.2.2.1 | **Stage 1** | 3d? | 2005-01-24 | 2005-01-26 |  | 52d |  |
| 1784 | 22.2.2.1.1 | Design | 1d? | 2005-01-24 | 2005-01-24 |  | 52d | 0d |
| 1785 | 22.2.2.1.2 | Implementation | 1d? | 2005-01-25 | 2005-01-25 | 1784 | 52d | 0d |
| 1786 | 22.2.2.1.3 | Tuning | 1d? | 2005-01-26 | 2005-01-26 | 1785 | 52d |  |

| ID | WBS | Task | Duration | Start | Finish | Predecessors | Total slack | Free slack |
| --- | --- | --- | --- | --- | --- | --- | --- | --- |
| 1787 | 22.2.3 | **Monsters/Spawns** | 3d? | 2005-01-24 | 2005-01-26 |  | 52d |  |
| 1788 | 22.2.3.1 | **Stage 1** | 3d? | 2005-01-24 | 2005-01-26 |  | 52d |  |
| 1789 | 22.2.3.1.1 | Design | 1d? | 2005-01-24 | 2005-01-24 |  | 52d | 0d |
| 1790 | 22.2.3.1.2 | Implementation | 1d? | 2005-01-25 | 2005-01-25 | 1789 | 52d | 0d |
| 1791 | 22.2.3.1.3 | Tuning | 1d? | 2005-01-26 | 2005-01-26 | 1790 | 52d |  |
| 1792 | 22.2.4 | **Stalkers/Spawns** | 3d? | 2005-01-24 | 2005-01-26 |  | 52d |  |
| 1793 | 22.2.4.1 | **Stage 1** | 3d? | 2005-01-24 | 2005-01-26 |  | 52d |  |
| 1794 | 22.2.4.1.1 | Design | 1d? | 2005-01-24 | 2005-01-24 |  | 52d | 0d |
| 1795 | 22.2.4.1.2 | Implementation | 1d? | 2005-01-25 | 2005-01-25 | 1794 | 52d | 0d |
| 1796 | 22.2.4.1.3 | Tuning | 1d? | 2005-01-26 | 2005-01-26 | 1795 | 52d |  |
| 1797 | 22.2.5 | **Anomalies/Spawns** | 3d? | 2005-01-24 | 2005-01-26 |  | 52d |  |
| 1798 | 22.2.5.1 | **Stage 1** | 3d? | 2005-01-24 | 2005-01-26 |  | 52d |  |
| 1799 | 22.2.5.1.1 | Design | 1d? | 2005-01-24 | 2005-01-24 |  | 52d | 0d |
| 1800 | 22.2.5.1.2 | Implementation | 1d? | 2005-01-25 | 2005-01-25 | 1799 | 52d | 0d |
| 1801 | 22.2.5.1.3 | Tuning | 1d? | 2005-01-26 | 2005-01-26 | 1800 | 52d |  |
| 1802 | 22.2.6 | **Physicks** | 3d? | 2005-01-24 | 2005-01-26 |  | 52d |  |
| 1803 | 22.2.6.1 | **Stage 1** | 3d? | 2005-01-24 | 2005-01-26 |  | 52d |  |
| 1804 | 22.2.6.1.1 | Design | 1d? | 2005-01-24 | 2005-01-24 |  | 52d | 0d |
| 1805 | 22.2.6.1.2 | Implementation | 1d? | 2005-01-25 | 2005-01-25 | 1804 | 52d | 0d |
| 1806 | 22.2.6.1.3 | Tuning | 1d? | 2005-01-26 | 2005-01-26 | 1805 | 52d |  |
| 1808 | 22.3 | **Scripts** | 5d? | 2005-01-24 | 2005-01-28 |  | 50d |  |
| 1809 | 22.3.1 | **Script 1** | 5d? | 2005-01-24 | 2005-01-28 |  | 50d |  |
| 1810 | 22.3.1.1 | Scenario(text) | 1d? | 2005-01-24 | 2005-01-24 |  | 50d | 0d |
| 1811 | 22.3.1.2 | Постановка задач | 1d? | 2005-01-25 | 2005-01-25 | 1810 | 50d | 0d |
| 1812 | 22.3.1.3 | Implimentation | 1d? | 2005-01-26 | 2005-01-26 | 1811 | 50d | 0d |
| 1813 | 22.3.1.4 | Dilogs/VO/Icons/Objects/Animations | 1d? | 2005-01-27 | 2005-01-27 | 1812 | 50d | 0d |
| 1814 | 22.3.1.5 | Настройка | 1d? | 2005-01-28 | 2005-01-28 | 1813 | 50d |  |

| ID | WBS | Task | Duration | Start | Finish | Predecessors | Total slack | Free slack |
| --- | --- | --- | --- | --- | --- | --- | --- | --- |
| 1815 | 22.3.2 | **Script 2** | 5d? | 2005-01-24 | 2005-01-28 |  | 50d |  |
| 1816 | 22.3.2.1 | Scenario(text) | 1d? | 2005-01-24 | 2005-01-24 |  | 50d | 0d |
| 1817 | 22.3.2.2 | Постановка задач | 1d? | 2005-01-25 | 2005-01-25 | 1816 | 50d | 0d |
| 1818 | 22.3.2.3 | Implimentation | 1d? | 2005-01-26 | 2005-01-26 | 1817 | 50d | 0d |
| 1819 | 22.3.2.4 | Dilogs/VO/Icons/Objects/Animations | 1d? | 2005-01-27 | 2005-01-27 | 1818 | 50d | 0d |
| 1820 | 22.3.2.5 | Настройка | 1d? | 2005-01-28 | 2005-01-28 | 1819 | 50d |  |
| 1821 | 22.3.3 | **Script 3** | 5d? | 2005-01-24 | 2005-01-28 |  | 50d |  |
| 1822 | 22.3.3.1 | Scenario(text) | 1d? | 2005-01-24 | 2005-01-24 |  | 50d | 0d |
| 1823 | 22.3.3.2 | Постановка задач | 1d? | 2005-01-25 | 2005-01-25 | 1822 | 50d | 0d |
| 1824 | 22.3.3.3 | Implimentation | 1d? | 2005-01-26 | 2005-01-26 | 1823 | 50d | 0d |
| 1825 | 22.3.3.4 | Dilogs/VO/Icons/Objects/Animations | 1d? | 2005-01-27 | 2005-01-27 | 1824 | 50d | 0d |
| 1826 | 22.3.3.5 | Настройка | 1d? | 2005-01-28 | 2005-01-28 | 1825 | 50d |  |
| 1827 | 22.3.4 | **Script 4** | 5d? | 2005-01-24 | 2005-01-28 |  | 50d |  |
| 1828 | 22.3.4.1 | Scenario(text) | 1d? | 2005-01-24 | 2005-01-24 |  | 50d | 0d |
| 1829 | 22.3.4.2 | Постановка задач | 1d? | 2005-01-25 | 2005-01-25 | 1828 | 50d | 0d |
| 1830 | 22.3.4.3 | Implimentation | 1d? | 2005-01-26 | 2005-01-26 | 1829 | 50d | 0d |
| 1831 | 22.3.4.4 | Dilogs/VO/Icons/Objects/Animations | 1d? | 2005-01-27 | 2005-01-27 | 1830 | 50d | 0d |
| 1832 | 22.3.4.5 | Настройка | 1d? | 2005-01-28 | 2005-01-28 | 1831 | 50d |  |
| 1833 | 22.3.5 | **Script 5** | 5d? | 2005-01-24 | 2005-01-28 |  | 50d |  |
| 1834 | 22.3.5.1 | Scenario(text) | 1d? | 2005-01-24 | 2005-01-24 |  | 50d | 0d |
| 1835 | 22.3.5.2 | Постановка задач | 1d? | 2005-01-25 | 2005-01-25 | 1834 | 50d | 0d |
| 1836 | 22.3.5.3 | Implimentation | 1d? | 2005-01-26 | 2005-01-26 | 1835 | 50d | 0d |
| 1837 | 22.3.5.4 | Dilogs/VO/Icons/Objects/Animations | 1d? | 2005-01-27 | 2005-01-27 | 1836 | 50d | 0d |
| 1838 | 22.3.5.5 | Настройка | 1d? | 2005-01-28 | 2005-01-28 | 1837 | 50d |  |
